# SGI

How a schedule from MS Project changed from version to version. A marks actual dates.

## Version 1 (saved 2012-08-31)

| ID | WBS | Task | Duration | Start | Finish | Predecessors | Total float | Constraint |
| --- | --- | --- | --- | --- | --- | --- | --- | --- |
| 1 | 1 | **Bitacora de Operaciones** | 197d? | 2012-03-20 | 2012-12-19 |  | 0d |  |
| 2 | 1.1 | **Levantamiento de información** | 24d | 2012-09-24 | 2012-10-25 |  | 0d |  |
| 3 | 1.1.1 | **Realizar reunión de levantamiento de información** | 10d | 2012-09-24 | 2012-10-05 |  | 14d |  |
| 4 |  | 1 | 1d | 2012-09-24 | 2012-09-24 |  | 9d | start no earlier than 2012-09-24 |
| 5 |  | 2 | 1d | 2012-09-25 | 2012-09-25 |  | 8d | start no earlier than 2012-09-25 |
| 6 |  | 3 | 1d | 2012-09-26 | 2012-09-26 |  | 7d | start no earlier than 2012-09-26 |
| 7 |  | 4 | 1d | 2012-09-27 | 2012-09-27 |  | 6d | start no earlier than 2012-09-27 |
| 8 |  | 5 | 1d | 2012-09-28 | 2012-09-28 |  | 5d | start no earlier than 2012-09-28 |
| 9 |  | 6 | 1d | 2012-10-01 | 2012-10-01 |  | 4d | start no earlier than 2012-09-29 |
| 10 |  | 9 | 1d | 2012-10-02 | 2012-10-02 |  | 3d | start no earlier than 2012-10-02 |
| 11 |  | 10 | 1d | 2012-10-03 | 2012-10-03 |  | 2d | start no earlier than 2012-10-03 |
| 12 |  | 11 | 1d | 2012-10-04 | 2012-10-04 |  | 1d | start no earlier than 2012-10-04 |
| 13 |  | 12 | 1d | 2012-10-05 | 2012-10-05 |  | 1d | start no earlier than 2012-10-05 |
| 14 |  | Elaborar BBP | 10d | 2012-09-25 | 2012-10-08 |  | 6d | finish no earlier than 2012-10-08 |
| 15 |  | Realizar prototipos | 10d | 2012-09-25 | 2012-10-08 |  | 0d | finish no earlier than 2012-10-08 |
| 16 | 1.1.4 | **Definición de arquitectura de aplicación** | 6d | 2012-10-09 | 2012-10-16 | 15 | 0d |  |
| 17 |  | Coordinar definición de arquitectura de aplicación | 3d | 2012-10-09 | 2012-10-11 |  | 0d |  |
| 18 |  | Definir modelo lógico | 3d | 2012-10-12 | 2012-10-16 | 17 | 0d |  |
| 19 | 1.1.5 | **Aprobación de BBP y arquitectura** | 7d | 2012-10-17 | 2012-10-25 | 14, 15, 16 | 0d |  |
| 20 |  | Revisar propuesta | 3d | 2012-10-17 | 2012-10-19 |  | 0d | start no earlier than 2012-08-24 |
| 21 |  | Realizar ajustes | 3d | 2012-10-22 | 2012-10-24 | 20 | 0d |  |
| 22 |  | Revisión final | 1d | 2012-10-25 | 2012-10-25 | 21 | 0d |  |
| 23 | 1.2 | **Desarrollo** | 39d? | 2012-10-26 | 2012-12-19 | 2 | 0d |  |
| 24 | 1.2.1 | **Modulo Web** | 22d? | 2012-10-26 | 2012-11-26 |  | 13d |  |
| 25 | 1.2.1.1 | **Modulo ocurrencias** | 1d? | 2012-10-26 | 2012-10-26 |  | 34d |  |
| 26 |  | Desarrollar | 1d? | 2012-10-26 | 2012-10-26 |  | 34d |  |
| 27 |  | Realizar pruebas unitarias | 1d? | 2012-10-26 | 2012-10-26 |  | 34d |  |
| 28 | 1.2.1.2 | **Modulo paradas** | 22d? | 2012-10-26 | 2012-11-26 |  | 13d |  |
| 29 |  | Desarrollar | 1d? | 2012-10-26 | 2012-10-26 |  | 34d |  |
| 30 |  | Realizar pruebas unitarias | 1d? | 2012-10-26 | 2012-10-26 |  | 34d |  |
| 31 | 1.2.1.2.3 | **Integración con SAP** | 2d? | 2012-11-23 | 2012-11-26 | 39 | 13d |  |
| 32 |  | Desarrollar | 1d? | 2012-11-23 | 2012-11-23 |  | 13d |  |
| 33 |  | Realizar Pruebas Unitarias | 1d? | 2012-11-26 | 2012-11-26 | 32 | 13d |  |
| 34 | 1.2.1.3 | **Modulo cambio de equipo** | 1d? | 2012-10-26 | 2012-10-26 |  | 34d |  |
| 35 |  | Desarrollar | 1d? | 2012-10-26 | 2012-10-26 |  | 34d |  |
| 36 |  | Realizar pruebas unitarias | 1d? | 2012-10-26 | 2012-10-26 |  | 34d |  |
| 37 | 1.2.1.4 | **Modulo cambio de producto** | 20d? | 2012-10-26 | 2012-11-22 |  | 13d |  |
| 38 |  | Desarrollar | 1d? | 2012-10-26 | 2012-10-26 |  | 34d |  |
| 39 |  | Realizar pruebas unitarias | 20d | 2012-10-26 | 2012-11-22 |  | 13d |  |
| 40 | 1.2.2 | **Modulo Reportes** | 35d | 2012-10-26 | 2012-12-13 |  | 0d |  |
| 41 |  | Desarrollar | 25d | 2012-10-26 | 2012-11-29 |  | 0d |  |
| 42 |  | Realizar pruebas unitarias | 10d | 2012-11-30 | 2012-12-13 | 41 | 0d |  |
| 43 | 1.2.3 | **Modelo Seguridad** | 20d | 2012-10-26 | 2012-11-22 |  | 15d |  |
| 44 |  | Desarrollar | 12d | 2012-10-26 | 2012-11-12 |  | 15d |  |
| 45 |  | Realizar pruebas unitarias | 8d | 2012-11-13 | 2012-11-22 | 44 | 15d |  |
| 46 | 1.2.4 | **Integración** | 4d | 2012-12-14 | 2012-12-19 | 24, 40, 43 | 0d |  |
| 47 |  | Integrar modulos | 4d | 2012-12-14 | 2012-12-19 |  | 0d |  |
| 48 | 1.3 | **Pruebas** | 1d? | 2012-03-20 | 2012-03-20 |  | 188d |  |
| 49 |  | Pruebas Unitarias | 1d? | 2012-03-20 | 2012-03-20 |  | 188d |  |
| 50 |  | Pruebas Integrales | 1d? | 2012-03-20 | 2012-03-20 |  | 188d |  |
| 51 | 1.4 | **Pase a producción** | 1d | 2012-03-21 | 2012-03-21 | 48 | 188d |  |
| 52 |  | Realizar pase a producción | 1d | 2012-03-21 | 2012-03-21 |  | 188d |  |
| 53 | 1.5 | **Capacitación** | 7d | 2012-03-22 | 2012-03-30 | 51 | 188d |  |
| 54 |  | Realizar capacitación a usuarios | 7d | 2012-03-22 | 2012-03-30 |  | 188d |  |
| 55 | 1.6 | **Documentación** | 10d | 2012-10-12 | 2012-10-25 |  | 39d |  |
| 56 |  | Realizar documentación (manual técnico, modelo y dicc. De datos) | 10d | 2012-10-12 | 2012-10-25 |  | 39d | start no earlier than 2012-10-12 |
| 57 | 1.7 | **Post-Producción** | 7d | 2012-03-22 | 2012-03-30 | 51 | 188d |  |
| 58 |  | Realizar actividades de soporte | 7d | 2012-03-22 | 2012-03-30 |  | 188d |  |

## Version 2 (saved 2012-09-04)

Last finish 2012-12-19 → 2013-01-30 (+42d).

Added:

| ID | Task | Duration | Start | Finish | Predecessors | Resources |
| --- | --- | --- | --- | --- | --- | --- |
| 19 | Definir RFCs | 5d | 2012-10-18 | 2012-10-24 | 18 | CPSAA; AF; AP1 |
| 20 | Definir integración con SGCP | 5d | 2012-10-25 | 2012-10-31 | 19 | CPSAA; AF; AP1 |
| 23 | Revisar modelo lógico | 2d | 2012-11-05 | 2012-11-06 | 22 | CPSAA |
| 27 | **Diseño de aplicación Web** | 14d | 2012-11-15 | 2012-12-04 |  |  |
| 28 | Proponer línea gráfica de la aplicación | 3d | 2012-11-15 | 2012-11-19 |  | DW |
| 29 | Aprobar Línea Gráfica | 2d | 2012-11-20 | 2012-11-21 | 28 | CPSAA |
| 30 | Realizar prototipos con diseño gráfico | 6d | 2012-11-22 | 2012-11-29 | 29 | DW |
| 31 | Aprobar prototipos | 3d | 2012-11-30 | 2012-12-04 | 30 | CPSAA |
| 33 | **Implementar arquitectura** | 4d | 2012-11-15 | 2012-11-20 |  |  |
| 34 | Implementar arquitectura | 1d | 2012-11-15 | 2012-11-15 |  | AP2 |
| 35 | Implementar modelo lógico | 4d | 2012-11-15 | 2012-11-20 |  | AP1 |
| 36 | Implementar ambiente para pruebas unitarias | 3d | 2012-11-16 | 2012-11-20 | 34 | AP2 |
| 37 | Implementar modulo de seguridad | 4d | 2012-11-21 | 2012-11-26 | 33 | AP2 |
| 38 | **Implementar RFCs** | 5d | 2012-11-15 | 2012-11-21 |  | ABAPER |
| 39 | Implementar RFC para creación de avisos | 5d | 2012-11-15 | 2012-11-21 |  |  |
| 43 | **Modulo Alertas** | 7d | 2012-11-27 | 2012-12-05 | 37 | AP2 |
| 44 | Implementar modulo | 4d | 2012-11-27 | 2012-11-30 |  |  |
| 46 | Implementar webservice | 3d | 2012-12-03 | 2012-12-05 | 44, 45 |  |
| 59 | **Modulo Movilidad** | 5d | 2012-12-06 | 2012-12-12 | 43 | APMOVIL |
| 60 | Implementar cliente android | 5d | 2012-12-06 | 2012-12-12 |  | APMOVIL |
| 64 | Realizar plan de pruebas | 1d | 2012-11-15 | 2012-11-15 |  |  |
| 65 | Realizar casos de prueba | 8d | 2012-11-16 | 2012-11-27 | 64 |  |
| 66 | Realizar manual de usuario | 8d | 2012-11-28 | 2012-12-07 | 65 |  |
| 67 | Realizar diccionario de datos | 3d | 2012-12-10 | 2012-12-12 | 66 |  |
| 77 | **Manual Técnico** | 5d | 2013-01-24 | 2013-01-30 | 73 | AP1; AP2 |

Removed: 31 Integración con SAP; 32 Desarrollar; 33 Realizar Pruebas Unitarias; 43 Modelo Seguridad; 44 Desarrollar

Changed:

| ID | Task | Start | Finish | Duration | Total float | Predecessors | Other |
| --- | --- | --- | --- | --- | --- | --- | --- |
| 1 | **Bitacora de Operaciones** | 2012-03-20 → 2012-09-24 (+188d) | 2012-12-19 → 2013-01-30 (+42d) | 197d? → 93d |  |  |  |
| 2 | **Levantamiento de información** |  | 2012-10-25 → 2012-10-31 (+6d) | 24d → 28d |  |  |  |
| 3 | **Reunirse con usuarios para levantamiento de información** |  |  |  | 14d → 28d |  | was named Realizar reunión de levantamiento de información; resources none → CPSAA; AF; AP1 |
| 14 | Realizar formularios de aplicación | 2012-09-25 → 2012-09-24 (-1d) | 2012-10-08 → 2012-10-05 (-3d) |  | 0d → 28d |  | was named Realizar prototipos; constraint finish no earlier than 2012-10-08 → start no earlier than 2012-09-24; resources none → AF |
| 15 | Elaborar BBP | 2012-09-25 → 2012-09-24 (-1d) | 2012-10-08 → 2012-10-11 (+3d) | 10d → 14d | 6d → 0d |  | constraint finish no earlier than 2012-10-08 → start no earlier than 2012-09-24; resources none → AF |
| 16 | **Definición de arquitectura de aplicación** | 2012-10-09 → 2012-10-12 (+3d) | 2012-10-16 → 2012-10-31 (+15d) | 6d → 14d |  | 14 → 15 |  |
| 17 | Coordinar definición de arquitectura de aplicación | 2012-10-09 → 2012-10-12 (+3d) | 2012-10-11 → 2012-10-12 (+1d) | 3d → 1d |  |  | resources none → CPSAA; AF; AP1 |
| 18 | Definir modelo lógico | 2012-10-12 → 2012-10-15 (+3d) | 2012-10-16 → 2012-10-17 (+1d) |  |  |  | resources none → CPSAA; AF; AP1 |
| 21 | **Aprobación de BBP, formularios de aplicación y modelo lógico** | 2012-10-17 → 2012-11-01 (+15d) | 2012-10-25 → 2012-11-14 (+20d) | 7d → 10d |  | 15, 14, 16 → 16 | was named Aprobación de BBP y arquitectura |
| 22 | Revisar BBP con formularios de aplicación | 2012-10-17 → 2012-11-01 (+15d) | 2012-10-19 → 2012-11-02 (+14d) | 3d → 2d |  |  | was named Revisar propuesta |
| 24 | Realizar ajustes al BBP | 2012-10-22 → 2012-11-07 (+16d) | 2012-10-24 → 2012-11-13 (+20d) | 3d → 5d |  | 22 → 23 | was named Realizar ajustes; resources none → AF; AP1 |
| 25 | Aprobación final | 2012-10-25 → 2012-11-14 (+20d) | 2012-10-25 → 2012-11-14 (+20d) |  |  |  | was named Revisión final |
| 26 | **Desarrollo** | 2012-10-26 → 2012-11-15 (+20d) | 2012-12-19 → 2012-12-26 (+7d) | 39d? → 30d |  | 2 → 2, 21 |  |
| 32 | **Aplicación Web** | 2012-10-26 → 2012-11-15 (+20d) | 2012-11-26 → 2012-12-19 (+23d) | 22d? → 25d | 13d → 25d |  | was named Modulo Web; resources AP2 → none |
| 40 | **Modulo ocurrencias** | 2012-10-26 → 2012-11-21 (+26d) | 2012-10-26 → 2012-11-27 (+32d) | 1d? → 5d | 34d → 41d | none → 33 | resources none → AP1 |
| 41 | Implementar modulo | 2012-10-26 → 2012-11-21 (+26d) | 2012-10-26 → 2012-11-27 (+32d) | 1d? → 5d | 34d → 41d |  | was named Desarrollar |
| 42 | Realizar pruebas unitarias | 2012-10-26 → 2012-11-21 (+26d) | 2012-10-26 → 2012-11-27 (+32d) | 1d? → 5d | 34d → 41d |  |  |
| 45 | Realizar pruebas unitarias | 2012-11-13 → 2012-11-27 (+14d) | 2012-11-22 → 2012-11-30 (+8d) | 8d → 4d | 15d → 25d | Desarrollar → none |  |
| 47 | **Funcionalidad de paradas** | 2012-10-26 → 2012-11-15 (+20d) | 2012-11-26 → 2012-11-22 (-4d) | 22d? → 6d | 13d → 25d |  | was named Modulo paradas; resources none → AP1 |
| 48 | Implementar funcionalidad | 2012-10-26 → 2012-11-15 (+20d) | 2012-10-26 → 2012-11-22 (+27d) | 1d? → 6d | 34d → 25d |  | was named Desarrollar |
| 49 | Realizar pruebas unitarias | 2012-10-26 → 2012-11-15 (+20d) | 2012-10-26 → 2012-11-22 (+27d) | 1d? → 6d | 34d → 25d |  |  |
| 50 | **Funcionalidad de cambio de equipo** | 2012-10-26 → 2012-12-06 (+41d) | 2012-10-26 → 2012-12-12 (+47d) | 1d? → 5d | 34d → 25d | none → 43 | was named Modulo cambio de equipo; resources none → AP2 |
| 51 | Implementar modulo | 2012-10-26 → 2012-12-06 (+41d) | 2012-10-26 → 2012-12-12 (+47d) | 1d? → 5d | 34d → 25d |  | was named Desarrollar |
| 52 | Realizar pruebas unitarias | 2012-10-26 → 2012-12-06 (+41d) | 2012-10-26 → 2012-12-12 (+47d) | 1d? → 5d | 34d → 25d |  |  |
| 53 | **Funcionalidad de cambio de producto** | 2012-10-26 → 2012-12-13 (+48d) | 2012-11-22 → 2012-12-19 (+27d) | 20d? → 5d | 13d → 25d | none → 50 | was named Modulo cambio de producto; resources none → AP2 |
| 54 | Implementar modulo | 2012-10-26 → 2012-12-13 (+48d) | 2012-10-26 → 2012-12-19 (+54d) | 1d? → 5d | 34d → 25d |  | was named Desarrollar |
| 55 | Realizar pruebas unitarias | 2012-10-26 → 2012-12-13 (+48d) | 2012-11-22 → 2012-12-19 (+27d) | 20d → 5d | 13d → 25d |  |  |
| 56 | **Modulo Reportes** | 2012-10-26 → 2012-11-23 (+28d) | 2012-12-13 → 2012-12-19 (+6d) | 35d → 19d | 0d → 25d | none → 47 | resources APL → AP1 |
| 57 | Implementar modulo | 2012-10-26 → 2012-11-23 (+28d) | 2012-11-29 → 2012-12-13 (+14d) | 25d → 15d | 0d → 25d |  | was named Desarrollar |
| 58 | Realizar pruebas unitarias | 2012-11-30 → 2012-12-14 (+14d) | 2012-12-13 → 2012-12-19 (+6d) | 10d → 4d | 0d → 25d |  |  |
| 61 | **Integración** | 2012-12-14 → 2012-12-20 (+6d) | 2012-12-19 → 2012-12-26 (+7d) | 4d → 5d | 0d → 25d | 32, 56, Modelo Seguridad → 32, 27 | resources APL; AP1; AP2 → none |
| 62 | Integrar modulos | 2012-12-14 → 2012-12-20 (+6d) | 2012-12-19 → 2012-12-26 (+7d) | 4d → 5d | 0d → 25d |  |  |
| 63 | **Documentación** | 2012-10-12 → 2012-11-15 (+34d) | 2012-10-25 → 2012-12-12 (+48d) | 10d → 20d | 39d → 0d |  | resources AP1; AP2 → AF |
| 68 | **Pruebas** | 2012-03-20 → 2012-12-13 (+268d) | 2012-03-20 → 2013-01-11 (+297d) | 1d? → 22d | 188d → 0d | none → 67 | resources APL; AF; PWC → none |
| 69 | Pruebas Unitarias | 2012-03-20 → 2012-12-13 (+268d) | 2012-03-20 → 2012-12-26 (+281d) | 1d? → 10d | 188d → 0d |  | resources none → AF; AP1; AP2 |
| 70 | Pruebas Integrales | 2012-03-20 → 2012-12-27 (+282d) | 2012-03-20 → 2013-01-11 (+297d) | 1d? → 12d | 188d → 0d | none → 69 | resources none → CPSAA; AF; AP1; AP2 |
| 71 | **Pase a producción** | 2012-03-21 → 2013-01-14 (+299d) | 2012-03-21 → 2013-01-14 (+299d) |  | 188d → 0d |  | resources APL; PWC; AP1 → CPSAA |
| 72 | Realizar pase a producción | 2012-03-21 → 2013-01-14 (+299d) | 2012-03-21 → 2013-01-14 (+299d) |  | 188d → 0d |  |  |
| 73 | **Post-Producción** | 2012-03-22 → 2013-01-15 (+299d) | 2012-03-30 → 2013-01-23 (+299d) |  | 188d → 0d |  | resources AP1; AP2 → AP2; AP1 |
| 74 | Realizar actividades de soporte | 2012-03-22 → 2013-01-15 (+299d) | 2012-03-30 → 2013-01-23 (+299d) |  | 188d → 0d |  |  |
| 75 | **Capacitación** | 2012-03-22 → 2013-01-15 (+299d) | 2012-03-30 → 2013-01-23 (+299d) |  | 188d → 5d |  | resources AP1 → AF |
| 76 | Realizar capacitación a usuarios | 2012-03-22 → 2013-01-15 (+299d) | 2012-03-30 → 2013-01-23 (+299d) |  | 188d → 5d |  |  |
| 78 | Realizar documento | 2012-10-12 → 2013-01-24 (+104d) | 2012-10-25 → 2013-01-30 (+97d) | 10d → 5d | 39d → 0d |  | was named Realizar documentación (manual técnico, modelo y dicc. De datos) |

## Version 3 (saved 2012-09-07)

Last finish 2013-01-30 → 2013-02-08 (+9d).

Added:

| ID | Task | Duration | Start | Finish | Predecessors | Resources |
| --- | --- | --- | --- | --- | --- | --- |
| 61 | Mostrar Alertas en el área de notificación de Android y enviar respuesta al server al interactuar el usuario | 3d | 2012-12-18 | 2012-12-20 | 60 | APMOVIL |
| 62 | Realizar documentación | 2d | 2012-12-21 | 2012-12-24 | 61 | APMOVIL |
| 72 | Proveer servidor de pruebas con webservice rest para aplicación movil | 7d | 2012-12-13 | 2012-12-21 |  | CPSAA |
| 73 | Proveer servidor de pruebas para aplicación web | 7d | 2012-12-13 | 2012-12-21 |  | CPSAA |

Changed:

| ID | Task | Start | Finish | Duration | Total float | Predecessors | Other |
| --- | --- | --- | --- | --- | --- | --- | --- |
| 1 | **Bitacora de Operaciones** |  | 2013-01-30 → 2013-02-08 (+9d) | 93d → 100d |  |  |  |
| 26 | **Desarrollo** |  | 2012-12-26 → 2013-01-07 (+12d) | 30d → 38d |  |  |  |
| 32 | **Aplicación Web** |  | 2012-12-19 → 2012-12-31 (+12d) | 25d → 33d | 25d → 24d |  |  |
| 33 | **Implementar arquitectura** |  | 2012-11-20 → 2012-11-21 (+1d) | 4d → 5d | 25d → 30d |  |  |
| 34 | Implementar arquitectura |  | 2012-11-15 → 2012-11-16 (+1d) | 1d → 2d |  |  |  |
| 36 | Implementar ambiente para pruebas unitarias | 2012-11-16 → 2012-11-19 (+3d) | 2012-11-20 → 2012-11-21 (+1d) |  |  |  |  |
| 37 | Implementar modulo de seguridad | 2012-11-21 → 2012-11-22 (+1d) | 2012-11-26 → 2012-11-28 (+2d) | 4d → 5d |  |  |  |
| 40 | **Modulo ocurrencias** | 2012-11-21 → 2012-11-22 (+1d) | 2012-11-27 → 2012-11-30 (+3d) | 5d → 7d | 41d → 45d |  |  |
| 41 | Implementar modulo | 2012-11-21 → 2012-11-22 (+1d) | 2012-11-27 → 2012-11-30 (+3d) | 5d → 7d | 41d → 45d |  |  |
| 42 | Realizar pruebas unitarias | 2012-11-21 → 2012-11-22 (+1d) | 2012-11-27 → 2012-11-30 (+3d) | 5d → 7d | 41d → 45d |  |  |
| 43 | **Modulo Alertas** | 2012-11-27 → 2012-11-29 (+2d) | 2012-12-05 → 2012-12-11 (+6d) | 7d → 9d | 25d → 26d |  |  |
| 44 | Implementar modulo | 2012-11-27 → 2012-11-29 (+2d) | 2012-11-30 → 2012-12-06 (+6d) | 4d → 6d | 25d → 26d |  |  |
| 45 | Realizar pruebas unitarias | 2012-11-27 → 2012-11-29 (+2d) | 2012-11-30 → 2012-12-06 (+6d) | 4d → 6d | 25d → 26d |  |  |
| 46 | Implementar webservice | 2012-12-03 → 2012-12-07 (+4d) | 2012-12-05 → 2012-12-11 (+6d) |  | 25d → 26d |  |  |
| 47 | **Funcionalidad de paradas** |  | 2012-11-22 → 2012-11-23 (+1d) | 6d → 7d | 25d → 31d |  |  |
| 48 | Implementar funcionalidad |  | 2012-11-22 → 2012-11-23 (+1d) | 6d → 7d | 25d → 31d |  |  |
| 49 | Realizar pruebas unitarias |  | 2012-11-22 → 2012-11-23 (+1d) | 6d → 7d | 25d → 31d |  |  |
| 50 | **Funcionalidad de cambio de equipo** | 2012-12-06 → 2012-12-12 (+6d) | 2012-12-12 → 2012-12-20 (+8d) | 5d → 7d | 25d → 24d |  |  |
| 51 | Implementar modulo | 2012-12-06 → 2012-12-12 (+6d) | 2012-12-12 → 2012-12-20 (+8d) | 5d → 7d | 25d → 24d |  |  |
| 52 | Realizar pruebas unitarias | 2012-12-06 → 2012-12-12 (+6d) | 2012-12-12 → 2012-12-20 (+8d) | 5d → 7d | 25d → 24d |  |  |
| 53 | **Funcionalidad de cambio de producto** | 2012-12-13 → 2012-12-21 (+8d) | 2012-12-19 → 2012-12-31 (+12d) | 5d → 7d | 25d → 24d |  |  |
| 54 | Implementar modulo | 2012-12-13 → 2012-12-21 (+8d) | 2012-12-19 → 2012-12-31 (+12d) | 5d → 7d | 25d → 24d |  |  |
| 55 | Realizar pruebas unitarias | 2012-12-13 → 2012-12-21 (+8d) | 2012-12-19 → 2012-12-31 (+12d) | 5d → 7d | 25d → 24d |  |  |
| 56 | **Modulo Reportes** | 2012-11-23 → 2012-11-26 (+3d) | 2012-12-19 → 2012-12-20 (+1d) |  | 25d → 31d |  |  |
| 57 | Implementar modulo | 2012-11-23 → 2012-11-26 (+3d) | 2012-12-13 → 2012-12-14 (+1d) |  | 25d → 26d |  |  |
| 58 | Realizar pruebas unitarias | 2012-12-14 → 2012-12-17 (+3d) | 2012-12-19 → 2012-12-20 (+1d) |  | 25d → 26d |  |  |
| 59 | **Modulo Alertas - Aplicación movil nativa** | 2012-12-06 → 2012-12-12 (+6d) | 2012-12-12 → 2012-12-24 (+12d) | 5d → 9d | 30d → 29d |  | was named Modulo Movilidad; resources APMOVIL → none |
| 60 | Desarrollar Servicio en Background escuchando las alertas del usuario | 2012-12-06 → 2012-12-12 (+6d) | 2012-12-12 → 2012-12-17 (+5d) | 5d → 4d | 30d → 29d |  | was named Implementar cliente android |
| 63 | **Integración** | 2012-12-20 → 2013-01-01 (+12d) | 2012-12-26 → 2013-01-07 (+12d) |  | 25d → 24d |  |  |
| 64 | Integrar modulos | 2012-12-20 → 2013-01-01 (+12d) | 2012-12-26 → 2013-01-07 (+12d) |  | 25d → 24d |  |  |
| 70 | **Pruebas** |  | 2013-01-11 → 2013-01-21 (+10d) | 22d → 28d |  |  |  |
| 71 | Pruebas Unitarias |  | 2012-12-26 → 2012-12-27 (+1d) | 10d → 11d |  |  |  |
| 74 | Pruebas Integrales | 2012-12-27 → 2012-12-28 (+1d) | 2013-01-11 → 2013-01-21 (+10d) | 12d → 17d |  | 71 → 73, 72, 71 |  |
| 75 | **Pase a producción** | 2013-01-14 → 2013-01-22 (+8d) | 2013-01-14 → 2013-01-22 (+8d) |  |  |  |  |
| 76 | Realizar pase a producción | 2013-01-14 → 2013-01-22 (+8d) | 2013-01-14 → 2013-01-22 (+8d) |  |  |  |  |
| 77 | **Post-Producción** | 2013-01-15 → 2013-01-23 (+8d) | 2013-01-23 → 2013-02-01 (+9d) | 7d → 8d |  |  |  |
| 78 | Realizar actividades de soporte | 2013-01-15 → 2013-01-23 (+8d) | 2013-01-23 → 2013-02-01 (+9d) | 7d → 8d |  |  |  |
| 79 | **Capacitación** | 2013-01-15 → 2013-01-23 (+8d) | 2013-01-23 → 2013-02-01 (+9d) | 7d → 8d |  |  |  |
| 80 | Realizar capacitación a usuarios | 2013-01-15 → 2013-01-23 (+8d) | 2013-01-23 → 2013-02-01 (+9d) | 7d → 8d |  |  |  |
| 81 | **Manual Técnico** | 2013-01-24 → 2013-02-04 (+11d) | 2013-01-30 → 2013-02-08 (+9d) |  |  |  |  |
| 82 | Realizar documento | 2013-01-24 → 2013-02-04 (+11d) | 2013-01-30 → 2013-02-08 (+9d) |  |  |  |  |

## Version 4 (saved 2012-09-19)

Last finish 2013-02-08 → 2013-03-01 (+21d).

Added:

| ID | Task | Duration | Start | Finish | Constraint |
| --- | --- | --- | --- | --- | --- |
| 10 | 7 | 1d | 2012-10-18 | 2012-10-18 | start no earlier than 2012-10-18 |
| 11 | 8 | 1d | 2012-10-19 | 2012-10-19 | start no earlier than 2012-10-19 |

Removed: 12 11; 13 12

Changed:

| ID | Task | Start | Finish | Total float | Other |
| --- | --- | --- | --- | --- | --- |
| 1 | **Bitacora de Operaciones** | 2012-09-24 → 2012-10-10 (+16d) | 2013-02-08 → 2013-03-01 (+21d) |  |  |
| 2 | **Levantamiento de información** | 2012-09-24 → 2012-10-10 (+16d) | 2012-10-31 → 2012-11-19 (+19d) |  |  |
| 3 | **Reunirse con usuarios para levantamiento de información** | 2012-09-24 → 2012-10-10 (+16d) | 2012-10-05 → 2012-10-23 (+18d) |  |  |
| 4 | 1 | 2012-09-24 → 2012-10-10 (+16d) | 2012-09-24 → 2012-10-10 (+16d) | 34d → 37d | constraint start no earlier than 2012-09-24 → start no earlier than 2012-10-10 |
| 5 | 2 | 2012-09-25 → 2012-10-11 (+16d) | 2012-09-25 → 2012-10-11 (+16d) | 33d → 36d | constraint start no earlier than 2012-09-25 → start no earlier than 2012-10-11 |
| 6 | 3 | 2012-09-26 → 2012-10-12 (+16d) | 2012-09-26 → 2012-10-12 (+16d) | 32d → 35d | constraint start no earlier than 2012-09-26 → start no earlier than 2012-10-12 |
| 7 | 4 | 2012-09-27 → 2012-10-15 (+18d) | 2012-09-27 → 2012-10-15 (+18d) | 31d → 34d | constraint start no earlier than 2012-09-27 → start no earlier than 2012-10-13 |
| 8 | 5 | 2012-09-28 → 2012-10-16 (+18d) | 2012-09-28 → 2012-10-16 (+18d) | 30d → 33d | constraint start no earlier than 2012-09-28 → start no earlier than 2012-10-16 |
| 9 | 6 | 2012-10-01 → 2012-10-17 (+16d) | 2012-10-01 → 2012-10-17 (+16d) | 29d → 32d | constraint start no earlier than 2012-09-29 → start no earlier than 2012-10-17 |
| 12 | 9 | 2012-10-02 → 2012-10-22 (+20d) | 2012-10-02 → 2012-10-22 (+20d) | 28d → 29d | constraint start no earlier than 2012-10-02 → start no earlier than 2012-10-20 |
| 13 | 10 | 2012-10-03 → 2012-10-23 (+20d) | 2012-10-03 → 2012-10-23 (+20d) | 27d → 28d | constraint start no earlier than 2012-10-03 → start no earlier than 2012-10-23 |
| 14 | Realizar formularios de aplicación | 2012-09-24 → 2012-10-10 (+16d) | 2012-10-05 → 2012-10-23 (+18d) |  | constraint start no earlier than 2012-09-24 → start no earlier than 2012-10-10 |
| 15 | Elaborar BBP | 2012-09-24 → 2012-10-10 (+16d) | 2012-10-11 → 2012-10-29 (+18d) |  | constraint start no earlier than 2012-09-24 → start no earlier than 2012-10-10 |
| 16 | **Definición de arquitectura de aplicación** | 2012-10-12 → 2012-10-30 (+18d) | 2012-10-31 → 2012-11-19 (+19d) |  |  |
| 17 | Coordinar definición de arquitectura de aplicación | 2012-10-12 → 2012-10-30 (+18d) | 2012-10-12 → 2012-10-30 (+18d) |  | resources CPSAA; AF; AP1 → CPSAA; AF; AP1; JP |
| 18 | Definir modelo lógico | 2012-10-15 → 2012-10-31 (+16d) | 2012-10-17 → 2012-11-05 (+19d) |  |  |
| 19 | Definir RFCs | 2012-10-18 → 2012-11-06 (+19d) | 2012-10-24 → 2012-11-12 (+19d) |  | resources CPSAA; AF; AP1 → CPSAA; AF; ABAP |
| 20 | Definir integración con SGCP | 2012-10-25 → 2012-11-13 (+19d) | 2012-10-31 → 2012-11-19 (+19d) |  |  |
| 21 | **Aprobación de BBP, formularios de aplicación y modelo lógico** | 2012-11-01 → 2012-11-20 (+19d) | 2012-11-14 → 2012-12-03 (+19d) |  |  |
| 22 | Revisar BBP con formularios de aplicación | 2012-11-01 → 2012-11-20 (+19d) | 2012-11-02 → 2012-11-21 (+19d) |  |  |
| 23 | Revisar modelo lógico | 2012-11-05 → 2012-11-22 (+17d) | 2012-11-06 → 2012-11-23 (+17d) |  |  |
| 24 | Realizar ajustes al BBP | 2012-11-07 → 2012-11-26 (+19d) | 2012-11-13 → 2012-11-30 (+17d) |  | resources AF; AP1 → AF |
| 25 | Aprobación final | 2012-11-14 → 2012-12-03 (+19d) | 2012-11-14 → 2012-12-03 (+19d) |  | resources CPSAA → CPSAA; JP |
| 26 | **Desarrollo** | 2012-11-15 → 2012-12-04 (+19d) | 2013-01-07 → 2013-01-28 (+21d) |  |  |
| 27 | **Diseño de aplicación Web** | 2012-11-15 → 2012-12-04 (+19d) | 2012-12-04 → 2012-12-21 (+17d) |  |  |
| 28 | Proponer línea gráfica de la aplicación | 2012-11-15 → 2012-12-04 (+19d) | 2012-11-19 → 2012-12-06 (+17d) | 38d → 43d |  |
| 29 | Aprobar Línea Gráfica | 2012-11-20 → 2012-12-07 (+17d) | 2012-11-21 → 2012-12-10 (+19d) | 38d → 43d | resources CPSAA → CPSAA; JP |
| 30 | Realizar prototipos con diseño gráfico | 2012-11-22 → 2012-12-11 (+19d) | 2012-11-29 → 2012-12-18 (+19d) | 38d → 43d |  |
| 31 | Aprobar prototipos | 2012-11-30 → 2012-12-19 (+19d) | 2012-12-04 → 2012-12-21 (+17d) | 38d → 43d | resources CPSAA → CPSAA; JP |
| 32 | **Aplicación Web** | 2012-11-15 → 2012-12-04 (+19d) | 2012-12-31 → 2013-01-21 (+21d) |  |  |
| 33 | **Implementar arquitectura** | 2012-11-15 → 2012-12-04 (+19d) | 2012-11-21 → 2012-12-10 (+19d) | 30d → 24d |  |
| 34 | Implementar arquitectura | 2012-11-15 → 2012-12-04 (+19d) | 2012-11-16 → 2012-12-05 (+19d) | 25d → 24d |  |
| 35 | Implementar modelo lógico | 2012-11-15 → 2012-12-04 (+19d) | 2012-11-20 → 2012-12-07 (+17d) | 31d → 25d |  |
| 36 | Implementar ambiente para pruebas unitarias | 2012-11-19 → 2012-12-06 (+17d) | 2012-11-21 → 2012-12-10 (+19d) | 25d → 24d |  |
| 37 | Implementar modulo de seguridad | 2012-11-22 → 2012-12-11 (+19d) | 2012-11-28 → 2012-12-17 (+19d) | 25d → 24d |  |
| 38 | **Implementar RFCs** | 2012-11-15 → 2012-12-04 (+19d) | 2012-11-21 → 2012-12-10 (+19d) |  |  |
| 39 | Implementar RFC para creación de avisos | 2012-11-15 → 2012-12-04 (+19d) | 2012-11-21 → 2012-12-10 (+19d) | 47d → 52d | resources none → ABAPER |
| 40 | **Modulo ocurrencias** | 2012-11-22 → 2012-12-11 (+19d) | 2012-11-30 → 2012-12-19 (+19d) |  |  |
| 41 | Implementar modulo | 2012-11-22 → 2012-12-11 (+19d) | 2012-11-30 → 2012-12-19 (+19d) |  | resources none → AP1 |
| 42 | Realizar pruebas unitarias | 2012-11-22 → 2012-12-11 (+19d) | 2012-11-30 → 2012-12-19 (+19d) |  | resources none → AP1 |
| 43 | **Modulo Alertas** | 2012-11-29 → 2012-12-18 (+19d) | 2012-12-11 → 2012-12-31 (+20d) | 26d → 24d |  |
| 44 | Implementar modulo | 2012-11-29 → 2012-12-18 (+19d) | 2012-12-06 → 2012-12-26 (+20d) | 26d → 24d | resources none → AP2 |
| 45 | Realizar pruebas unitarias | 2012-11-29 → 2012-12-18 (+19d) | 2012-12-06 → 2012-12-26 (+20d) | 26d → 24d | resources none → AP2 |
| 46 | Implementar webservice | 2012-12-07 → 2012-12-27 (+20d) | 2012-12-11 → 2012-12-31 (+20d) | 26d → 24d | resources none → AP2 |
| 47 | **Funcionalidad de paradas** | 2012-11-15 → 2012-12-04 (+19d) | 2012-11-23 → 2012-12-12 (+19d) |  |  |
| 48 | Implementar funcionalidad | 2012-11-15 → 2012-12-04 (+19d) | 2012-11-23 → 2012-12-12 (+19d) |  | resources none → AP1 |
| 49 | Realizar pruebas unitarias | 2012-11-15 → 2012-12-04 (+19d) | 2012-11-23 → 2012-12-12 (+19d) |  | resources none → AP1 |
| 50 | **Funcionalidad de cambio de equipo** | 2012-12-12 → 2013-01-02 (+21d) | 2012-12-20 → 2013-01-10 (+21d) |  |  |
| 51 | Implementar modulo | 2012-12-12 → 2013-01-02 (+21d) | 2012-12-20 → 2013-01-10 (+21d) |  | resources none → AP2 |
| 52 | Realizar pruebas unitarias | 2012-12-12 → 2013-01-02 (+21d) | 2012-12-20 → 2013-01-10 (+21d) |  | resources none → AP2 |
| 53 | **Funcionalidad de cambio de producto** | 2012-12-21 → 2013-01-11 (+21d) | 2012-12-31 → 2013-01-21 (+21d) |  |  |
| 54 | Implementar modulo | 2012-12-21 → 2013-01-11 (+21d) | 2012-12-31 → 2013-01-21 (+21d) |  | resources none → AP2 |
| 55 | Realizar pruebas unitarias | 2012-12-21 → 2013-01-11 (+21d) | 2012-12-31 → 2013-01-21 (+21d) |  | resources none → AP2 |
| 56 | **Modulo Reportes** | 2012-11-26 → 2012-12-13 (+17d) | 2012-12-20 → 2013-01-10 (+21d) |  |  |
| 57 | Implementar modulo | 2012-11-26 → 2012-12-13 (+17d) | 2012-12-14 → 2013-01-04 (+21d) | 26d → 31d | resources none → AP1 |
| 58 | Realizar pruebas unitarias | 2012-12-17 → 2013-01-07 (+21d) | 2012-12-20 → 2013-01-10 (+21d) | 26d → 31d | resources none → AP1 |
| 59 | **Modulo Alertas - Aplicación movil nativa** | 2012-12-12 → 2013-01-02 (+21d) | 2012-12-24 → 2013-01-14 (+21d) |  | resources none → APMOVIL |
| 60 | Desarrollar Servicio en Background escuchando las alertas del usuario | 2012-12-12 → 2013-01-02 (+21d) | 2012-12-17 → 2013-01-07 (+21d) |  |  |
| 61 | Mostrar Alertas en el área de notificación de Android y enviar respuesta al server al interactuar el usuario | 2012-12-18 → 2013-01-08 (+21d) | 2012-12-20 → 2013-01-10 (+21d) |  |  |
| 62 | Realizar documentación | 2012-12-21 → 2013-01-11 (+21d) | 2012-12-24 → 2013-01-14 (+21d) |  |  |
| 63 | **Integración** | 2013-01-01 → 2013-01-22 (+21d) | 2013-01-07 → 2013-01-28 (+21d) |  | resources none → AP1; AP2 |
| 64 | Integrar modulos | 2013-01-01 → 2013-01-22 (+21d) | 2013-01-07 → 2013-01-28 (+21d) |  | resources none → AP1; AP2 |
| 65 | **Documentación** | 2012-11-15 → 2012-12-04 (+19d) | 2012-12-12 → 2013-01-02 (+21d) |  |  |
| 66 | Realizar plan de pruebas | 2012-11-15 → 2012-12-04 (+19d) | 2012-11-15 → 2012-12-04 (+19d) |  | resources none → AF |
| 67 | Realizar casos de prueba | 2012-11-16 → 2012-12-05 (+19d) | 2012-11-27 → 2012-12-14 (+17d) |  | resources none → AF |
| 68 | Realizar manual de usuario | 2012-11-28 → 2012-12-17 (+19d) | 2012-12-07 → 2012-12-27 (+20d) |  | resources none → AF |
| 69 | Realizar diccionario de datos | 2012-12-10 → 2012-12-28 (+18d) | 2012-12-12 → 2013-01-02 (+21d) |  | resources none → AF |
| 70 | **Pruebas** | 2012-12-13 → 2013-01-03 (+21d) | 2013-01-21 → 2013-02-11 (+21d) |  |  |
| 71 | Pruebas Unitarias | 2012-12-13 → 2013-01-03 (+21d) | 2012-12-27 → 2013-01-17 (+21d) |  | resources AF; AP1; AP2 → AF; AP1; AP2; JP [50%]; APMOVIL |
| 72 | Proveer servidor de pruebas con webservice rest para aplicación movil | 2012-12-13 → 2013-01-03 (+21d) | 2012-12-21 → 2013-01-11 (+21d) |  | resources CPSAA → CPSAA; JP [50%] |

| ID | Task | Start | Finish | Other |
| --- | --- | --- | --- | --- |
| 73 | Proveer servidor de pruebas para aplicación web | 2012-12-13 → 2013-01-03 (+21d) | 2012-12-21 → 2013-01-11 (+21d) | resources CPSAA → CPSAA; JP [50%] |
| 74 | Pruebas Integrales | 2012-12-28 → 2013-01-18 (+21d) | 2013-01-21 → 2013-02-11 (+21d) | resources CPSAA; AF; AP1; AP2 → CPSAA; AF; AP1; AP2; JP [70%]; APMOVIL |
| 75 | **Pase a producción** | 2013-01-22 → 2013-02-12 (+21d) | 2013-01-22 → 2013-02-12 (+21d) |  |
| 76 | Realizar pase a producción | 2013-01-22 → 2013-02-12 (+21d) | 2013-01-22 → 2013-02-12 (+21d) | resources none → CPSAA; AP1; AP2; AF; JP |
| 77 | **Post-Producción** | 2013-01-23 → 2013-02-13 (+21d) | 2013-02-01 → 2013-02-22 (+21d) | resources AP2; AP1 → AP2; AP1; APMOVIL |
| 78 | Realizar actividades de soporte | 2013-01-23 → 2013-02-13 (+21d) | 2013-02-01 → 2013-02-22 (+21d) | resources none → AP1 [44%]; AP2 [44%]; APMOVIL [12%] |
| 79 | **Capacitación** | 2013-01-23 → 2013-02-13 (+21d) | 2013-02-01 → 2013-02-22 (+21d) | resources AF → AF; APMOVIL |
| 80 | Realizar capacitación a usuarios | 2013-01-23 → 2013-02-13 (+21d) | 2013-02-01 → 2013-02-22 (+21d) | resources none → AF [88%]; APMOVIL [12%] |
| 81 | **Manual Técnico** | 2013-02-04 → 2013-02-25 (+21d) | 2013-02-08 → 2013-03-01 (+21d) |  |
| 82 | Realizar documento | 2013-02-04 → 2013-02-25 (+21d) | 2013-02-08 → 2013-03-01 (+21d) |  |
