# Cronograma_v3.5

How a schedule from MS Project changed from version to version. A marks actual dates.

## Version 1 (saved 2012-04-24)

| ID | WBS | Task | Duration | Start | Finish | Predecessors | Complete | Total float | Constraint |
| --- | --- | --- | --- | --- | --- | --- | --- | --- | --- |
| 1 | 1 | **SAC III** | 237.63d | 2011-06-30 A | 2012-06-05 |  | 51% | 0d |  |
| 2 | 1.1 | **Fase: Análisis** | 59d | 2011-06-30 | 2011-09-22 |  |  | 2d |  |
| 3 |  | Análisis y revisión de código | 5d | 2011-06-30 | 2011-07-06 |  |  | 2d | start no earlier than 2011-06-30 |
| 4 | 1.1.2 | **Levantamiento de informacion** | 9d | 2011-07-07 | 2011-07-18 | 3 |  | 2d |  |
| 5 | 1.1.2.1 | **Reuniones presenciales con usuarios** | 7d | 2011-07-07 | 2011-07-14 |  |  | 2d |  |
| 6 | 1.1.2.1.1 | **Presentacion del sistema y revision de requerimientos de administracion** | 3d | 2011-07-07 | 2011-07-09 |  |  | 2d |  |
| 7 |  | Reunion de coordinacion de agenda | 3d | 2011-07-07 | 2011-07-09 |  |  | 2d | start no earlier than 2011-07-07 |
| 8 |  | Visión General del Sistema y Revision de funcionalidades por ejecutar administrativas | 3d | 2011-07-07 | 2011-07-09 |  |  | 2d | start no earlier than 2011-07-07 |
| 9 |  | Reestructuracion de cronograma | 1d | 2011-07-07 | 2011-07-07 |  |  | 4d | start no earlier than 2011-07-07 |
| 10 |  | Realizacion de preguntas de funcionalidades por ejecutar (administrativas) | 2d | 2011-07-07 | 2011-07-08 |  |  | 3d | start no earlier than 2011-07-07 |
| 11 | 1.1.2.1.2 | **Revision de requerimientos nuevos** | 4d | 2011-07-11 | 2011-07-14 | 6 |  | 104.25d |  |
| 12 |  | Revisar Requerimientos de Premezclados | 4d | 2011-07-11 | 2011-07-14 |  |  | 13.7d | start no earlier than 2011-07-08 |
| 13 |  | Realizacion de consultas pendientes acerca de premezclados | 3d | 2011-07-11 | 2011-07-13 |  |  | 14.7d | start no earlier than 2011-07-08 |
| 14 |  | Revision de requerimientos de produccion | 2d | 2011-07-11 | 2011-07-12 |  |  | 15.7d | start no earlier than 2011-07-08 |
| 15 |  | Revision de funcionalidades pendientes | 2d | 2011-07-11 | 2011-07-12 |  |  | 15.7d | start no earlier than 2011-07-08 |
| 16 |  | Realizacion de consultas relacionadas a requerimientos de premezclados y produccion | 2d | 2011-07-11 | 2011-07-12 |  |  | 15.7d | start no earlier than 2011-07-08 |
| 17 | 1.1.2.2 | **Revision de avance del levantamiento de informacion y coordinaciones para semana siguiente** | 2d | 2011-07-14 | 2011-07-18 | 5 |  | 104.25d |  |
| 18 |  | Reunion de avance del cronograma de levantamiento de informacion | 2d | 2011-07-14 | 2011-07-18 |  |  | 13.7d | start no earlier than 2011-07-09 |
| 19 |  | Revision de documentacion y realizacion de bocetos pendientes de funcionalidades de administración | 2d | 2011-07-14 | 2011-07-18 |  |  | 13.7d | start no earlier than 2011-07-09 |
| 20 |  | Revision de funcionalidades nuevas tratadas en reunión | 2d | 2011-07-14 | 2011-07-18 |  |  | 13.7d | start no earlier than 2011-07-09 |
| 21 |  | Realización de bocetos de funcionalidades nuevas tratas en reunión | 2d | 2011-07-14 | 2011-07-18 |  |  | 13.7d | start no earlier than 2011-07-09 |
| 22 | 1.1.3 | **Realizacion de BBP** | 10d | 2011-07-18 | 2011-08-03 | 4 |  | 104.25d |  |
| 23 |  | Revision de informacion proporcionada y pendientes | 2d | 2011-07-18 | 2011-07-20 |  |  | 13.7d |  |
| 24 |  | Consolidacion de informacion recabada y prototipos | 5d | 2011-07-20 | 2011-07-27 | 23 |  | 13.7d |  |
| 25 |  | Realizacion de prototipos faltantes | 3d | 2011-07-27 | 2011-08-03 | 24 |  | 13.7d |  |
| 26 | 1.1.4 | **Aprobacion de BBP** | 35d | 2011-08-03 | 2011-09-22 | 22 |  | 104.25d |  |
| 27 |  | Revision de BBP | 7d | 2011-08-03 | 2011-08-12 |  |  | 13.7d |  |
| 28 |  | Coordinacion de ajustes en el documento | 26d | 2011-08-12 | 2011-09-20 | 27 |  | 13.7d |  |
| 29 |  | Aprobación final | 2d | 2011-09-20 | 2011-09-22 | 28 |  | 13.7d |  |
| 30 | 1.2 | **Fase: Desarrollo** | 178.63d | 2011-09-22 A | 2012-06-05 | 26 | 60% | 0d |  |
| 31 | 1.2.1 | **Fase 1** | 73.26d | 2011-09-22 | 2012-01-05 |  |  | 79.54d |  |
| 32 | 1.2.1.1 | **Registro de Muestra de Investigación** | 15.71d | 2011-09-22 | 2011-10-14 |  |  | 121.48d |  |
| 33 |  | Revisar descripción funcional | 0.13d | 2011-09-22 | 2011-09-22 |  |  | 41.94d | start no earlier than 2011-08-29 |
| 34 |  | Diagramar arquitectura | 0.13d | 2011-09-22 | 2011-09-23 | 33 |  | 41.94d | start no earlier than 2011-08-29 |
| 35 |  | Crear nueva tabla en base de datos | 0.38d | 2011-09-23 | 2011-09-23 | 34 |  | 41.94d | start no earlier than 2011-08-31 |
| 36 | 1.2.1.1.4 | **Consultar muestra** | 2.13d | 2011-09-23 | 2011-09-27 | 35 |  | 121.48d |  |
| 37 |  | Programar jsp busqueda con estilos (reutilizar componentes) | 1.75d | 2011-09-23 | 2011-09-27 |  |  | 41.94d | start no earlier than 2011-08-29 |
| 38 |  | Hacer pruebas unitarias | 0.38d | 2011-09-27 | 2011-09-27 | 37 |  | 41.94d | start no earlier than 2011-09-01 |
| 39 | 1.2.1.1.5 | **Registrar muestra** | 3.38d | 2011-09-27 | 2011-09-30 | 36 |  | 121.48d |  |
| 40 |  | Programar registro (reutilizar componentes) | 1.5d | 2011-09-27 | 2011-09-29 |  |  | 41.94d | start no earlier than 2011-08-29 |
| 41 | 1.2.1.1.5.2 | **Registrar ensayo** | 1.5d | 2011-09-29 | 2011-09-30 | 40 |  | 121.48d |  |
| 42 |  | Programar ensayo en jsp con estilos (reutilizar componentes) | 1.5d | 2011-09-29 | 2011-09-30 |  |  | 41.94d |  |
| 43 |  | Hacer pruebas unitarias | 0.38d | 2011-09-30 | 2011-09-30 | 42 |  | 41.94d | start no earlier than 2011-09-01 |
| 44 | 1.2.1.1.6 | **Modificar muestra** | 1.75d | 2011-09-30 | 2011-10-04 | 39 |  | 121.48d |  |
| 45 |  | Programar modificacion en jsp (reutilizar componentes) | 1.5d | 2011-09-30 | 2011-10-04 |  |  | 41.94d |  |
| 46 |  | Hacer pruebas unitarias | 0.25d | 2011-10-04 | 2011-10-04 | 45 |  | 41.94d |  |
| 47 | 1.2.1.1.7 | **Reemplazar Ensayo** | 2.81d | 2011-10-04 | 2011-10-07 | 44 |  | 121.48d |  |
| 48 |  | Programar jsp | 2.3d | 2011-10-04 | 2011-10-06 |  |  | 41.94d |  |
| 49 |  | Validar tiempo transcurrido entre fecha actual y muestra | 0.13d | 2011-10-06 | 2011-10-07 | 48 |  | 41.94d |  |
| 50 |  | Validar acceso por parámetros del sistema | 0.13d | 2011-10-07 | 2011-10-07 | 49 |  | 41.94d |  |
| 51 |  | Pruebas unitarias | 0.25d | 2011-10-07 | 2011-10-07 | 50 |  | 41.94d |  |
| 52 | 1.2.1.1.8 | **Reporte de Control de Muestra de Investigación** | 2.5d | 2011-10-07 | 2011-10-11 | 47 |  | 121.48d |  |
| 53 |  | Realizar consulta a la BD (considerar nueva tabla) | 0.25d | 2011-10-07 | 2011-10-07 |  |  | 41.94d |  |
| 54 |  | Programar reporte en jsp (reutilizar componente de reporte control diario) | 2d | 2011-10-07 | 2011-10-11 | 53 |  | 41.94d |  |
| 55 |  | Hacer pruebas unitarias | 0.25d | 2011-10-11 | 2011-10-11 | 54 |  | 41.94d |  |
| 56 | 1.2.1.1.9 | **Registrar ensayo por rango de muestra (Muestra especial)** | 2.5d | 2011-10-11 | 2011-10-14 | 52 |  | 121.48d |  |
| 57 |  | Analizar impacto en la estructura | 0.25d | 2011-10-11 | 2011-10-12 |  |  | 41.94d |  |
| 58 |  | Programar jsp (reutilizando componentes) | 2d | 2011-10-12 | 2011-10-14 | 57 |  | 41.94d |  |
| 59 |  | Hacer pruebas unitarias | 0.25d | 2011-10-14 | 2011-10-14 | 58 |  | 41.94d |  |
| 60 | 1.2.1.2 | **Reporte por línea de producción** | 5.9d | 2011-09-22 | 2011-09-30 |  |  | 93.24d |  |
| 61 |  | Revisar descripción funcional | 0.13d | 2011-09-22 | 2011-09-22 |  |  | 13.7d |  |
| 62 |  | Identificar clases | 0.38d | 2011-09-22 | 2011-09-23 | 61 |  | 13.7d |  |
| 63 |  | Revisar información de procesos | 0.38d | 2011-09-23 | 2011-09-23 | 62 |  | 13.7d |  |
| 64 |  | Diagramar arquitectura | 0.25d | 2011-09-23 | 2011-09-23 | 63 |  | 13.7d |  |
| 65 |  | Hito: Validar casuistica de procesos por CPSAA | 0d | 2011-09-23 | 2011-09-23 | 64 |  | 13.7d |  |
| 66 |  | Realizar consulta a la BD | 0.38d | 2011-09-23 | 2011-09-26 | 65 |  | 13.7d |  |
| 67 |  | Programar jsp con estilos | 4d | 2011-09-26 | 2011-09-30 | 66 |  | 13.7d |  |
| 68 |  | Pruebas unitarias | 0.38d | 2011-09-30 | 2011-09-30 | 67 |  | 13.7d |  |
| 69 | 1.2.1.3 | **Generar informe control de calidad de minerales** | 8.26d | 2011-09-30 | 2011-10-12 | 60 |  | 93.24d |  |
| 70 |  | Revisar descripción funcional | 0.13d | 2011-09-30 | 2011-09-30 |  |  | 13.7d |  |

| ID | WBS | Task | Duration | Start | Finish | Predecessors | Total float | Constraint |
| --- | --- | --- | --- | --- | --- | --- | --- | --- |
| 71 |  | Diagramar arquitectura | 0.13d | 2011-09-30 | 2011-09-30 | 70 | 13.7d |  |
| 72 |  | Identificar clases | 0.13d | 2011-09-30 | 2011-10-03 | 71 | 13.7d |  |
| 73 |  | Reestructurar tabla de base de datos | 0.13d | 2011-10-03 | 2011-10-03 | 72 | 13.7d |  |
| 74 |  | Programar jsp con estilos | 3d | 2011-10-03 | 2011-10-06 | 73 | 13.7d |  |
| 75 |  | Insertar registros faltantes en la base de datos | 0.3d | 2011-10-06 | 2011-10-06 | 74 | 13.7d |  |
| 76 |  | Pruebas unitarias | 0.25d | 2011-10-06 | 2011-10-06 | 75 | 13.7d |  |
| 77 | 1.2.1.3.8 | **Generar informe de Control de Calidad de minerales 2 (para vigilancia)** | 4.19d | 2011-10-06 | 2011-10-12 | 76 | 93.24d |  |
| 78 |  | Revisar descripción funcional | 0.13d | 2011-10-06 | 2011-10-06 |  | 13.7d |  |
| 79 |  | Diagramar arquitectura | 0.13d | 2011-10-06 | 2011-10-06 | 78 | 13.7d |  |
| 80 |  | Identificar clases | 0.13d | 2011-10-06 | 2011-10-07 | 79 | 13.7d |  |
| 81 |  | Reestructurar tabla de base de datos | 0.25d | 2011-10-07 | 2011-10-07 | 80 | 13.7d |  |
| 82 |  | Programar jsp con estilos | 3d | 2011-10-07 | 2011-10-12 | 81 | 13.7d |  |
| 83 |  | Insertar registros faltantes en la base de datos | 0.3d | 2011-10-12 | 2011-10-12 | 82 | 13.7d |  |
| 84 |  | Pruebas unitarias | 0.25d | 2011-10-12 | 2011-10-12 | 83 | 13.7d |  |
| 85 | 1.2.1.4 | **Consultar Reporte gerencial - Ensayo de Resistencia Mensual** | 3.04d | 2011-10-14 | 2011-10-19 | 32 | 121.48d |  |
| 86 |  | Revisar descripción funcional | 0.13d | 2011-10-14 | 2011-10-14 |  | 41.94d |  |
| 87 |  | Identificar clases | 0.13d | 2011-10-14 | 2011-10-14 | 86 | 41.94d |  |
| 88 |  | Diagramar arquitectura | 0.13d | 2011-10-14 | 2011-10-14 | 87 | 41.94d |  |
| 89 |  | Programar jsp con estilos | 2.4d | 2011-10-14 | 2011-10-19 | 88 | 41.94d |  |
| 90 |  | Pruebas unitarias | 0.25d | 2011-10-19 | 2011-10-19 | 89 | 41.94d |  |
| 91 | 1.2.1.5 | **Reporte Consolidado en Archivo** | 4.69d | 2011-10-19 | 2011-10-26 | 85 | 121.48d |  |
| 92 |  | Revisar descripción funcional | 0.13d | 2011-10-19 | 2011-10-19 |  | 41.94d |  |
| 93 |  | Identificar clases | 0.13d | 2011-10-19 | 2011-10-19 | 92 | 41.94d |  |
| 94 |  | Diagramar arquitectura | 0.13d | 2011-10-19 | 2011-10-19 | 93 | 41.94d |  |
| 95 |  | Programar jsp con estilos | 2d | 2011-10-19 | 2011-10-21 | 94 | 41.94d |  |
| 96 |  | Programar generación de excel | 1.8d | 2011-10-21 | 2011-10-25 | 95 | 41.94d |  |
| 97 |  | Pruebas unitarias | 0.25d | 2011-10-25 | 2011-10-25 | 96 | 41.94d |  |
| 98 |  | Optimizar tiempo de respuesta | 0.25d | 2011-10-25 | 2011-10-26 | 97 | 41.94d |  |
| 99 | 1.2.1.6 | **Registrar Lotes, Muestras y Trazabilidad** | 9.39d | 2011-10-12 | 2011-10-26 | 69 | 93.24d |  |
| 100 |  | Revisar descripción funcional | 0.13d | 2011-10-12 | 2011-10-13 |  | 13.7d |  |
| 101 |  | Diagramar arquitectura | 0.25d | 2011-10-13 | 2011-10-13 | 100 | 13.7d |  |
| 102 |  | Identificar clases | 0.13d | 2011-10-13 | 2011-10-13 | 101 | 13.7d |  |
| 103 |  | Reestructurar tablas | 0.13d | 2011-10-13 | 2011-10-13 | 102 | 13.7d |  |
| 104 |  | Programar jsp y estilos | 3d | 2011-10-13 | 2011-10-18 | 103 | 13.7d |  |
| 105 |  | Pruebas unitarias | 0.25d | 2011-10-18 | 2011-10-18 | 104 | 13.7d |  |
| 106 |  | Reestructurar funcionalidad Administrar Lote | 3d | 2011-10-18 | 2011-10-21 | 105 | 13.7d |  |
| 107 |  | Pruebas unitarias | 0.25d | 2011-10-21 | 2011-10-24 | 106 | 13.7d |  |
| 108 |  | Reestructurar funcionalidad Certificado de calidad | 2d | 2011-10-24 | 2011-10-26 | 107 | 13.7d |  |
| 109 |  | Pruebas unitarias | 0.25d | 2011-10-26 | 2011-10-26 | 108 | 13.7d |  |
| 110 | 1.2.1.7 | **Administrar Procesos** | 0.75d | 2011-10-26 | 2011-10-26 | 91 | 121.48d |  |
| 111 |  | Pruebas unitarias | 0.25d | 2011-10-26 | 2011-10-26 |  | 41.94d |  |
| 112 |  | Realizar ajustes | 0.5d | 2011-10-26 | 2011-10-26 | 111 | 41.94d |  |
| 113 | 1.2.1.8 | **Administrar Equipo** | 0.75d | 2011-10-26 | 2011-10-27 | 110 | 121.48d |  |
| 114 |  | Pruebas unitarias | 0.25d | 2011-10-26 | 2011-10-27 |  | 41.94d |  |
| 115 |  | Realizar ajustes | 0.5d | 2011-10-27 | 2011-10-27 | 114 | 41.94d |  |
| 116 | 1.2.1.9 | **Administrar Planta** | 1.13d | 2011-10-27 | 2011-10-28 | 113 | 121.48d |  |
| 117 |  | Programar componente | 0.38d | 2011-10-27 | 2011-10-28 |  | 41.94d |  |
| 118 |  | Pruebas unitarias | 0.25d | 2011-10-28 | 2011-10-28 | 117 | 41.94d |  |
| 119 |  | Realizar ajustes | 0.5d | 2011-10-28 | 2011-10-28 | 118 | 41.94d |  |
| 120 | 1.2.1.10 | **Administrar Roles** | 0.75d | 2011-10-28 | 2011-10-31 | 116 | 121.48d |  |
| 121 |  | Pruebas unitarias | 0.25d | 2011-10-28 | 2011-10-31 |  | 41.94d |  |
| 122 |  | Realizar ajustes | 0.5d | 2011-10-31 | 2011-10-31 | 121 | 41.94d |  |
| 123 | 1.2.1.11 | **Administrar permisos por rol** | 0.75d | 2011-10-31 | 2011-11-02 | 120 | 121.48d |  |
| 124 |  | Pruebas unitarias | 0.25d | 2011-10-31 | 2011-10-31 |  | 41.94d |  |
| 125 |  | Realizar ajustes | 0.5d | 2011-10-31 | 2011-11-02 | 124 | 41.94d |  |
| 126 | 1.2.1.12 | **Administrar Parámetros de sistema** | 0.75d | 2011-11-02 | 2011-11-03 | 123 | 121.48d |  |
| 127 |  | Pruebas unitarias | 0.25d | 2011-11-02 | 2011-11-02 |  | 41.94d |  |
| 128 |  | Realizar ajustes | 0.5d | 2011-11-02 | 2011-11-03 | 127 | 41.94d |  |
| 129 | 1.2.1.13 | **Registro Automatico de Ensayo Resistencia a Compresion** | 6.76d | 2011-11-16 | 2011-11-24 | 99 | 79.54d |  |
| 130 |  | Hito de control: Descripción funcional enviada por CPSAA | 0d | 2011-11-16 | 2011-11-16 |  | 6.76d | start no earlier than 2011-11-16 |
| 131 |  | Programar job que lea el archivo en excel | 2d | 2011-11-16 | 2011-11-17 |  | 0.99d | start no earlier than 2011-11-16 |
| 132 |  | Ejecutar pruebas de lectura de archivo | 0.38d | 2011-11-18 | 2011-11-18 | 131 | 0.99d |  |
| 133 |  | Crear beans | 0.38d | 2011-11-18 | 2011-11-18 | 132 | 0.99d |  |
| 134 |  | Validar datos del archivo | 0.25d | 2011-11-18 | 2011-11-21 | 133 | 0.99d |  |
| 135 |  | Validar consistencia de la data en BD SAC | 1.25d | 2011-11-21 | 2011-11-22 | 134 | 0.99d |  |
| 136 |  | Registrar datos en la BD SAC | 1.25d | 2011-11-22 | 2011-11-23 | 135 | 0.99d |  |
| 137 |  | Configurar redondeo a la decena | 0.75d | 2011-11-23 | 2011-11-24 | 136 | 0.99d |  |
| 138 |  | Realizar pruebas unitarias | 0.5d | 2011-11-24 | 2011-11-24 | 137 | 0.99d |  |
| 139 | 1.2.1.14 | **Documentar Casos de Prueba** | 3d | 2011-11-03 | 2011-11-08 | 126 | 121.48d |  |
| 140 |  | Realizar Casos de Prueba de Funcionalidades Nuevas | 1.5d | 2011-11-03 | 2011-11-04 |  | 41.94d |  |

| ID | WBS | Task | Duration | Start | Finish | Predecessors | Complete | Total float | Constraint |
| --- | --- | --- | --- | --- | --- | --- | --- | --- | --- |
| 141 |  | Realizar Casos de Prueba de Funcionalidades Admin. Datos Maestros | 1.5d | 2011-11-04 | 2011-11-08 | 140 |  | 41.94d |  |
| 142 | 1.2.1.15 | **Integración de Módulos** | 4d | 2011-11-24 | 2011-11-30 | 129 |  | 79.54d |  |
| 143 | 1.2.1.15.1 | **Integrar funcionalidades nuevas** | 2d | 2011-11-24 | 2011-11-28 |  |  | 79.54d |  |
| 144 |  | Revisar clases por integrar | 0.5d | 2011-11-24 | 2011-11-25 |  |  | 0.99d |  |
| 145 |  | Integrar código | 0.5d | 2011-11-25 | 2011-11-25 | 144 |  | 0.99d |  |
| 146 |  | Probar integración del código | 0.5d | 2011-11-25 | 2011-11-28 | 145 |  | 0.99d |  |
| 147 |  | Hacer pruebas funcionales de integración | 0.5d | 2011-11-28 | 2011-11-28 | 146 |  | 0.99d |  |
| 148 | 1.2.1.15.2 | **Integrar funcionalidades Admin. Datos Maestros** | 2d | 2011-11-28 | 2011-11-30 | 143 |  | 79.54d |  |
| 149 |  | Revisar clases por integrar | 0.5d | 2011-11-28 | 2011-11-29 |  |  | 0.99d |  |
| 150 |  | Integrar código | 0.5d | 2011-11-29 | 2011-11-29 | 149 |  | 0.99d |  |
| 151 |  | Probar integración del código | 0.5d | 2011-11-29 | 2011-11-30 | 150 |  | 0.99d |  |
| 152 |  | Hacer pruebas funcionales de integración | 0.5d | 2011-11-30 | 2011-11-30 | 151 |  | 0.99d |  |
| 153 | 1.2.1.16 | **Fase: Pruebas** | 6.25d | 2011-11-30 | 2011-12-09 | 142 |  | 79.54d |  |
| 154 |  | Desplegar aplicación en ambiente desarrollo CSTI | 0.25d | 2011-11-30 | 2011-12-01 |  |  | 6d |  |
| 155 | 1.2.1.16.2 | **Pruebas unitarias** | 1d | 2011-11-30 | 2011-12-01 |  |  | 79.54d |  |
| 156 |  | Revisar funcionalidades nuevas AP1 | 1d | 2011-11-30 | 2011-12-01 |  |  | 0.99d |  |
| 157 |  | Revisar funcionalidades nuevas AP2 | 1d | 2011-11-30 | 2011-12-01 |  |  | 0.99d |  |
| 158 |  | Coordinar despliegue en ambiente pruebas CPSAA | 0.25d | 2011-12-01 | 2011-12-02 | 155 |  | 0.99d |  |
| 159 | 1.2.1.16.4 | **Pruebas integrales** | 5d | 2011-12-02 | 2011-12-09 | 158 |  | 79.54d |  |
| 160 |  | Revisar funcionalidades nuevas (A) | 3d | 2011-12-02 | 2011-12-07 |  |  | 0.99d |  |
| 161 |  | Revisar funcionalidades Admin. Datos Maestros | 2d | 2011-12-07 | 2011-12-09 | 160 |  | 0.99d |  |
| 162 | 1.2.1.16.5 | **Documentacion** | 2.88d | 2011-12-01 | 2011-12-06 | 155 |  | 81.91d |  |
| 163 |  | Manual de Usuario | 2d | 2011-12-01 | 2011-12-05 |  |  | 2.37d |  |
| 164 |  | Manual de Instalación y Configuración del Sistema | 0.38d | 2011-12-05 | 2011-12-06 | 163 |  | 2.37d |  |
| 165 |  | Informe de Capacitación y Pruebas de Aceptación del Cliente | 0.5d | 2011-12-06 | 2011-12-06 | 164 |  | 2.37d |  |
| 166 | 1.2.1.17 | **Ajustes** | 11d | 2011-12-09 | 2011-12-26 | 153 |  | 79.54d |  |
| 167 |  | Presentar formalmente observaciones | 0.5d | 2011-12-09 | 2011-12-09 |  |  | 0.99d |  |
| 168 |  | Evaluar observaciones | 0.5d | 2011-12-09 | 2011-12-12 | 167 |  | 0.99d |  |
| 169 |  | Programar correcciones | 10d | 2011-12-12 | 2011-12-26 | 168 |  | 0.99d |  |
| 170 | 1.2.1.18 | **Fase: Pase a producción** | 1d | 2011-12-26 | 2011-12-27 | 166 |  | 79.54d |  |
| 171 | 1.2.1.18.1 | **Pase a producción** | 1d | 2011-12-26 | 2011-12-27 |  |  | 79.54d |  |
| 172 |  | Implementar sistema en producción | 1d | 2011-12-26 | 2011-12-27 |  |  | 0.99d |  |
| 173 | 1.2.1.19 | **Fase: Capacitación** | 2d | 2011-12-27 | 2011-12-29 | 170 |  | 79.54d |  |
| 174 | 1.2.1.19.1 | **Capacitación a usuarios** | 2d | 2011-12-27 | 2011-12-29 |  |  | 79.54d |  |
| 175 |  | Preparar material | 2d | 2011-12-27 | 2011-12-29 |  |  | 0.99d |  |
| 176 |  | Capacitar a usuarios | 2d | 2011-12-27 | 2011-12-29 |  |  | 0.99d |  |
| 177 | 1.2.1.20 | **Fase: Post-Produccion** | 5d | 2011-12-29 | 2012-01-05 | 173 |  | 79.54d |  |
| 178 |  | Programar correcciones | 5d | 2011-12-29 | 2012-01-05 |  |  | 0.99d |  |
| 179 | 1.2.2 | **Fase 2** | 104.38d | 2012-01-06 A | 2012-06-05 | 31 | 77% | 0d |  |
| 180 | 1.2.2.1 | **Desarrollo** | 86.26d | 2012-01-06 A | 2012-05-10 |  | 91% | 9.48d |  |
| 181 | 1.2.2.1.1 | **Registro de Muestra de Investigación (Envío de valores de ensayo y comentarios por correo electrónico)** | 2d | 2012-01-06 A | 2012-01-09 A |  | 100% |  |  |
| 182 |  | Implementar clase | 2d | 2012-01-06 A | 2012-01-09 A |  | 100% |  |  |
| 183 |  | Pruebas unitarias | 2d | 2012-01-06 A | 2012-01-09 A |  | 100% |  |  |
| 184 | 1.2.2.1.2 | **Iconos de acceso directo** | 13d | 2012-01-18 A | 2012-02-03 A | 181 | 100% |  |  |
| 185 |  | Revisar descripción funcional | 1d | 2012-01-18 A | 2012-01-18 A |  | 100% |  |  |
| 186 |  | Diagramar arquitectura | 1d | 2012-01-18 A | 2012-01-18 A | 185 | 100% |  |  |
| 187 |  | Programar jsp con estilos | 7d | 2012-01-18 A | 2012-01-26 A | 186 | 100% |  |  |
| 188 |  | Pruebas unitarias | 7d | 2012-01-26 A | 2012-02-03 A | 187 | 100% |  |  |
| 189 | 1.2.2.1.3 | **Reemplazar Ensayo (Cementos y Premezclados)** | 18d | 2012-02-06 A | 2012-02-29 A | 184 | 100% |  |  |
| 190 |  | Revisar descripción funcional | 1d | 2012-02-06 A | 2012-02-06 A |  | 100% |  |  |
| 191 |  | Identificar clases | 1d | 2012-02-06 A | 2012-02-06 A | 190 | 100% |  |  |
| 192 |  | Diagramar arquitectura | 1d | 2012-02-06 A | 2012-02-06 A | 191 | 100% |  |  |
| 193 |  | Programar jsp con estilos | 9d | 2012-02-06 A | 2012-02-16 A | 192 | 100% |  |  |
| 194 |  | Validar tiempo transcurrido entre fecha actual y muestra | 1d | 2012-02-20 A | 2012-02-20 A | 193 | 100% |  |  |
| 195 |  | Validar acceso por parámetros del sistema | 1d | 2012-02-20 A | 2012-02-20 A | 194 | 100% |  |  |
| 196 |  | Pruebas unitarias | 7d | 2012-02-21 A | 2012-02-29 A | 195 | 100% |  |  |
| 197 | 1.2.2.1.4 | **Administrar Id de Lotes y Ensayos** | 10d | 2012-01-12 A | 2012-01-25 A |  | 100% |  |  |
| 198 |  | Revisar descripción funcional | 1d | 2012-01-12 A | 2012-01-12 A |  | 100% |  |  |
| 199 |  | Diagramar arquitectura | 1d | 2012-01-12 A | 2012-01-12 A | 198 | 100% |  |  |
| 200 |  | Programar | 7d | 2012-01-12 A | 2012-01-20 A | 199 | 100% |  |  |
| 201 |  | Pruebas unitarias | 3d | 2012-01-23 A | 2012-01-25 A | 200 | 100% |  |  |
| 202 | 1.2.2.1.5 | **Mejoras menores** | 10d | 2012-04-23 | 2012-05-07 |  |  | 11.74d |  |
| 203 |  | Revisar descripción funcional | 0.13d | 2012-04-23 | 2012-04-23 |  |  | 11.74d | start no earlier than 2012-01-05 |
| 204 |  | Analizar impacto en funcionalidades | 0.13d | 2012-04-23 | 2012-04-23 | 203 |  | 11.74d | start no earlier than 2012-01-05 |
| 205 |  | Diagramar arquitectura | 0.13d | 2012-04-23 | 2012-04-23 | 204 |  | 11.74d | start no earlier than 2012-01-05 |
| 206 |  | Programar | 2d | 2012-04-23 | 2012-04-25 | 205 |  | 11.74d | start no earlier than 2012-01-05 |
| 207 |  | Pruebas unitarias | 0.61d | 2012-04-25 | 2012-04-25 | 206 |  | 11.74d | start no earlier than 2012-01-10 |
| 208 |  | Tiempo por compensación de 2 funcionalidades retiradas | 7d | 2012-04-25 | 2012-05-07 | 207 |  | 11.74d |  |
| 209 | 1.2.2.1.6 | **Administrar Grupo de Tipo de Ensayo** | 4d | 2012-02-06 A | 2012-02-09 A | 221 | 100% |  |  |
| 210 |  | Revisar descripción funcional | 1d | 2012-02-06 A | 2012-02-06 A |  | 100% |  | start no earlier than 2012-01-10 |

| ID | WBS | Task | Duration | Start | Finish | Predecessors | Complete | Constraint |
| --- | --- | --- | --- | --- | --- | --- | --- | --- |
| 211 |  | Diagramar arquitectura | 1d | 2012-02-06 A | 2012-02-06 A | 210 | 100% | start no earlier than 2012-01-10 |
| 212 |  | Identificar clases | 1d | 2012-02-06 A | 2012-02-06 A | 211 | 100% | start no earlier than 2012-01-10 |
| 213 |  | Programar jsp con estilos | 3d | 2012-02-06 A | 2012-02-08 A | 212 | 100% | start no earlier than 2012-01-10 |
| 214 |  | Pruebas unitarias | 1d | 2012-02-09 A | 2012-02-09 A | 213 | 100% | start no earlier than 2012-01-13 |
| 215 | 1.2.2.1.7 | **Administrar Tipo de Ensayo** | 10d | 2012-02-09 A | 2012-02-22 A | 209 | 100% |  |
| 216 |  | Revisar descripción funcional | 1d | 2012-02-09 A | 2012-02-09 A |  | 100% | start no earlier than 2011-10-03 |
| 217 |  | Diagramar arquitectura | 1d | 2012-02-09 A | 2012-02-09 A | 216 | 100% | start no earlier than 2011-10-03 |
| 218 |  | Identificar clases | 1d | 2012-02-09 A | 2012-02-09 A | 217 | 100% | start no earlier than 2011-10-03 |
| 219 |  | Programar jsp con estilos | 9d | 2012-02-09 A | 2012-02-21 A | 218 | 100% | start no earlier than 2011-10-04 |
| 220 |  | Pruebas unitarias | 1d | 2012-02-22 A | 2012-02-22 A | 219 | 100% | start no earlier than 2011-10-07 |
| 221 | 1.2.2.1.8 | **Administrar matriz de tratamiento por producto y proceso** | 7d | 2012-01-26 A | 2012-02-03 A | 197 | 100% |  |
| 222 |  | Revisar descripción funcional | 1d | 2012-01-26 A | 2012-01-26 A |  | 100% | start no earlier than 2012-01-10 |
| 223 |  | Diagramar arquitectura | 1d | 2012-01-26 A | 2012-01-26 A | 222 | 100% | start no earlier than 2012-01-10 |
| 224 |  | Identificar clases | 1d | 2012-01-26 A | 2012-01-26 A | 223 | 100% | start no earlier than 2012-01-10 |
| 225 |  | Programar jsp con estilos | 6d | 2012-01-26 A | 2012-02-02 A | 224 | 100% | start no earlier than 2012-01-10 |
| 226 |  | Pruebas unitarias | 1d | 2012-02-03 A | 2012-02-03 A | 225 | 100% | start no earlier than 2012-01-13 |
| 227 | 1.2.2.1.9 | **Administrar Producto** | 3d | 2012-03-05 A | 2012-03-07 A | 245 | 100% |  |
| 228 |  | Revisar descripción funcional | 1d | 2012-03-05 A | 2012-03-05 A |  | 100% | start no earlier than 2012-01-10 |
| 229 |  | Diagramar arquitectura | 1d | 2012-03-05 A | 2012-03-05 A | 228 | 100% | start no earlier than 2012-01-10 |
| 230 |  | Identificar clases | 1d | 2012-03-05 A | 2012-03-05 A | 229 | 100% | start no earlier than 2012-01-10 |
| 231 |  | Programar jsp con estilos | 2d | 2012-03-05 A | 2012-03-06 A | 230 | 100% | start no earlier than 2012-01-10 |
| 232 |  | Pruebas unitarias | 2d | 2012-03-06 A | 2012-03-07 A | 231 | 100% |  |
| 233 | 1.2.2.1.10 | **Administrar Puesto de Trabajo** | 7d | 2012-03-01 A | 2012-03-09 A | 189 | 100% |  |
| 234 |  | Revisar descripción funcional | 1d | 2012-03-01 A | 2012-03-01 A |  | 100% | start no earlier than 2012-01-05 |
| 235 |  | Diagramar arquitectura | 1d | 2012-03-01 A | 2012-03-01 A | 234 | 100% | start no earlier than 2012-01-05 |
| 236 |  | Identificar clases | 1d | 2012-03-01 A | 2012-03-01 A | 235 | 100% | start no earlier than 2012-01-05 |
| 237 |  | Programar jsp con estilos | 6d | 2012-03-01 A | 2012-03-08 A | 236 | 100% | start no earlier than 2012-01-05 |
| 238 |  | Pruebas unitarias | 1d | 2012-03-09 A | 2012-03-09 A | 237 | 100% | start no earlier than 2012-01-10 |
| 239 | 1.2.2.1.11 | **Administrar Medidas Correctivas por Tipo de Ensayo** | 6d | 2012-02-23 A | 2012-03-01 A | 215 | 100% |  |
| 240 |  | Revisar descripción funcional | 1d | 2012-02-23 A | 2012-02-23 A |  | 100% | start no earlier than 2012-01-05 |
| 241 |  | Diagramar arquitectura | 1d | 2012-02-23 A | 2012-02-23 A | 240 | 100% | start no earlier than 2012-01-05 |
| 242 |  | Identificar clases | 1d | 2012-02-23 A | 2012-02-23 A | 241 | 100% | start no earlier than 2012-01-05 |
| 243 |  | Programar jsp con estilos | 2d | 2012-02-23 A | 2012-02-24 A | 242 | 100% | start no earlier than 2012-01-05 |
| 244 |  | Pruebas unitarias | 5d | 2012-02-24 A | 2012-03-01 A | 243 | 100% | start no earlier than 2012-01-10 |
| 245 | 1.2.2.1.12 | **Administrar Responsables por Medida Correctiva** | 2d | 2012-03-01 A | 2012-03-02 A | 239 | 100% |  |
| 246 |  | Revisar descripción funcional | 1d | 2012-03-01 A | 2012-03-01 A |  | 100% | start no earlier than 2012-01-05 |
| 247 |  | Diagramar arquitectura | 1d | 2012-03-01 A | 2012-03-01 A | 246 | 100% | start no earlier than 2012-01-05 |
| 248 |  | Identificar clases | 1d | 2012-03-01 A | 2012-03-01 A | 247 | 100% | start no earlier than 2012-01-05 |
| 249 |  | Programar jsp con estilos | 2d | 2012-03-01 A | 2012-03-02 A | 248 | 100% | start no earlier than 2012-01-05 |
| 250 |  | Pruebas unitarias | 1d | 2012-03-02 A | 2012-03-02 A | 249 | 100% | start no earlier than 2012-01-10 |
| 251 | 1.2.2.1.13 | **Administrar Roles por puesto de trabajo** | 3d | 2012-03-12 A | 2012-03-14 A | 233 | 100% |  |
| 252 |  | Revisar descripción funcional | 1d | 2012-03-12 A | 2012-03-12 A |  | 100% | finish no earlier than 2012-01-05 |
| 253 |  | Diagramar arquitectura | 1d | 2012-03-12 A | 2012-03-12 A | 252 | 100% | finish no earlier than 2012-01-05 |
| 254 |  | Identificar clases | 1d | 2012-03-12 A | 2012-03-12 A | 253 | 100% | start no earlier than 2012-01-05 |
| 255 |  | Programar jsp con estilos | 2d | 2012-03-12 A | 2012-03-13 A | 254 | 100% | start no earlier than 2012-01-05 |
| 256 |  | Pruebas unitarias | 1d | 2012-03-14 A | 2012-03-14 A | 255 | 100% | start no earlier than 2012-01-09 |
| 257 | 1.2.2.1.14 | **Administrar Información de Auditoria** | 5d | 2012-03-28 A | 2012-04-03 A | 251 | 100% |  |
| 258 |  | Revisar descripción funcional | 1d | 2012-03-28 A | 2012-03-28 A |  | 100% | finish no earlier than 2012-01-09 |
| 259 |  | Diagramar arquitectura | 1d | 2012-03-28 A | 2012-03-28 A | 258 | 100% | finish no earlier than 2012-01-10 |
| 260 |  | Crear tabla en BD | 1d | 2012-03-28 A | 2012-03-28 A | 259 | 100% | finish no earlier than 2012-01-10 |
| 261 |  | Programar generación de log ante actualización de BD | 4d | 2012-03-28 A | 2012-04-02 A | 260 | 100% | start no earlier than 2012-01-10 |
| 262 |  | Programar jsp con estilos | 4d | 2012-03-28 A | 2012-04-02 A | 261 | 100% | start no earlier than 2012-01-12 |
| 263 |  | Pruebas unitarias | 1d | 2012-04-03 A | 2012-04-03 A | 262 | 100% | start no earlier than 2012-01-13 |
| 264 | 1.2.2.1.15 | **Administrar Línea de Producto** | 3d | 2012-03-26 A | 2012-03-28 A | 227 | 100% |  |
| 265 |  | Revisar descripción funcional | 1d | 2012-03-26 A | 2012-03-26 A |  | 100% | finish no earlier than 2012-01-05 |
| 266 |  | Diagramar arquitectura | 1d | 2012-03-26 A | 2012-03-26 A | 265 | 100% | finish no earlier than 2012-01-05 |
| 267 |  | Identificar clases | 1d | 2012-03-26 A | 2012-03-26 A | 266 | 100% | start no earlier than 2012-01-05 |
| 268 |  | Programar jsp con estilos | 3d | 2012-03-26 A | 2012-03-28 A | 267 | 100% | start no earlier than 2012-01-05 |
| 269 |  | Pruebas unitarias | 1d | 2012-03-28 A | 2012-03-28 A | 268 | 100% | start no earlier than 2012-01-09 |
| 270 | 1.2.2.1.16 | **Administrar Responsable** | 4d | 2012-03-29 A | 2012-04-03 A | 264 | 100% |  |
| 271 |  | Revisar descripción funcional | 1d | 2012-03-29 A | 2012-03-29 A |  | 100% | finish no earlier than 2012-01-09 |
| 272 |  | Diagramar arquitectura | 1d | 2012-03-29 A | 2012-03-29 A | 271 | 100% | finish no earlier than 2012-01-10 |
| 273 |  | Identificar clases | 1d | 2012-03-29 A | 2012-03-29 A | 272 | 100% | start no earlier than 2012-01-10 |
| 274 |  | Programar jsp con estilos | 3d | 2012-03-29 A | 2012-04-02 A | 273 | 100% | start no earlier than 2012-01-10 |
| 275 |  | Pruebas unitarias | 1d | 2012-04-03 A | 2012-04-03 A | 274 | 100% | start no earlier than 2012-01-13 |
| 276 | 1.2.2.1.17 | **Administrar Turno** | 5d | 2012-04-12 A | 2012-04-18 A | 270 | 100% |  |
| 277 |  | Revisar descripción funcional | 1d | 2012-04-12 A | 2012-04-12 A |  | 100% | finish no earlier than 2012-01-05 |
| 278 |  | Diagramar arquitectura | 1d | 2012-04-12 A | 2012-04-12 A | 277 | 100% | finish no earlier than 2012-01-05 |
| 279 |  | Identificar clases | 1d | 2012-04-12 A | 2012-04-12 A | 278 | 100% | start no earlier than 2012-01-05 |
| 280 |  | Programar jsp con estilos | 4d | 2012-04-12 A | 2012-04-17 A | 279 | 100% | start no earlier than 2012-01-05 |

| ID | WBS | Task | Duration | Start | Finish | Predecessors | Complete | Total float | Constraint |
| --- | --- | --- | --- | --- | --- | --- | --- | --- | --- |
| 281 |  | Pruebas unitarias | 1d | 2012-04-18 A | 2012-04-18 A | 280 | 100% |  | start no earlier than 2012-01-09 |
| 282 | 1.2.2.1.18 | **Administrar Empresa** | 4d | 2012-01-31 A | 2012-02-03 A | 257 | 100% |  |  |
| 283 |  | Revisar descripción funcional | 1d | 2012-01-31 A | 2012-01-31 A |  | 100% |  | finish no earlier than 2012-01-09 |
| 284 |  | Diagramar arquitectura | 1d | 2012-01-31 A | 2012-01-31 A | 283 | 100% |  | finish no earlier than 2012-01-10 |
| 285 |  | Identificar clases | 1d | 2012-01-31 A | 2012-01-31 A | 284 | 100% |  | start no earlier than 2012-01-09 |
| 286 |  | Programar jsp con estilos | 3d | 2012-01-31 A | 2012-02-02 A | 285 | 100% |  | start no earlier than 2012-01-10 |
| 287 |  | Pruebas unitarias | 1d | 2012-02-03 A | 2012-02-03 A | 286 | 100% |  | start no earlier than 2012-01-12 |
| 288 | 1.2.2.1.19 | **Administrar Negocio** | 4d | 2012-02-06 A | 2012-02-09 A | 282 | 100% |  |  |
| 289 |  | Revisar descripción funcional | 1d | 2012-02-06 A | 2012-02-06 A |  | 100% |  |  |
| 290 |  | Diagramar arquitectura | 1d | 2012-02-06 A | 2012-02-06 A | 289 | 100% |  |  |
| 291 |  | Identificar clases | 1d | 2012-02-06 A | 2012-02-06 A | 290 | 100% |  |  |
| 292 |  | Programar jsp con estilos | 3d | 2012-02-06 A | 2012-02-08 A | 291 | 100% |  |  |
| 293 |  | Pruebas unitarias | 1d | 2012-02-09 A | 2012-02-09 A | 292 | 100% |  |  |
| 294 | 1.2.2.1.20 | **Creación de equivalencias de Grupo de muestras QCX** | 4d | 2012-04-04 A | 2012-04-11 A | 288 | 100% |  |  |
| 295 |  | Revisar descripción funcional | 1d | 2012-04-04 A | 2012-04-04 A |  | 100% |  |  |
| 296 |  | Diagramar arquitectura | 1d | 2012-04-04 A | 2012-04-04 A | 295 | 100% |  |  |
| 297 |  | Identificar clases | 1d | 2012-04-04 A | 2012-04-04 A | 296 | 100% |  |  |
| 298 |  | Programar jsp con estilos | 3d | 2012-04-04 A | 2012-04-10 A | 297 | 100% |  |  |
| 299 |  | Pruebas unitarias | 1d | 2012-04-11 A | 2012-04-11 A | 298 | 100% |  |  |
| 300 | 1.2.2.1.21 | **Reporte Consolidado en Archivo (premezclados)** | 5d | 2012-04-04 A | 2012-04-12 A | 294 | 100% |  |  |
| 301 |  | Revisar descripción funcional | 1d | 2012-04-04 A | 2012-04-04 A |  | 100% |  | start no earlier than 2012-01-05 |
| 302 |  | Identificar clases | 1d | 2012-04-04 A | 2012-04-04 A | 301 | 100% |  | start no earlier than 2012-01-05 |
| 303 |  | Diagramar arquitectura | 1d | 2012-04-04 A | 2012-04-04 A | 302 | 100% |  | start no earlier than 2012-01-05 |
| 304 |  | Programar jsp con estilos | 1d | 2012-04-04 A | 2012-04-04 A | 303 | 100% |  | start no earlier than 2012-01-05 |
| 305 |  | Programar generación de excel | 4d | 2012-04-04 A | 2012-04-11 A | 304 | 100% |  | start no earlier than 2012-01-09 |
| 306 |  | Pruebas unitarias | 1d | 2012-04-12 A | 2012-04-12 A | 305 | 100% |  | start no earlier than 2012-01-10 |
| 307 |  | Optimizar tiempo de respuesta | 1d | 2012-04-12 A | 2012-04-12 A | 306 | 100% |  | start no earlier than 2012-01-10 |
| 308 | 1.2.2.1.22 | **Gráfico de Tendencia de Reporte Específico Consolidado y Control diario** | 7.01d | 2012-04-30 | 2012-05-10 | 345 |  | 9.48d |  |
| 309 |  | Revisar descripción funcional | 0.13d | 2012-04-30 | 2012-04-30 |  |  | 9.48d |  |
| 310 |  | Identificar clases | 0.38d | 2012-04-30 | 2012-04-30 | 309 |  | 9.48d |  |
| 311 |  | Diagramar arquitectura | 0.25d | 2012-04-30 | 2012-05-02 | 310 |  | 9.48d |  |
| 312 |  | Programar jsp con estilos | 3d | 2012-05-02 | 2012-05-07 | 311 |  | 9.48d |  |
| 313 |  | Pruebas unitarias | 0.25d | 2012-05-07 | 2012-05-07 | 312 |  | 9.48d |  |
| 314 |  | Tiempo por compensación de 1 funcionalidad retirada | 3d | 2012-05-07 | 2012-05-10 | 313 |  | 9.48d |  |
| 316 |  | Revisar descripción funcional | 0d | 2012-05-10 | 2012-05-10 |  |  | 9.48d |  |
| 317 |  | Diagramar arquitectura | 0d | 2012-05-10 | 2012-05-10 | 316 |  | 9.48d |  |
| 318 |  | Identificar clases | 0d | 2012-05-10 | 2012-05-10 | 317 |  | 9.48d |  |
| 319 |  | Programar jsp con estilos | 0d | 2012-05-10 | 2012-05-10 | 318 |  | 9.48d |  |
| 320 |  | Pruebas unitarias | 0d | 2012-05-10 | 2012-05-10 | 319 |  | 9.48d |  |
| 321 |  | Optimizar tiempo de respuesta | 0d | 2012-05-10 | 2012-05-10 | 320 |  | 9.48d |  |
| 323 |  | Revisar descripción funcional | 0d | 2012-04-20 | 2012-04-20 |  |  | 11.74d |  |
| 324 |  | Diagramar arquitectura | 0d | 2012-04-20 | 2012-04-20 | 323 |  | 11.74d |  |
| 325 |  | Identificar clases | 0d | 2012-04-20 | 2012-04-20 | 324 |  | 11.74d |  |
| 326 |  | Programar jsp con estilos | 0d | 2012-04-20 | 2012-04-20 | 325 |  | 11.74d |  |
| 327 |  | Pruebas unitarias | 0d | 2012-04-20 | 2012-04-20 | 326 |  | 11.74d |  |
| 328 |  | Optimizar tiempo de respuesta | 0d | 2012-04-20 | 2012-04-20 | 327 |  | 11.74d |  |
| 330 |  | Revisar descripción funcional | 0d | 2012-04-20 | 2012-04-20 |  |  | 11.74d |  |
| 331 |  | Identificar clases | 0d | 2012-04-20 | 2012-04-20 | 330 |  | 11.74d |  |
| 332 |  | Diagramar arquitectura | 0d | 2012-04-20 | 2012-04-20 | 331 |  | 11.74d |  |
| 333 |  | Programar jsp con estilos | 0d | 2012-04-20 | 2012-04-20 | 332 |  | 11.74d |  |
| 334 |  | Pruebas unitarias | 0d | 2012-04-20 | 2012-04-20 | 333 |  | 11.74d |  |
| 335 | 1.2.2.1.23 | **Gestión de stock de pre-fabricados, DINO** | 12d | 2012-03-07 A | 2012-03-22 A | 276 | 100% |  |  |
| 336 |  | Reestructurar funcionalidad Administrar Lote | 9d | 2012-03-07 A | 2012-03-19 A |  | 100% |  |  |
| 337 |  | Pruebas unitarias | 3d | 2012-03-20 A | 2012-03-22 A | 336 | 100% |  |  |
| 338 | 1.2.2.1.24 | **Envio de Lotes de Prefabricados a SAP** | 18d | 2012-03-26 A | 2012-04-20 | 335 | 99% | 11.74d |  |
| 339 |  | Revisar descripción funcional | 1d | 2012-03-26 A | 2012-03-26 A |  | 100% |  |  |
| 340 |  | Diagramar arquitectura | 1d | 2012-03-26 A | 2012-03-26 A | 339 | 100% |  |  |
| 341 |  | Identificar clases | 1d | 2012-03-26 A | 2012-03-26 A | 340 | 100% |  |  |
| 342 |  | Programar jsp y estilos | 17d | 2012-03-26 A | 2012-04-19 A | 341 | 100% |  |  |
| 343 |  | Programar RFC | 5d | 2012-03-26 A | 2012-03-30 A | 342 | 100% |  |  |
| 344 |  | Pruebas unitarias | 1d | 2012-04-20 A | 2012-04-20 | 343 | 99% | 11.74d |  |
| 345 | 1.2.2.1.25 | **Re-configurar los formatos de granulometría / Recalcular Curva Granulométrica** | 32.25d | 2012-03-13 A | 2012-04-30 | 300 | 64% | 9.48d |  |
| 346 |  | Revisar descripción funcional | 1d | 2012-03-13 A | 2012-03-13 A |  | 100% |  |  |
| 347 |  | Diagramar arquitectura | 1d | 2012-03-13 A | 2012-03-13 A | 346 | 100% |  |  |
| 348 |  | Relacionar tablas | 1d | 2012-03-13 A | 2012-03-13 A | 347 | 100% |  |  |
| 349 |  | Programar primer gráfico (Curva granulometrica) | 5d | 2012-03-13 A | 2012-03-19 A | 348 | 100% |  |  |
| 350 |  | Programar segundo gráfico (Grafico de agregados) | 3.5d | 2012-04-23 A | 2012-04-26 | 349 |  | 9.48d |  |
| 351 |  | Programa jsp y estilos | 2.5d | 2012-03-20 A | 2012-04-27 | 350 | 50% | 9.48d |  |
| 352 |  | Pruebas unitarias | 0.25d | 2012-04-27 | 2012-04-27 | 351 |  | 9.48d |  |
| 353 |  | Optimizar tiempo de respuesta | 0.25d | 2012-04-30 | 2012-04-30 | 352 |  | 9.48d |  |

| ID | WBS | Task | Duration | Start | Finish | Predecessors | Complete | Total float | Constraint |
| --- | --- | --- | --- | --- | --- | --- | --- | --- | --- |
| 354 | 1.2.2.2 | **Control de cambios** | 69d | 2012-01-09 A | 2012-04-16 |  | 91% | 0d |  |
| 355 | 1.2.2.2.1 | **ID generico en molienda cemento compósito** | 1d | 2012-01-09 A | 2012-01-09 A |  | 100% |  |  |
| 356 |  | Analizar impacto | 1d | 2012-01-09 A | 2012-01-09 A |  | 100% |  |  |
| 357 |  | Programar | 1d | 2012-01-09 A | 2012-01-09 A | 356 | 100% |  |  |
| 358 |  | Realizar Prueba Unitarias | 1d | 2012-01-09 A | 2012-01-09 A | 357 | 100% |  |  |
| 359 | 1.2.2.2.2 | **Mostrar los valores de U.M y el promedio (Reporte Consolidado en Archivo)** | 6d | 2012-01-10 A | 2012-01-17 A | 355 | 100% |  |  |
| 360 |  | Implementar clase existente | 5d | 2012-01-10 A | 2012-01-16 A |  | 100% |  |  |
| 361 |  | Realizar Pruebas Unitarias | 1d | 2012-01-17 A | 2012-01-17 A | 360 | 100% |  |  |
| 362 | 1.2.2.2.3 | **Impacto en funcionalidades que manejan ID Lote** | 2d | 2012-03-22 A | 2012-03-23 A | 202 | 100% |  |  |
| 363 |  | Implementar funcionalidad | 2d | 2012-03-22 A | 2012-03-23 A |  | 100% |  |  |
| 364 |  | Realizar pruebas unitarias | 1d | 2012-03-23 A | 2012-03-23 A |  | 100% |  |  |
| 365 | 1.2.2.2.4 | **Modificar funcionalidad "Detalle de Ensayo" para que presente las unidades de muestra sin redondeo a la decena** | 3d | 2012-03-22 A | 2012-03-26 A | 359 | 100% |  |  |
| 366 |  | Implementar funcionalidad | 2d | 2012-03-22 A | 2012-03-23 A |  | 100% |  |  |
| 367 |  | Realizar pruebas unitarias | 1d | 2012-03-26 A | 2012-03-26 A |  | 100% |  |  |
| 368 | 1.2.2.2.5 | **Mostrar cantidad de decimales de acuerdo a configuración en tabla tipo de ensayo** | 9d | 2012-03-15 A | 2012-03-27 A | 365 | 100% |  |  |
| 369 |  | Implementar funcionalidad | 9d | 2012-03-15 A | 2012-03-27 A |  | 100% |  |  |
| 370 |  | Realizar pruebas unitarias | 1d | 2012-03-27 A | 2012-03-27 A |  | 100% |  |  |
| 371 | 1.2.2.2.6 | **Agregar 3 campos Centro, Almacen e Imputación, en Administrar Planta, en el registro y modificación** | 1d | 2012-04-16 A | 2012-04-16 A | 362 | 100% |  |  |
| 372 |  | Implementar funcionalidad | 8h | 2012-04-16 A | 2012-04-16 A |  | 100% |  |  |
| 373 |  | Realizar pruebas unitarias | 0h | 2012-04-16 A | 2012-04-16 A | 372 | 100% |  |  |
| 374 | 1.2.2.2.7 | **Agregar validación para que no liste valores anulados por dispersión** | 1d | 2012-03-22 A | 2012-03-22 A | 368 | 100% |  |  |
| 375 |  | Implementar funcionalidad | 8h | 2012-03-22 A | 2012-03-22 A |  | 100% |  |  |
| 376 |  | Realizar pruebas unitarias | 8h | 2012-03-22 A | 2012-03-22 A | 375 | 100% |  |  |
| 377 | 1.2.2.2.8 | **Agregar campo Codigo de Material en el ingresar y modificar de Administrar Producto** | 1d | 2012-04-16 A | 2012-04-16 A | 371 | 100% |  |  |
| 378 |  | Implementar funcionalidad | 8h | 2012-04-16 A | 2012-04-16 A |  | 100% |  |  |
| 379 |  | Realizar pruebas unitarias | 0h | 2012-04-16 A | 2012-04-16 A | 378 | 100% |  |  |
| 380 | 1.2.2.2.9 | **Agregar matriz,GTE, tipo de ensayo - Realizar generación dinámica de gráfico de combinación de agregados** | 2d | 2012-03-23 | 2012-03-26 | 374 |  | 13d |  |
| 381 |  | Implementar funcionalidad | 2d | 2012-03-23 | 2012-03-26 |  |  | 13d |  |
| 382 |  | Realizar pruebas unitarias | 1d | 2012-03-23 | 2012-03-23 |  |  | 1d |  |
| 383 | 1.2.2.3 | **Documentar Casos de Prueba** | 6d | 2012-05-10 | 2012-05-18 | 202 |  | 9.48d |  |
| 384 |  | Realizar Casos de Prueba de Funcionalidades por Mejorar | 1d | 2012-05-10 | 2012-05-11 |  |  | -3.52d |  |
| 385 |  | Realizar Casos de Prueba de Funcionalidades Nuevas | 2d | 2012-05-11 | 2012-05-15 | 384 |  | -3.52d |  |
| 386 |  | Realizar Casos de Prueba de Funcionalidades Premezclados | 3d | 2012-05-15 | 2012-05-18 | 385 |  | -3.52d | start no earlier than 2011-08-29 |
| 387 | 1.2.2.4 | **Documentar Arquitectura** | 2.64d | 2012-05-18 | 2012-05-22 | 383 |  | 9.48d |  |
| 388 |  | Realizar Modelo de Casos de Uso del Sistema | 0.63d | 2012-05-18 | 2012-05-18 |  |  | -3.52d |  |
| 389 |  | Realizar Documentos de Análisis y Diseño | 1d | 2012-05-18 | 2012-05-21 | 388 |  | -3.52d |  |
| 390 |  | Realizar Estándares del Sistema | 0.38d | 2012-05-21 | 2012-05-22 | 389 |  | -3.52d |  |
| 391 |  | Realizar Prototipo del Sistema | 0.25d | 2012-05-22 | 2012-05-22 | 390 |  | -3.52d |  |
| 392 |  | Realizar Diccionario de Datos | 0.38d | 2012-05-22 | 2012-05-22 | 391 |  | -3.52d |  |
| 393 | 1.2.2.5 | **Integración de Módulos** | 6.88d | 2012-04-17 | 2012-04-25 | 380, 377 |  | 0d |  |
| 394 | 1.2.2.5.1 | **Integrar funcionalidades nuevas** | 2d | 2012-04-17 | 2012-04-18 |  |  | 0d |  |
| 395 |  | Revisar clases por integrar | 0.5d | 2012-04-17 | 2012-04-17 |  |  | 0d |  |
| 396 |  | Integrar código | 0.5d | 2012-04-17 | 2012-04-17 | 395 |  | 0d |  |
| 397 |  | Probar integración del código | 0.5d | 2012-04-18 | 2012-04-18 | 396 |  | 0d |  |
| 398 |  | Hacer pruebas funcionales de integración | 0.5d | 2012-04-18 | 2012-04-18 | 397 |  | 0d |  |
| 399 | 1.2.2.5.2 | **Integrar funcionalidades por mejorar** | 2.38d | 2012-04-19 | 2012-04-23 | 394 |  | 0d |  |
| 400 |  | Revisar clases por integrar | 0.38d | 2012-04-19 | 2012-04-19 |  |  | 0d |  |
| 401 |  | Integrar código | 1d | 2012-04-19 | 2012-04-20 | 400 |  | 0d |  |
| 402 |  | Probar integración del código | 0.5d | 2012-04-20 | 2012-04-20 | 401 |  | 0d |  |
| 403 |  | Hacer pruebas funcionales de integración | 0.5d | 2012-04-20 | 2012-04-23 | 402 |  | 0d |  |
| 404 | 1.2.2.5.3 | **Integrar funcionalidades premezclados** | 2.5d | 2012-04-23 | 2012-04-25 | 399 |  | 0d |  |
| 405 |  | Revisar clases por integrar | 0.5d | 2012-04-23 | 2012-04-23 |  |  | 0d |  |
| 406 |  | Integrar código | 0.5d | 2012-04-23 | 2012-04-24 | 405 |  | 0d |  |
| 407 |  | Probar integración del código | 0.5d | 2012-04-24 | 2012-04-24 | 406 |  | 0d |  |
| 408 |  | Hacer pruebas funcionales de integración | 1d | 2012-04-24 | 2012-04-25 | 407 |  | 0d |  |
| 409 | 1.2.2.5.4 | **Integrar funcionalidades Admin. Datos Maestros** | 2.5d | 2012-04-17 | 2012-04-19 |  |  | 4.38d |  |
| 410 |  | Revisar clases por integrar | 0.5d | 2012-04-17 | 2012-04-17 |  |  | 4.38d |  |
| 411 |  | Integrar código | 0.5d | 2012-04-17 | 2012-04-17 | 410 |  | 4.38d |  |
| 412 |  | Probar integración del código | 0.5d | 2012-04-18 | 2012-04-18 | 411 |  | 4.38d |  |
| 413 |  | Hacer pruebas funcionales de integración | 1d | 2012-04-18 | 2012-04-19 | 412 |  | 4.38d |  |
| 414 | 1.2.2.6 | **Fase: Pruebas** | 14.5d | 2012-04-25 | 2012-05-17 | 393 |  | 0d |  |
| 415 |  | Desplegar aplicación en ambiente desarrollo CSTI | 0.25d | 2012-04-25 | 2012-04-26 |  |  | 0d |  |
| 416 | 1.2.2.6.2 | **Pruebas unitarias** | 7d | 2012-04-26 | 2012-05-08 | 415 |  | 0d |  |
| 417 |  | Revisar funcionalidades nuevas AP1 | 1d | 2012-04-26 | 2012-04-27 |  |  | 0d |  |
| 418 |  | Revisar funcionalidades nuevas AP2 | 1d | 2012-04-26 | 2012-04-27 |  |  | 2d |  |
| 419 |  | Revisar funcionalidades por mejorar | 1d | 2012-04-27 | 2012-04-30 | 417 |  | 0d |  |
| 420 |  | Revisar funcionalidades premezclados AP1 | 2.5d | 2012-04-30 | 2012-05-03 | 419 |  | 0d | start no earlier than 2011-08-31 |
| 421 |  | Revisar funcionalidades premezclados AP2 | 2d | 2012-04-27 | 2012-05-02 | 418 |  | 2d |  |
| 422 |  | Revisar funcionalidades Admin. Datos Maestros AP1 | 2.5d | 2012-05-03 | 2012-05-08 | 420 |  | 0d |  |
| 423 |  | Revisar funcionalidades Admin. Datos Maestros AP2 | 2d | 2012-05-02 | 2012-05-04 | 421 |  | 2d |  |

| ID | WBS | Task | Duration | Start | Finish | Predecessors | Total float |
| --- | --- | --- | --- | --- | --- | --- | --- |
| 424 |  | Coordinar despliegue en ambiente pruebas CPSAA | 0.25d | 2012-05-08 | 2012-05-08 | 416 | 0d |
| 425 | 1.2.2.6.4 | **Pruebas integrales** | 7d | 2012-05-08 | 2012-05-17 | 424 | 0d |
| 426 |  | Revisar funcionalidades nuevas (A) | 1d | 2012-05-08 | 2012-05-09 |  | 0d |
| 427 |  | Revisar funcionalidades nuevas (B) | 1d | 2012-05-09 | 2012-05-10 | 426 | 0d |
| 428 |  | Revisar funcionalidades por mejorar | 1d | 2012-05-10 | 2012-05-11 | 427 | 0d |
| 429 |  | Revisar funcionalidades premezclados | 2d | 2012-05-11 | 2012-05-15 | 428 | 0d |
| 430 |  | Revisar funcionalidades Admin. Datos Maestros | 2d | 2012-05-15 | 2012-05-17 | 429 | 0d |
| 431 | 1.2.2.6.5 | **Documentacion** | 3.38d | 2012-05-08 | 2012-05-11 | 416 | 3.87d |
| 432 |  | Manual de Usuario | 2d | 2012-05-08 | 2012-05-10 |  | 3.87d |
| 433 |  | Manual de Instalación y Configuración del Sistema | 0.38d | 2012-05-10 | 2012-05-10 | 432 | 3.87d |
| 434 |  | Informe de Capacitación y Pruebas de Aceptación del Cliente | 1d | 2012-05-10 | 2012-05-11 | 433 | 3.87d |
| 435 | 1.2.2.7 | **Ajustes** | 5d | 2012-05-17 | 2012-05-24 | 414 | 0d |
| 436 |  | Presentar formalmente observaciones | 1d | 2012-05-17 | 2012-05-18 |  | 0d |
| 437 |  | Evaluar observaciones | 1d | 2012-05-18 | 2012-05-21 | 436 | 0d |
| 438 |  | Programar correcciones | 3d | 2012-05-21 | 2012-05-24 | 437 | 0d |
| 439 | 1.2.2.8 | **Fase: Pase a producción** | 1d | 2012-05-24 | 2012-05-25 | 435 | 0d |
| 440 | 1.2.2.8.1 | **Pase a producción** | 1d | 2012-05-24 | 2012-05-25 |  | 0d |
| 441 |  | Implementar sistema en producción | 1d | 2012-05-24 | 2012-05-25 |  | 0d |
| 442 | 1.2.2.9 | **Fase: Capacitación** | 2d | 2012-05-25 | 2012-05-29 | 439 | 0d |
| 443 | 1.2.2.9.1 | **Capacitación a usuarios** | 2d | 2012-05-25 | 2012-05-29 |  | 0d |
| 444 |  | Preparar material | 1d | 2012-05-25 | 2012-05-28 |  | 1d |
| 445 |  | Capacitar a usuarios | 2d | 2012-05-25 | 2012-05-29 |  | 0d |
| 446 | 1.2.2.10 | **Fase: Post-Produccion** | 5d | 2012-05-29 | 2012-06-05 | 442 | 0d |
| 447 |  | Programar correcciones | 5d | 2012-05-29 | 2012-06-05 |  | 0d |

## Version 2 (saved 2012-05-02)

Last finish 2012-06-05 → 2012-06-18 (+13d). Complete tasks 128 → 135.

Changed:

| ID | Task | Start | Finish | Duration | Complete | Total float |
| --- | --- | --- | --- | --- | --- | --- |
| 1 | **SAC III** |  | 2012-06-05 → 2012-06-18 (+13d) | 237.63d → 246.63d | 51% → 53% |  |
| 30 | **Fase: Desarrollo** |  | 2012-06-05 → 2012-06-18 (+13d) | 178.63d → 187.63d | 60% → 63% |  |
| 179 | **Fase 2** |  | 2012-06-05 → 2012-06-18 (+13d) | 104.38d → 113.38d | 77% → 80% |  |
| 180 | **Desarrollo** |  | 2012-05-10 → 2012-05-08 (-2d) | 86.26d → 84.8d | 91% → 95% | 9.48d → 19.94d |
| 308 | **Gráfico de Tendencia de Reporte Específico Consolidado y Control diario** | 2012-04-30 → 2012-04-25 A (-5d) | 2012-05-10 → 2012-05-08 (-2d) | 7.01d → 8.8d | 0% → 60% | 9.48d → 19.94d |
| 309 | Revisar descripción funcional | 2012-04-30 → 2012-04-25 A (-5d) | 2012-04-30 → 2012-04-25 A (-5d) | 0.13d → 0d | 0% → 100% | 9.48d → none |
| 310 | Identificar clases | 2012-04-30 → 2012-04-25 A (-5d) | 2012-04-30 → 2012-04-25 A (-5d) | 0.38d → 0d | 0% → 100% | 9.48d → none |
| 311 | Diagramar arquitectura | 2012-04-30 → 2012-04-25 A (-5d) | 2012-05-02 → 2012-04-25 A (-7d) | 0.25d → 0d | 0% → 100% | 9.48d → none |
| 312 | Programar jsp con estilos | 2012-05-02 → 2012-04-25 A (-7d) | 2012-05-07 → 2012-05-03 (-4d) | 3d → 5d | 0% → 99% | 9.48d → 19.94d |
| 313 | Pruebas unitarias | 2012-05-07 → 2012-05-03 (-4d) | 2012-05-07 → 2012-05-03 (-4d) |  |  | 9.48d → 19.94d |
| 314 | Tiempo por compensación de 1 funcionalidad retirada | 2012-05-07 → 2012-05-03 (-4d) | 2012-05-10 → 2012-05-08 (-2d) |  |  | 9.48d → 19.94d |
| 316 | Revisar descripción funcional | 2012-05-10 → 2012-05-08 (-2d) | 2012-05-10 → 2012-05-08 (-2d) |  |  | 9.48d → 10.94d |
| 317 | Diagramar arquitectura | 2012-05-10 → 2012-05-08 (-2d) | 2012-05-10 → 2012-05-08 (-2d) |  |  | 9.48d → 10.94d |
| 318 | Identificar clases | 2012-05-10 → 2012-05-08 (-2d) | 2012-05-10 → 2012-05-08 (-2d) |  |  | 9.48d → 10.94d |
| 319 | Programar jsp con estilos | 2012-05-10 → 2012-05-08 (-2d) | 2012-05-10 → 2012-05-08 (-2d) |  |  | 9.48d → 10.94d |
| 320 | Pruebas unitarias | 2012-05-10 → 2012-05-08 (-2d) | 2012-05-10 → 2012-05-08 (-2d) |  |  | 9.48d → 10.94d |
| 321 | Optimizar tiempo de respuesta | 2012-05-10 → 2012-05-08 (-2d) | 2012-05-10 → 2012-05-08 (-2d) |  |  | 9.48d → 10.94d |
| 345 | **Re-configurar los formatos de granulometría / Recalcular Curva Granulométrica** |  | 2012-04-30 → 2012-05-03 (+3d) | 32.25d → 34.5d | 64% → 97% | 9.48d → 19.72d |
| 350 | Programar segundo gráfico (Grafico de agregados) |  | 2012-04-26 → 2012-05-02 A (+6d) | 3.5d → 7d | 0% → 100% | 9.48d → none |
| 351 | Programa jsp y estilos |  | 2012-04-27 → 2012-05-02 A (+5d) | 2.5d → 1.25d | 50% → 100% | 9.48d → none |
| 352 | Pruebas unitarias | 2012-04-27 → 2012-05-02 A (+5d) | 2012-04-27 → 2012-05-03 (+6d) |  |  | 9.48d → 10.97d |
| 353 | Optimizar tiempo de respuesta | 2012-04-30 → 2012-05-02 A (+2d) | 2012-04-30 → 2012-05-03 (+3d) |  |  | 9.48d → 19.72d |
| 354 | **Control de cambios** |  | 2012-04-16 → 2012-04-27 A (+11d) | 69d → 78d | 91% → 100% | 0d → none |
| 380 | **Agregar matriz,GTE, tipo de ensayo - Realizar generación dinámica de gráfico de combinación de agregados** | 2012-03-23 → 2012-04-25 A (+33d) | 2012-03-26 → 2012-04-27 A (+32d) | 2d → 3d | 0% → 100% | 13d → none |
| 381 | Implementar funcionalidad | 2012-03-23 → 2012-04-25 A (+33d) | 2012-03-26 → 2012-04-26 A (+31d) |  | 0% → 100% | 13d → none |
| 382 | Realizar pruebas unitarias | 2012-03-23 → 2012-04-27 A (+35d) | 2012-03-23 → 2012-04-27 A (+35d) |  | 0% → 100% | 1d → none |
| 383 | **Documentar Casos de Prueba** | 2012-05-10 → 2012-05-08 (-2d) | 2012-05-18 → 2012-05-16 (-2d) |  |  | 9.48d → 19.94d |
| 384 | Realizar Casos de Prueba de Funcionalidades por Mejorar | 2012-05-10 → 2012-05-08 (-2d) | 2012-05-11 → 2012-05-09 (-2d) |  |  | -3.52d → 19.94d |
| 385 | Realizar Casos de Prueba de Funcionalidades Nuevas | 2012-05-11 → 2012-05-09 (-2d) | 2012-05-15 → 2012-05-11 (-4d) |  |  | -3.52d → 19.94d |
| 386 | Realizar Casos de Prueba de Funcionalidades Premezclados | 2012-05-15 → 2012-05-11 (-4d) | 2012-05-18 → 2012-05-16 (-2d) |  |  | -3.52d → 19.94d |
| 387 | **Documentar Arquitectura** | 2012-05-18 → 2012-05-16 (-2d) | 2012-05-22 → 2012-05-21 (-1d) |  |  | 9.48d → 19.94d |
| 388 | Realizar Modelo de Casos de Uso del Sistema | 2012-05-18 → 2012-05-16 (-2d) | 2012-05-18 → 2012-05-17 (-1d) |  |  | -3.52d → 19.94d |
| 389 | Realizar Documentos de Análisis y Diseño | 2012-05-18 → 2012-05-17 (-1d) | 2012-05-21 → 2012-05-18 (-3d) |  |  | -3.52d → 19.94d |
| 390 | Realizar Estándares del Sistema | 2012-05-21 → 2012-05-18 (-3d) | 2012-05-22 → 2012-05-18 (-4d) |  |  | -3.52d → 19.94d |
| 391 | Realizar Prototipo del Sistema | 2012-05-22 → 2012-05-18 (-4d) | 2012-05-22 → 2012-05-21 (-1d) |  |  | -3.52d → 19.94d |
| 392 | Realizar Diccionario de Datos | 2012-05-22 → 2012-05-21 (-1d) | 2012-05-22 → 2012-05-21 (-1d) |  |  | -3.52d → 19.94d |
| 393 | **Integración de Módulos** | 2012-04-17 → 2012-04-30 (+13d) | 2012-04-25 → 2012-05-09 (+14d) |  |  |  |
| 394 | **Integrar funcionalidades nuevas** | 2012-04-17 → 2012-04-30 (+13d) | 2012-04-18 → 2012-05-02 (+14d) |  |  |  |
| 395 | Revisar clases por integrar | 2012-04-17 → 2012-04-30 (+13d) | 2012-04-17 → 2012-04-30 (+13d) |  |  |  |
| 396 | Integrar código | 2012-04-17 → 2012-04-30 (+13d) | 2012-04-17 → 2012-04-30 (+13d) |  |  |  |
| 397 | Probar integración del código | 2012-04-18 → 2012-05-02 (+14d) | 2012-04-18 → 2012-05-02 (+14d) |  |  |  |
| 398 | Hacer pruebas funcionales de integración | 2012-04-18 → 2012-05-02 (+14d) | 2012-04-18 → 2012-05-02 (+14d) |  |  |  |
| 399 | **Integrar funcionalidades por mejorar** | 2012-04-19 → 2012-05-03 (+14d) | 2012-04-23 → 2012-05-07 (+14d) |  |  |  |
| 400 | Revisar clases por integrar | 2012-04-19 → 2012-05-03 (+14d) | 2012-04-19 → 2012-05-03 (+14d) |  |  |  |
| 401 | Integrar código | 2012-04-19 → 2012-05-03 (+14d) | 2012-04-20 → 2012-05-04 (+14d) |  |  |  |
| 402 | Probar integración del código | 2012-04-20 → 2012-05-04 (+14d) | 2012-04-20 → 2012-05-04 (+14d) |  |  |  |
| 403 | Hacer pruebas funcionales de integración | 2012-04-20 → 2012-05-04 (+14d) | 2012-04-23 → 2012-05-07 (+14d) |  |  |  |
| 404 | **Integrar funcionalidades premezclados** | 2012-04-23 → 2012-05-07 (+14d) | 2012-04-25 → 2012-05-09 (+14d) |  |  |  |
| 405 | Revisar clases por integrar | 2012-04-23 → 2012-05-07 (+14d) | 2012-04-23 → 2012-05-07 (+14d) |  |  |  |
| 406 | Integrar código | 2012-04-23 → 2012-05-07 (+14d) | 2012-04-24 → 2012-05-08 (+14d) |  |  |  |
| 407 | Probar integración del código | 2012-04-24 → 2012-05-08 (+14d) | 2012-04-24 → 2012-05-08 (+14d) |  |  |  |
| 408 | Hacer pruebas funcionales de integración | 2012-04-24 → 2012-05-08 (+14d) | 2012-04-25 → 2012-05-09 (+14d) |  |  |  |
| 409 | **Integrar funcionalidades Admin. Datos Maestros** | 2012-04-17 → 2012-04-30 (+13d) | 2012-04-19 → 2012-05-03 (+14d) |  |  |  |
| 410 | Revisar clases por integrar | 2012-04-17 → 2012-04-30 (+13d) | 2012-04-17 → 2012-04-30 (+13d) |  |  |  |
| 411 | Integrar código | 2012-04-17 → 2012-04-30 (+13d) | 2012-04-17 → 2012-04-30 (+13d) |  |  |  |
| 412 | Probar integración del código | 2012-04-18 → 2012-05-02 (+14d) | 2012-04-18 → 2012-05-02 (+14d) |  |  |  |
| 413 | Hacer pruebas funcionales de integración | 2012-04-18 → 2012-05-02 (+14d) | 2012-04-19 → 2012-05-03 (+14d) |  |  |  |
| 414 | **Fase: Pruebas** | 2012-04-25 → 2012-05-09 (+14d) | 2012-05-17 → 2012-05-30 (+13d) |  |  |  |
| 415 | Desplegar aplicación en ambiente desarrollo CSTI | 2012-04-25 → 2012-05-09 (+14d) | 2012-04-26 → 2012-05-10 (+14d) |  |  |  |
| 416 | **Pruebas unitarias** | 2012-04-26 → 2012-05-10 (+14d) | 2012-05-08 → 2012-05-21 (+13d) |  |  |  |
| 417 | Revisar funcionalidades nuevas AP1 | 2012-04-26 → 2012-05-10 (+14d) | 2012-04-27 → 2012-05-11 (+14d) |  |  |  |
| 418 | Revisar funcionalidades nuevas AP2 | 2012-04-26 → 2012-05-10 (+14d) | 2012-04-27 → 2012-05-11 (+14d) |  |  |  |
| 419 | Revisar funcionalidades por mejorar | 2012-04-27 → 2012-05-11 (+14d) | 2012-04-30 → 2012-05-14 (+14d) |  |  |  |
| 420 | Revisar funcionalidades premezclados AP1 | 2012-04-30 → 2012-05-14 (+14d) | 2012-05-03 → 2012-05-16 (+13d) |  |  |  |
| 421 | Revisar funcionalidades premezclados AP2 | 2012-04-27 → 2012-05-11 (+14d) | 2012-05-02 → 2012-05-15 (+13d) |  |  |  |
| 422 | Revisar funcionalidades Admin. Datos Maestros AP1 | 2012-05-03 → 2012-05-16 (+13d) | 2012-05-08 → 2012-05-21 (+13d) |  |  |  |
| 423 | Revisar funcionalidades Admin. Datos Maestros AP2 | 2012-05-02 → 2012-05-15 (+13d) | 2012-05-04 → 2012-05-17 (+13d) |  |  |  |
| 424 | Coordinar despliegue en ambiente pruebas CPSAA | 2012-05-08 → 2012-05-21 (+13d) | 2012-05-08 → 2012-05-21 (+13d) |  |  |  |
| 425 | **Pruebas integrales** | 2012-05-08 → 2012-05-21 (+13d) | 2012-05-17 → 2012-05-30 (+13d) |  |  |  |
| 426 | Revisar funcionalidades nuevas (A) | 2012-05-08 → 2012-05-21 (+13d) | 2012-05-09 → 2012-05-22 (+13d) |  |  |  |

| ID | Task | Start | Finish |
| --- | --- | --- | --- |
| 427 | Revisar funcionalidades nuevas (B) | 2012-05-09 → 2012-05-22 (+13d) | 2012-05-10 → 2012-05-23 (+13d) |
| 428 | Revisar funcionalidades por mejorar | 2012-05-10 → 2012-05-23 (+13d) | 2012-05-11 → 2012-05-24 (+13d) |
| 429 | Revisar funcionalidades premezclados | 2012-05-11 → 2012-05-24 (+13d) | 2012-05-15 → 2012-05-28 (+13d) |
| 430 | Revisar funcionalidades Admin. Datos Maestros | 2012-05-15 → 2012-05-28 (+13d) | 2012-05-17 → 2012-05-30 (+13d) |
| 431 | **Documentacion** | 2012-05-08 → 2012-05-21 (+13d) | 2012-05-11 → 2012-05-24 (+13d) |
| 432 | Manual de Usuario | 2012-05-08 → 2012-05-21 (+13d) | 2012-05-10 → 2012-05-23 (+13d) |
| 433 | Manual de Instalación y Configuración del Sistema | 2012-05-10 → 2012-05-23 (+13d) | 2012-05-10 → 2012-05-23 (+13d) |
| 434 | Informe de Capacitación y Pruebas de Aceptación del Cliente | 2012-05-10 → 2012-05-23 (+13d) | 2012-05-11 → 2012-05-24 (+13d) |
| 435 | **Ajustes** | 2012-05-17 → 2012-05-30 (+13d) | 2012-05-24 → 2012-06-06 (+13d) |
| 436 | Presentar formalmente observaciones | 2012-05-17 → 2012-05-30 (+13d) | 2012-05-18 → 2012-05-31 (+13d) |
| 437 | Evaluar observaciones | 2012-05-18 → 2012-05-31 (+13d) | 2012-05-21 → 2012-06-01 (+11d) |
| 438 | Programar correcciones | 2012-05-21 → 2012-06-01 (+11d) | 2012-05-24 → 2012-06-06 (+13d) |
| 439 | **Fase: Pase a producción** | 2012-05-24 → 2012-06-06 (+13d) | 2012-05-25 → 2012-06-07 (+13d) |
| 440 | **Pase a producción** | 2012-05-24 → 2012-06-06 (+13d) | 2012-05-25 → 2012-06-07 (+13d) |
| 441 | Implementar sistema en producción | 2012-05-24 → 2012-06-06 (+13d) | 2012-05-25 → 2012-06-07 (+13d) |
| 442 | **Fase: Capacitación** | 2012-05-25 → 2012-06-07 (+13d) | 2012-05-29 → 2012-06-11 (+13d) |
| 443 | **Capacitación a usuarios** | 2012-05-25 → 2012-06-07 (+13d) | 2012-05-29 → 2012-06-11 (+13d) |
| 444 | Preparar material | 2012-05-25 → 2012-06-07 (+13d) | 2012-05-28 → 2012-06-08 (+11d) |
| 445 | Capacitar a usuarios | 2012-05-25 → 2012-06-07 (+13d) | 2012-05-29 → 2012-06-11 (+13d) |
| 446 | **Fase: Post-Produccion** | 2012-05-29 → 2012-06-11 (+13d) | 2012-06-05 → 2012-06-18 (+13d) |
| 447 | Programar correcciones | 2012-05-29 → 2012-06-11 (+13d) | 2012-06-05 → 2012-06-18 (+13d) |
