# SGI

How a schedule from MS Project changed from version to version. A marks actual dates.

## Version 1 (saved 2012-09-04)

| ID | WBS | Task | Duration | Start | Finish | Predecessors | Total float | Constraint |
| --- | --- | --- | --- | --- | --- | --- | --- | --- |
| 1 | 1 | **Bitacora de Operaciones** | 102d? | 2012-09-24 | 2013-02-12 |  | 0d |  |
| 2 | 1.1 | **Levantamiento de información** | 24d | 2012-09-24 | 2012-10-25 |  | 0d |  |
| 3 | 1.1.1 | **Realizar reunión de levantamiento de información** | 10d | 2012-09-24 | 2012-10-05 |  | 14d |  |
| 4 |  | 1 | 1d | 2012-09-24 | 2012-09-24 |  | 9d | start no earlier than 2012-09-24 |
| 5 |  | 2 | 1d | 2012-09-25 | 2012-09-25 |  | 8d | start no earlier than 2012-09-25 |
| 6 |  | 3 | 1d | 2012-09-26 | 2012-09-26 |  | 7d | start no earlier than 2012-09-26 |
| 7 |  | 4 | 1d | 2012-09-27 | 2012-09-27 |  | 6d | start no earlier than 2012-09-27 |
| 8 |  | 5 | 1d | 2012-09-28 | 2012-09-28 |  | 5d | start no earlier than 2012-09-28 |
| 9 |  | 6 | 1d | 2012-10-01 | 2012-10-01 |  | 4d | start no earlier than 2012-09-29 |
| 10 |  | 9 | 1d | 2012-10-02 | 2012-10-02 |  | 3d | start no earlier than 2012-10-02 |
| 11 |  | 10 | 1d | 2012-10-03 | 2012-10-03 |  | 2d | start no earlier than 2012-10-03 |
| 12 |  | 11 | 1d | 2012-10-04 | 2012-10-04 |  | 1d | start no earlier than 2012-10-04 |
| 13 |  | 12 | 1d | 2012-10-05 | 2012-10-05 |  | 1d | start no earlier than 2012-10-05 |
| 14 |  | Realizar formularios de aplicación | 10d | 2012-09-24 | 2012-10-05 |  | 0d | start no earlier than 2012-09-24 |
| 15 |  | Elaborar BBP | 14d | 2012-09-24 | 2012-10-11 |  | 1d | start no earlier than 2012-09-24 |
| 16 | 1.1.4 | **Definición de arquitectura de aplicación** | 5d | 2012-10-08 | 2012-10-12 | 14 | 0d |  |
| 17 |  | Coordinar definición de arquitectura de aplicación | 2d | 2012-10-08 | 2012-10-09 |  | 0d |  |
| 18 |  | Definir modelo lógico | 3d | 2012-10-10 | 2012-10-12 | 17 | 0d |  |
| 19 | 1.1.5 | **Aprobación de BBP, arquitectura y formularios** | 9d | 2012-10-15 | 2012-10-25 | 15, 14, 16 | 0d |  |
| 20 |  | Revisar propuesta | 3d | 2012-10-15 | 2012-10-17 |  | 0d | start no earlier than 2012-08-24 |
| 21 |  | Realizar ajustes | 5d | 2012-10-18 | 2012-10-24 | 20 | 0d |  |
| 22 |  | Revisión final | 1d | 2012-10-25 | 2012-10-25 | 21 | 0d |  |
| 23 | 1.2 | **Desarrollo** | 33d? | 2012-10-26 | 2012-12-11 | 2 | 0d |  |
| 24 | 1.2.1 | **Aplicación Web** | 28d? | 2012-10-26 | 2012-12-04 |  | 0d |  |
| 25 |  | Implementar arquitectura | 2d | 2012-10-26 | 2012-10-29 |  | 5d |  |
| 26 | 1.2.1.2 | **Modulo ocurrencias** | 7d | 2012-10-26 | 2012-11-05 |  | 21d |  |
| 27 |  | Implementar modulo | 5d | 2012-10-26 | 2012-11-01 |  | 21d |  |
| 28 |  | Realizar pruebas unitarias | 2d | 2012-11-02 | 2012-11-05 | 27 | 21d |  |
| 29 | 1.2.1.3 | **Modulo paradas** | 9d | 2012-10-26 | 2012-11-07 |  | 19d |  |
| 30 |  | Implementar modulo | 7d | 2012-10-26 | 2012-11-05 |  | 19d |  |
| 31 |  | Realizar pruebas unitarias | 2d | 2012-11-06 | 2012-11-07 | 30 | 19d |  |
| 32 | 1.2.1.3.3 | **Integración con SAP** | 7d | 2012-10-26 | 2012-11-05 |  | 21d |  |
| 33 |  | Implementar RFC para gestión de avisos | 5d | 2012-10-26 | 2012-11-01 |  | 21d |  |
| 34 |  | Realizar Pruebas Unitarias | 2d | 2012-11-02 | 2012-11-05 | 33 | 21d |  |
| 35 | 1.2.1.4 | **Modulo Avisos** | 7d | 2012-10-26 | 2012-11-05 |  | 21d |  |
| 36 |  | Implementar modulo | 5d | 2012-10-26 | 2012-11-01 |  | 21d |  |
| 37 |  | Realizar pruebas unitarias | 2d | 2012-11-02 | 2012-11-05 | 36 | 21d |  |
| 38 | 1.2.1.4.3 | **Integración con SAP** | 7d | 2012-10-26 | 2012-11-05 |  | 21d |  |
| 39 |  | Implementar RFC para creación de avisos | 5d | 2012-10-26 | 2012-11-01 |  | 21d |  |
| 40 |  | Realizar Pruebas Unitarias | 2d | 2012-11-02 | 2012-11-05 | 39 | 21d |  |
| 41 | 1.2.1.5 | **Modulo Movilidad** | 2d? | 2012-10-26 | 2012-10-29 |  | 26d |  |
| 42 |  | Implementar webservice | 1d? | 2012-10-26 | 2012-10-26 |  | 26d |  |
| 43 |  | Implementar cliente android | 1d? | 2012-10-29 | 2012-10-29 | 42 | 26d |  |
| 44 | 1.2.1.6 | **Modulo cambio de equipo** | 7d | 2012-10-26 | 2012-11-05 |  | 21d |  |
| 45 |  | Implementar modulo | 5d | 2012-10-26 | 2012-11-01 |  | 21d |  |
| 46 |  | Realizar pruebas unitarias | 2d | 2012-11-02 | 2012-11-05 | 45 | 21d |  |
| 47 | 1.2.1.7 | **Modulo cambio de producto** | 7d | 2012-10-26 | 2012-11-05 |  | 21d |  |
| 48 |  | Implementar modulo | 5d | 2012-10-26 | 2012-11-01 |  | 21d |  |
| 49 |  | Realizar pruebas unitarias | 2d | 2012-11-02 | 2012-11-05 | 48 | 21d |  |
| 50 | 1.2.1.8 | **Modulo Reportes** | 19d | 2012-10-26 | 2012-11-21 |  | 0d |  |
| 51 |  | Implementar modulo | 15d | 2012-10-26 | 2012-11-15 |  | 0d |  |
| 52 |  | Realizar pruebas unitarias | 4d | 2012-11-16 | 2012-11-21 | 51 | 0d |  |
| 53 | 1.2.1.9 | **Modelo Seguridad** | 9d | 2012-11-22 | 2012-12-04 | 52 | 0d |  |
| 54 |  | Implementar modulo | 7d | 2012-11-22 | 2012-11-30 |  | 0d |  |
| 55 |  | Realizar pruebas unitarias | 2d | 2012-12-03 | 2012-12-04 | 54 | 0d |  |
| 56 | 1.2.2 | **Integración** | 5d | 2012-12-05 | 2012-12-11 | 24, 50, 53 | 0d |  |
| 57 |  | Integrar modulos | 5d | 2012-12-05 | 2012-12-11 |  | 0d |  |
| 58 | 1.3 | **Pruebas** | 20d | 2012-12-12 | 2013-01-08 | 56 | 0d |  |
| 59 |  | Pruebas Unitarias | 10d | 2012-12-12 | 2012-12-25 |  | 0d |  |
| 60 |  | Pruebas Integrales | 10d | 2012-12-26 | 2013-01-08 | 59 | 0d |  |
| 61 | 1.4 | **Pase a producción** | 1d | 2013-01-09 | 2013-01-09 | 58 | 0d |  |
| 62 |  | Realizar pase a producción | 1d | 2013-01-09 | 2013-01-09 |  | 0d |  |
| 63 | 1.5 | **Capacitación** | 7d | 2013-01-10 | 2013-01-18 | 61 | 0d |  |
| 64 |  | Realizar capacitación a usuarios | 7d | 2013-01-10 | 2013-01-18 |  | 0d |  |
| 65 | 1.6 | **Documentación** | 10d | 2013-01-21 | 2013-02-01 | 63 | 0d |  |
| 66 |  | Realizar documentación (manual técnico, modelo y dicc. De datos) | 10d | 2013-01-21 | 2013-02-01 |  | 0d | start no earlier than 2012-10-12 |
| 67 | 1.7 | **Post-Producción** | 7d | 2013-02-04 | 2013-02-12 | 65 | 0d |  |
| 68 |  | Realizar actividades de soporte | 7d | 2013-02-04 | 2013-02-12 |  | 0d |  |

## Version 2 (saved 2012-09-04)

Last finish 2013-02-12 → 2013-01-30 (-13d).

Added:

| ID | Task | Duration | Start | Finish | Predecessors | Resources |
| --- | --- | --- | --- | --- | --- | --- |
| 19 | Definir RFCs | 4d | 2012-10-18 | 2012-10-23 | 18 | CPSAA; AF; AP1 |
| 20 | Definir integración con SGCP | 4d | 2012-10-24 | 2012-10-29 | 19 | CPSAA; AF; AP1 |
| 23 | Revisar modelo lógico | 1d | 2012-11-01 | 2012-11-01 | 22 | CPSAA |
| 27 | **Diseño de aplicación Web** | 14d | 2012-11-12 | 2012-11-29 |  |  |
| 28 | Proponer línea gráfica de la aplicación | 3d | 2012-11-12 | 2012-11-14 |  | DW |
| 29 | Aprobar Línea Gráfica | 2d | 2012-11-15 | 2012-11-16 | 28 | CPSAA |
| 30 | Realizar prototipos con diseño gráfico | 6d | 2012-11-19 | 2012-11-26 | 29 | DW |
| 31 | Aprobar prototipos | 3d | 2012-11-27 | 2012-11-29 | 30 | CPSAA |
| 33 | **Implementar arquitectura** | 4d | 2012-11-12 | 2012-11-15 |  |  |
| 35 | Implementar modelo lógico | 4d | 2012-11-12 | 2012-11-15 |  | AP1 |
| 36 | Implementar ambiente para pruebas unitarias | 3d | 2012-11-13 | 2012-11-15 | 34 | AP2 |
| 37 | Implementar modulo de seguridad | 4d | 2012-11-16 | 2012-11-21 | 33 | AP2 |
| 64 | Realizar plan de pruebas | 1d | 2012-11-12 | 2012-11-12 |  |  |
| 65 | Realizar casos de prueba | 8d | 2012-11-13 | 2012-11-22 | 64 |  |
| 66 | Realizar manual de usuario | 8d | 2012-11-23 | 2012-12-04 | 65 |  |
| 67 | Realizar diccionario de datos | 3d | 2012-12-05 | 2012-12-07 | 66 |  |
| 77 | **Manual Técnico** | 5d | 2013-01-24 | 2013-01-30 | 73 | AP1; AP2 |

Removed: 32 Integración con SAP; 33 Implementar RFC para gestión de avisos; 34 Realizar Pruebas Unitarias; 40 Realizar Pruebas Unitarias; 53 Modelo Seguridad; 54 Implementar modulo; 55 Realizar pruebas unitarias

Changed:

| ID | Task | Start | Finish | Duration | Total float | Predecessors | Other |
| --- | --- | --- | --- | --- | --- | --- | --- |
| 1 | **Bitacora de Operaciones** |  | 2013-02-12 → 2013-01-30 (-13d) | 102d? → 93d |  |  |  |
| 2 | **Levantamiento de información** |  | 2012-10-25 → 2012-10-29 (+4d) | 24d → 26d |  |  |  |
| 3 | **Reunirse con usuarios para levantamiento de información** |  |  |  | 14d → 25d |  | was named Realizar reunión de levantamiento de información; resources none → CPSAA; AF; AP1 |
| 14 | Realizar formularios de aplicación |  |  |  | 0d → 25d |  | resources none → AF |
| 15 | Elaborar BBP |  |  |  | 1d → 0d |  | resources none → AF |
| 16 | **Definición de arquitectura de aplicación** | 2012-10-08 → 2012-10-12 (+4d) | 2012-10-12 → 2012-10-29 (+17d) | 5d → 12d |  | 14 → 15 |  |
| 17 | Coordinar definición de arquitectura de aplicación | 2012-10-08 → 2012-10-12 (+4d) | 2012-10-09 → 2012-10-12 (+3d) | 2d → 1d |  |  | resources none → CPSAA; AF; AP1 |
| 18 | Definir modelo lógico | 2012-10-10 → 2012-10-15 (+5d) | 2012-10-12 → 2012-10-17 (+5d) |  |  |  | resources none → CPSAA; AF; AP1 |
| 21 | **Aprobación de BBP, formularios de aplicación y modelo lógico** | 2012-10-15 → 2012-10-30 (+15d) | 2012-10-25 → 2012-11-09 (+15d) |  |  | 15, 14, 16 → 16 | was named Aprobación de BBP, arquitectura y formularios |
| 22 | Revisar BBP con formularios de aplicación | 2012-10-15 → 2012-10-30 (+15d) | 2012-10-17 → 2012-10-31 (+14d) | 3d → 2d |  |  | was named Revisar propuesta |
| 24 | Realizar ajustes al BBP | 2012-10-18 → 2012-11-02 (+15d) | 2012-10-24 → 2012-11-08 (+15d) |  |  | 22 → 23 | was named Realizar ajustes; resources none → AF; AP1 |
| 25 | Aprobación final | 2012-10-25 → 2012-11-09 (+15d) | 2012-10-25 → 2012-11-09 (+15d) |  |  |  | was named Revisión final |
| 26 | **Desarrollo** | 2012-10-26 → 2012-11-12 (+17d) | 2012-12-11 → 2012-12-21 (+10d) | 33d? → 30d |  | 2 → 2, 21 |  |
| 32 | **Aplicación Web** | 2012-10-26 → 2012-11-12 (+17d) | 2012-12-04 → 2012-12-14 (+10d) | 28d? → 25d | 0d → 28d |  |  |
| 34 | Implementar arquitectura | 2012-10-26 → 2012-11-12 (+17d) | 2012-10-29 → 2012-11-12 (+14d) | 2d → 1d | 5d → 28d |  | resources none → AP2 |
| 38 | **Implementar RFCs** | 2012-10-26 → 2012-11-12 (+17d) | 2012-11-05 → 2012-11-16 (+11d) | 7d → 5d | 21d → 48d |  | was named Integración con SAP; resources none → ABAPER |
| 39 | Implementar RFC para creación de avisos | 2012-10-26 → 2012-11-12 (+17d) | 2012-11-01 → 2012-11-16 (+15d) |  | 21d → 48d |  |  |
| 40 | **Modulo ocurrencias** | 2012-10-26 → 2012-11-16 (+21d) | 2012-11-05 → 2012-11-22 (+17d) | 7d → 5d | 21d → 44d | none → 33 | resources none → AP1 |
| 41 | Implementar modulo | 2012-10-26 → 2012-11-16 (+21d) | 2012-11-01 → 2012-11-22 (+21d) |  | 21d → 44d |  |  |
| 42 | Realizar pruebas unitarias | 2012-11-02 → 2012-11-16 (+14d) | 2012-11-05 → 2012-11-22 (+17d) | 2d → 5d | 21d → 44d | 41 → none |  |
| 43 | **Modulo Alertas** | 2012-10-26 → 2012-11-22 (+27d) | 2012-11-05 → 2012-11-30 (+25d) |  | 21d → 28d | none → 37 | was named Modulo Avisos; resources none → AP2 |
| 44 | Implementar modulo | 2012-10-26 → 2012-11-22 (+27d) | 2012-11-01 → 2012-11-27 (+26d) | 5d → 4d | 21d → 28d |  |  |
| 45 | Realizar pruebas unitarias | 2012-11-02 → 2012-11-22 (+20d) | 2012-11-05 → 2012-11-27 (+22d) | 2d → 4d | 21d → 28d | 44 → none |  |
| 46 | Implementar webservice | 2012-10-26 → 2012-11-28 (+33d) | 2012-10-26 → 2012-11-30 (+35d) | 1d? → 3d | 26d → 28d | none → 44, 45 |  |
| 47 | **Funcionalidad de paradas** | 2012-10-26 → 2012-11-12 (+17d) | 2012-11-07 → 2012-11-19 (+12d) | 9d → 6d | 19d → 28d |  | was named Modulo paradas; resources none → AP1 |
| 48 | Implementar funcionalidad | 2012-10-26 → 2012-11-12 (+17d) | 2012-11-05 → 2012-11-19 (+14d) | 7d → 6d | 19d → 28d |  | was named Implementar modulo |
| 49 | Realizar pruebas unitarias | 2012-11-06 → 2012-11-12 (+6d) | 2012-11-07 → 2012-11-19 (+12d) | 2d → 6d | 19d → 28d | 48 → none |  |
| 50 | **Funcionalidad de cambio de equipo** | 2012-10-26 → 2012-12-03 (+38d) | 2012-11-05 → 2012-12-07 (+32d) | 7d → 5d | 21d → 28d | none → 43 | was named Modulo cambio de equipo; resources none → AP2 |
| 51 | Implementar modulo | 2012-10-26 → 2012-12-03 (+38d) | 2012-11-01 → 2012-12-07 (+36d) |  | 21d → 28d |  |  |
| 52 | Realizar pruebas unitarias | 2012-11-02 → 2012-12-03 (+31d) | 2012-11-05 → 2012-12-07 (+32d) | 2d → 5d | 21d → 28d | 51 → none |  |
| 53 | **Funcionalidad de cambio de producto** | 2012-10-26 → 2012-12-10 (+45d) | 2012-11-05 → 2012-12-14 (+39d) | 7d → 5d | 21d → 28d | none → 50 | was named Modulo cambio de producto; resources none → AP2 |
| 54 | Implementar modulo | 2012-10-26 → 2012-12-10 (+45d) | 2012-11-01 → 2012-12-14 (+43d) |  | 21d → 28d |  |  |
| 55 | Realizar pruebas unitarias | 2012-11-02 → 2012-12-10 (+38d) | 2012-11-05 → 2012-12-14 (+39d) | 2d → 5d | 21d → 28d | 54 → none |  |
| 56 | **Modulo Reportes** | 2012-10-26 → 2012-11-20 (+25d) | 2012-11-21 → 2012-12-14 (+23d) |  | 0d → 28d | none → 47 | resources none → AP1 |
| 57 | Implementar modulo | 2012-10-26 → 2012-11-20 (+25d) | 2012-11-15 → 2012-12-10 (+25d) |  | 0d → 28d |  |  |
| 58 | Realizar pruebas unitarias | 2012-11-16 → 2012-12-11 (+25d) | 2012-11-21 → 2012-12-14 (+23d) |  | 0d → 28d |  |  |
| 59 | **Modulo Movilidad** | 2012-10-26 → 2012-12-03 (+38d) | 2012-10-29 → 2012-12-07 (+39d) | 2d? → 5d | 26d → 33d | none → 43 | resources none → APMOVIL |
| 60 | Implementar cliente android | 2012-10-29 → 2012-12-03 (+35d) | 2012-10-29 → 2012-12-07 (+39d) | 1d? → 5d | 26d → 33d | 46 → none | resources none → APMOVIL |
| 61 | **Integración** | 2012-12-05 → 2012-12-17 (+12d) | 2012-12-11 → 2012-12-21 (+10d) |  | 0d → 28d | 32, 56, Modelo Seguridad → 32, 27 |  |
| 62 | Integrar modulos | 2012-12-05 → 2012-12-17 (+12d) | 2012-12-11 → 2012-12-21 (+10d) |  | 0d → 28d |  |  |
| 63 | **Documentación** | 2013-01-21 → 2012-11-12 (-70d) | 2013-02-01 → 2012-12-07 (-56d) | 10d → 20d |  | 75 → none | resources none → AF |
| 68 | **Pruebas** | 2012-12-12 → 2012-12-10 (-2d) | 2013-01-08 → 2013-01-11 (+3d) | 20d → 25d |  | 61 → 67 |  |
| 69 | Pruebas Unitarias | 2012-12-12 → 2012-12-10 (-2d) | 2012-12-25 → 2012-12-21 (-4d) |  |  |  | resources none → AF; AP1; AP2 |
| 70 | Pruebas Integrales | 2012-12-26 → 2012-12-24 (-2d) | 2013-01-08 → 2013-01-11 (+3d) | 10d → 15d |  |  | resources none → CPSAA; AF; AP1; AP2 |
| 71 | **Pase a producción** | 2013-01-09 → 2013-01-14 (+5d) | 2013-01-09 → 2013-01-14 (+5d) |  |  |  | resources none → CPSAA |
| 72 | Realizar pase a producción | 2013-01-09 → 2013-01-14 (+5d) | 2013-01-09 → 2013-01-14 (+5d) |  |  |  |  |
| 73 | **Post-Producción** | 2013-02-04 → 2013-01-15 (-20d) | 2013-02-12 → 2013-01-23 (-20d) |  |  | 63 → 71 | resources none → AP2; AP1 |
| 74 | Realizar actividades de soporte | 2013-02-04 → 2013-01-15 (-20d) | 2013-02-12 → 2013-01-23 (-20d) |  |  |  |  |
| 75 | **Capacitación** | 2013-01-10 → 2013-01-15 (+5d) | 2013-01-18 → 2013-01-23 (+5d) |  | 0d → 5d |  | resources none → AF |
| 76 | Realizar capacitación a usuarios | 2013-01-10 → 2013-01-15 (+5d) | 2013-01-18 → 2013-01-23 (+5d) |  | 0d → 5d |  |  |
| 78 | Realizar documento | 2013-01-21 → 2013-01-24 (+3d) | 2013-02-01 → 2013-01-30 (-2d) | 10d → 5d |  |  | was named Realizar documentación (manual técnico, modelo y dicc. De datos) |

## Version 3 (saved 2012-09-06)

Last finish 2013-01-30 → 2013-02-08 (+9d).

Added:

| ID | Task | Duration | Start | Finish | Predecessors | Resources |
| --- | --- | --- | --- | --- | --- | --- |
| 61 | Mostrar Alertas en el área de notificación de Android y enviar respuesta al server al interactuar el usuario | 3d | 2012-12-14 | 2012-12-18 | 60 | APMOVIL |
| 62 | Realizar documentación | 2d | 2012-12-19 | 2012-12-20 | 61 | APMOVIL |
| 72 | Proveer servidor de pruebas con webservice rest para aplicación movil | 7d | 2012-12-13 | 2012-12-21 |  | CPSAA |
| 73 | Proveer servidor de pruebas para aplicación web | 7d | 2012-12-13 | 2012-12-21 |  | CPSAA |

Changed:

| ID | Task | Start | Finish | Duration | Total float | Predecessors | Other |
| --- | --- | --- | --- | --- | --- | --- | --- |
| 1 | **Bitacora de Operaciones** |  | 2013-01-30 → 2013-02-08 (+9d) | 93d → 100d |  |  |  |
| 2 | **Levantamiento de información** |  | 2012-10-29 → 2012-10-31 (+2d) | 26d → 28d |  |  |  |
| 16 | **Definición de arquitectura de aplicación** |  | 2012-10-29 → 2012-10-31 (+2d) | 12d → 14d |  |  |  |
| 19 | Definir RFCs |  | 2012-10-23 → 2012-10-24 (+1d) | 4d → 5d |  |  |  |
| 20 | Definir integración con SGCP | 2012-10-24 → 2012-10-25 (+1d) | 2012-10-29 → 2012-10-31 (+2d) | 4d → 5d |  |  |  |
| 21 | **Aprobación de BBP, formularios de aplicación y modelo lógico** | 2012-10-30 → 2012-11-01 (+2d) | 2012-11-09 → 2012-11-14 (+5d) | 9d → 10d |  |  |  |
| 22 | Revisar BBP con formularios de aplicación | 2012-10-30 → 2012-11-01 (+2d) | 2012-10-31 → 2012-11-02 (+2d) |  |  |  |  |
| 23 | Revisar modelo lógico | 2012-11-01 → 2012-11-05 (+4d) | 2012-11-01 → 2012-11-06 (+5d) | 1d → 2d |  |  |  |
| 24 | Realizar ajustes al BBP | 2012-11-02 → 2012-11-07 (+5d) | 2012-11-08 → 2012-11-13 (+5d) |  |  |  |  |
| 25 | Aprobación final | 2012-11-09 → 2012-11-14 (+5d) | 2012-11-09 → 2012-11-14 (+5d) |  |  |  |  |
| 26 | **Desarrollo** | 2012-11-12 → 2012-11-15 (+3d) | 2012-12-21 → 2012-12-28 (+7d) | 30d → 32d |  |  |  |
| 27 | **Diseño de aplicación Web** | 2012-11-12 → 2012-11-15 (+3d) | 2012-11-29 → 2012-12-04 (+5d) |  | 39d → 43d |  |  |
| 28 | Proponer línea gráfica de la aplicación | 2012-11-12 → 2012-11-15 (+3d) | 2012-11-14 → 2012-11-19 (+5d) |  | 39d → 38d |  |  |
| 29 | Aprobar Línea Gráfica | 2012-11-15 → 2012-11-20 (+5d) | 2012-11-16 → 2012-11-21 (+5d) |  | 39d → 38d |  |  |
| 30 | Realizar prototipos con diseño gráfico | 2012-11-19 → 2012-11-22 (+3d) | 2012-11-26 → 2012-11-29 (+3d) |  | 39d → 38d |  |  |
| 31 | Aprobar prototipos | 2012-11-27 → 2012-11-30 (+3d) | 2012-11-29 → 2012-12-04 (+5d) |  | 39d → 38d |  |  |
| 32 | **Aplicación Web** | 2012-11-12 → 2012-11-15 (+3d) | 2012-12-14 → 2012-12-21 (+7d) | 25d → 27d | 28d → 30d |  |  |
| 33 | **Implementar arquitectura** | 2012-11-12 → 2012-11-15 (+3d) | 2012-11-15 → 2012-11-21 (+6d) | 4d → 5d | 28d → 30d |  |  |
| 34 | Implementar arquitectura | 2012-11-12 → 2012-11-15 (+3d) | 2012-11-12 → 2012-11-16 (+4d) | 1d → 2d | 28d → 25d |  |  |
| 35 | Implementar modelo lógico | 2012-11-12 → 2012-11-15 (+3d) | 2012-11-15 → 2012-11-20 (+5d) |  | 28d → 31d |  |  |
| 36 | Implementar ambiente para pruebas unitarias | 2012-11-13 → 2012-11-19 (+6d) | 2012-11-15 → 2012-11-21 (+6d) |  | 28d → 25d |  |  |
| 37 | Implementar modulo de seguridad | 2012-11-16 → 2012-11-22 (+6d) | 2012-11-21 → 2012-11-28 (+7d) | 4d → 5d | 28d → 25d |  |  |
| 38 | **Implementar RFCs** | 2012-11-12 → 2012-11-15 (+3d) | 2012-11-16 → 2012-11-21 (+5d) |  | 48d → 52d |  |  |
| 39 | Implementar RFC para creación de avisos | 2012-11-12 → 2012-11-15 (+3d) | 2012-11-16 → 2012-11-21 (+5d) |  | 48d → 47d |  |  |
| 40 | **Modulo ocurrencias** | 2012-11-16 → 2012-11-22 (+6d) | 2012-11-22 → 2012-11-28 (+6d) |  | 44d → 47d |  |  |
| 41 | Implementar modulo | 2012-11-16 → 2012-11-22 (+6d) | 2012-11-22 → 2012-11-28 (+6d) |  | 44d → 42d |  |  |
| 42 | Realizar pruebas unitarias | 2012-11-16 → 2012-11-22 (+6d) | 2012-11-22 → 2012-11-28 (+6d) |  | 44d → 47d |  |  |
| 43 | **Modulo Alertas** | 2012-11-22 → 2012-11-29 (+7d) | 2012-11-30 → 2012-12-07 (+7d) |  | 28d → 30d |  |  |
| 44 | Implementar modulo | 2012-11-22 → 2012-11-29 (+7d) | 2012-11-27 → 2012-12-04 (+7d) |  | 28d → 25d |  |  |
| 45 | Realizar pruebas unitarias | 2012-11-22 → 2012-11-29 (+7d) | 2012-11-27 → 2012-12-04 (+7d) |  | 28d → 30d |  |  |
| 46 | Implementar webservice | 2012-11-28 → 2012-12-05 (+7d) | 2012-11-30 → 2012-12-07 (+7d) |  | 28d → 25d |  |  |
| 47 | **Funcionalidad de paradas** | 2012-11-12 → 2012-11-15 (+3d) | 2012-11-19 → 2012-11-22 (+3d) |  | 28d → 32d |  |  |
| 48 | Implementar funcionalidad | 2012-11-12 → 2012-11-15 (+3d) | 2012-11-19 → 2012-11-22 (+3d) |  | 28d → 27d |  |  |
| 49 | Realizar pruebas unitarias | 2012-11-12 → 2012-11-15 (+3d) | 2012-11-19 → 2012-11-22 (+3d) |  | 28d → 32d |  |  |
| 50 | **Funcionalidad de cambio de equipo** | 2012-12-03 → 2012-12-10 (+7d) | 2012-12-07 → 2012-12-14 (+7d) |  | 28d → 30d |  |  |
| 51 | Implementar modulo | 2012-12-03 → 2012-12-10 (+7d) | 2012-12-07 → 2012-12-14 (+7d) |  | 28d → 25d |  |  |
| 52 | Realizar pruebas unitarias | 2012-12-03 → 2012-12-10 (+7d) | 2012-12-07 → 2012-12-14 (+7d) |  | 28d → 30d |  |  |
| 53 | **Funcionalidad de cambio de producto** | 2012-12-10 → 2012-12-17 (+7d) | 2012-12-14 → 2012-12-21 (+7d) |  | 28d → 30d |  |  |
| 54 | Implementar modulo | 2012-12-10 → 2012-12-17 (+7d) | 2012-12-14 → 2012-12-21 (+7d) |  | 28d → 25d |  |  |
| 55 | Realizar pruebas unitarias | 2012-12-10 → 2012-12-17 (+7d) | 2012-12-14 → 2012-12-21 (+7d) |  | 28d → 30d |  |  |
| 56 | **Modulo Reportes** | 2012-11-20 → 2012-11-23 (+3d) | 2012-12-14 → 2012-12-19 (+5d) |  | 28d → 32d |  |  |
| 57 | Implementar modulo | 2012-11-20 → 2012-11-23 (+3d) | 2012-12-10 → 2012-12-13 (+3d) |  | 28d → 27d |  |  |
| 58 | Realizar pruebas unitarias | 2012-12-11 → 2012-12-14 (+3d) | 2012-12-14 → 2012-12-19 (+5d) |  | 28d → 27d |  |  |
| 59 | **Modulo Alertas - Aplicación movil nativa** | 2012-12-03 → 2012-12-10 (+7d) | 2012-12-07 → 2012-12-20 (+13d) | 5d → 9d | 33d → 31d |  | was named Modulo Movilidad; resources APMOVIL → none |
| 60 | Desarrollar Servicio en Background escuchando las alertas del usuario | 2012-12-03 → 2012-12-10 (+7d) | 2012-12-07 → 2012-12-13 (+6d) | 5d → 4d | 33d → 31d |  | was named Implementar cliente android |
| 63 | **Integración** | 2012-12-17 → 2012-12-24 (+7d) | 2012-12-21 → 2012-12-28 (+7d) |  | 28d → 30d |  |  |
| 64 | Integrar modulos | 2012-12-17 → 2012-12-24 (+7d) | 2012-12-21 → 2012-12-28 (+7d) |  | 28d → 30d |  |  |
| 65 | **Documentación** | 2012-11-12 → 2012-11-15 (+3d) | 2012-12-07 → 2012-12-12 (+5d) |  |  |  |  |
| 66 | Realizar plan de pruebas | 2012-11-12 → 2012-11-15 (+3d) | 2012-11-12 → 2012-11-15 (+3d) |  |  |  |  |
| 67 | Realizar casos de prueba | 2012-11-13 → 2012-11-16 (+3d) | 2012-11-22 → 2012-11-27 (+5d) |  |  |  |  |
| 68 | Realizar manual de usuario | 2012-11-23 → 2012-11-28 (+5d) | 2012-12-04 → 2012-12-07 (+3d) |  |  |  |  |
| 69 | Realizar diccionario de datos | 2012-12-05 → 2012-12-10 (+5d) | 2012-12-07 → 2012-12-12 (+5d) |  |  |  |  |
| 70 | **Pruebas** | 2012-12-10 → 2012-12-13 (+3d) | 2013-01-11 → 2013-01-21 (+10d) | 25d → 28d |  |  |  |
| 71 | Pruebas Unitarias | 2012-12-10 → 2012-12-13 (+3d) | 2012-12-21 → 2012-12-27 (+6d) | 10d → 11d |  |  |  |
| 74 | Pruebas Integrales | 2012-12-24 → 2012-12-28 (+4d) | 2013-01-11 → 2013-01-21 (+10d) | 15d → 17d |  | 71 → 73, 72, 71 |  |
| 75 | **Pase a producción** | 2013-01-14 → 2013-01-22 (+8d) | 2013-01-14 → 2013-01-22 (+8d) |  |  |  |  |
| 76 | Realizar pase a producción | 2013-01-14 → 2013-01-22 (+8d) | 2013-01-14 → 2013-01-22 (+8d) |  |  |  |  |
| 77 | **Post-Producción** | 2013-01-15 → 2013-01-23 (+8d) | 2013-01-23 → 2013-02-01 (+9d) | 7d → 8d |  |  |  |
| 78 | Realizar actividades de soporte | 2013-01-15 → 2013-01-23 (+8d) | 2013-01-23 → 2013-02-01 (+9d) | 7d → 8d |  |  |  |
| 79 | **Capacitación** | 2013-01-15 → 2013-01-23 (+8d) | 2013-01-23 → 2013-02-01 (+9d) | 7d → 8d |  |  |  |
| 80 | Realizar capacitación a usuarios | 2013-01-15 → 2013-01-23 (+8d) | 2013-01-23 → 2013-02-01 (+9d) | 7d → 8d |  |  |  |
| 81 | **Manual Técnico** | 2013-01-24 → 2013-02-04 (+11d) | 2013-01-30 → 2013-02-08 (+9d) |  |  |  |  |
| 82 | Realizar documento | 2013-01-24 → 2013-02-04 (+11d) | 2013-01-30 → 2013-02-08 (+9d) |  |  |  |  |

## Version 4 (saved 2012-09-07)

Last finish 2013-02-08 → 2013-02-28 (+20d).

Added:

| ID | Task | Duration | Start | Finish | Predecessors | Resources |
| --- | --- | --- | --- | --- | --- | --- |
| 27 | Realizar actualización del BBP | 2d | 2012-10-25 | 2012-10-26 |  | AF; AP1 |
| 71 | Realizar manual técnico | 5d | 2012-12-07 | 2012-12-13 | 70 |  |

Removed: 81 Manual Técnico; 82 Realizar documento

Changed:

| ID | Task | Start | Finish | Duration | Total float | Predecessors | Other |
| --- | --- | --- | --- | --- | --- | --- | --- |
| 1 | **Bitacora de Operaciones** |  | 2013-02-08 → 2013-02-28 (+20d) | 100d → 114d |  |  |  |
| 2 | **Levantamiento de información** |  | 2012-10-31 → 2012-10-24 (-7d) | 28d → 23d |  |  |  |
| 3 | **Definición de requerimientos** |  |  |  | 28d → 24d |  | was named Reunirse con usuarios para levantamiento de información |
| 15 | Elaborar BBP |  | 2012-10-11 → 2012-10-09 (-2d) | 14d → 12d |  |  |  |
| 16 | **Definición de arquitectura de aplicación** | 2012-10-12 → 2012-10-10 (-2d) | 2012-10-31 → 2012-10-24 (-7d) | 14d → 11d |  |  |  |
| 17 | Coordinar definición de arquitectura de aplicación | 2012-10-12 → 2012-10-10 (-2d) | 2012-10-12 → 2012-10-10 (-2d) |  |  |  |  |
| 18 | Definir modelo lógico | 2012-10-15 → 2012-10-11 (-4d) | 2012-10-17 → 2012-10-16 (-1d) | 3d → 4d |  |  |  |
| 19 | Definir RFCs | 2012-10-18 → 2012-10-17 (-1d) | 2012-10-24 → 2012-10-19 (-5d) | 5d → 3d |  |  |  |
| 20 | Definir integración con SGCP | 2012-10-25 → 2012-10-22 (-3d) | 2012-10-31 → 2012-10-24 (-7d) | 5d → 3d |  |  |  |
| 21 | **Diseño de aplicación Web** | 2012-11-15 → 2012-10-10 (-36d) | 2012-12-04 → 2012-10-23 (-42d) | 14d → 10d | 43d → 1d | none → 15 |  |
| 22 | Proponer línea gráfica de la aplicación | 2012-11-15 → 2012-10-10 (-36d) | 2012-11-19 → 2012-10-12 (-38d) |  | 38d → 2d |  |  |
| 23 | Aprobar Línea Gráfica | 2012-11-20 → 2012-10-15 (-36d) | 2012-11-21 → 2012-10-16 (-36d) |  | 38d → 2d |  |  |
| 24 | Realizar prototipos con diseño gráfico | 2012-11-22 → 2012-10-17 (-36d) | 2012-11-29 → 2012-10-19 (-41d) | 6d → 3d | 38d → 2d |  |  |
| 25 | Aprobar prototipos | 2012-11-30 → 2012-10-22 (-39d) | 2012-12-04 → 2012-10-23 (-42d) | 3d → 2d | 38d → 2d |  |  |
| 26 | **Aprobación de BBP, formularios de aplicación y modelo lógico** | 2012-11-01 → 2012-10-25 (-7d) | 2012-11-14 → 2012-11-08 (-6d) | 10d → 11d |  | 16 → 16, 21 |  |
| 28 | Revisar BBP con formularios de aplicación | 2012-11-01 → 2012-10-29 (-3d) | 2012-11-02 → 2012-10-30 (-3d) |  |  | none → 27 |  |
| 29 | Revisar modelo lógico | 2012-11-05 → 2012-10-31 (-5d) | 2012-11-06 → 2012-11-01 (-5d) |  |  |  |  |
| 30 | Realizar ajustes al BBP | 2012-11-07 → 2012-11-02 (-5d) | 2012-11-13 → 2012-11-07 (-6d) | 5d → 4d |  |  |  |
| 31 | Aprobación final | 2012-11-14 → 2012-11-08 (-6d) | 2012-11-14 → 2012-11-08 (-6d) |  |  |  |  |
| 32 | **Desarrollo** | 2012-11-15 → 2012-11-09 (-6d) | 2012-12-28 → 2013-01-17 (+20d) | 32d → 50d |  |  |  |
| 33 | **Aplicación Web** | 2012-11-15 → 2012-11-09 (-6d) | 2012-12-21 → 2013-01-10 (+20d) | 27d → 45d | 30d → 0d |  |  |
| 34 | **Implementar arquitectura** | 2012-11-15 → 2012-11-09 (-6d) | 2012-11-21 → 2012-11-20 (-1d) | 5d → 8d | 30d → 2d |  |  |
| 35 | Implementar arquitectura | 2012-11-15 → 2012-11-09 (-6d) | 2012-11-16 → 2012-11-12 (-4d) |  | 25d → 2d |  | resources AP2 → AP1 |
| 36 | Implementar modulo de seguridad | 2012-11-22 → 2012-11-13 (-9d) | 2012-11-28 → 2012-11-16 (-12d) | 5d → 4d | 25d → 2d | 34 → 35 | resources AP2 → AP1 |
| 37 | Implementar ambiente para pruebas unitarias |  | 2012-11-21 → 2012-11-20 (-1d) | 3d → 2d | 25d → 2d | 35 → 36 | resources AP2 → AP1 |
| 38 | Implementar modelo lógico | 2012-11-15 → 2012-11-09 (-6d) | 2012-11-20 → 2012-11-15 (-5d) | 4d → 5d | 31d → 0d |  | resources AP1 → AP2 |
| 39 | **Implementar RFCs** | 2012-11-15 → 2012-11-09 (-6d) | 2012-11-21 → 2012-11-15 (-6d) |  | 52d → 40d |  |  |
| 40 | Implementar RFC para creación de avisos | 2012-11-15 → 2012-11-09 (-6d) | 2012-11-21 → 2012-11-15 (-6d) |  | 47d → 40d |  |  |
| 41 | **Modulo ocurrencias** | 2012-11-22 → 2012-11-16 (-6d) | 2012-11-28 → 2012-11-26 (-2d) | 5d → 7d | 47d → 0d | 34 → 38 | resources AP1 → AP2 |
| 42 | Implementar modulo | 2012-11-22 → 2012-11-16 (-6d) | 2012-11-28 → 2012-11-26 (-2d) | 5d → 7d | 42d → 0d |  |  |
| 43 | Realizar pruebas unitarias | 2012-11-22 → 2012-11-16 (-6d) | 2012-11-28 → 2012-11-26 (-2d) | 5d → 7d | 47d → 0d |  |  |
| 44 | **Modulo Alertas** | 2012-11-29 → 2012-11-21 (-8d) | 2012-12-07 → 2012-12-03 (-4d) | 7d → 9d | 30d → 2d | 36 → 34 | resources AP2 → AP1 |
| 45 | Implementar modulo | 2012-11-29 → 2012-11-21 (-8d) | 2012-12-04 → 2012-11-28 (-6d) | 4d → 6d | 25d → 2d |  |  |
| 46 | Realizar pruebas unitarias | 2012-11-29 → 2012-11-21 (-8d) | 2012-12-04 → 2012-11-28 (-6d) | 4d → 6d | 30d → 2d |  |  |
| 47 | Implementar webservice | 2012-12-05 → 2012-11-29 (-6d) | 2012-12-07 → 2012-12-03 (-4d) |  | 25d → 2d |  |  |
| 48 | **Funcionalidad de paradas** | 2012-11-15 → 2012-12-04 (+19d) | 2012-11-22 → 2012-12-12 (+20d) | 6d → 7d | 32d → 2d | none → 44 |  |
| 49 | Implementar funcionalidad | 2012-11-15 → 2012-12-04 (+19d) | 2012-11-22 → 2012-12-12 (+20d) | 6d → 7d | 27d → 2d |  |  |
| 50 | Realizar pruebas unitarias | 2012-11-15 → 2012-12-04 (+19d) | 2012-11-22 → 2012-12-12 (+20d) | 6d → 7d | 32d → 2d |  |  |
| 51 | **Funcionalidad de cambio de equipo** | 2012-12-10 → 2012-11-27 (-13d) | 2012-12-14 → 2012-12-05 (-9d) | 5d → 7d | 30d → 0d | 44 → 41 |  |
| 52 | Implementar modulo | 2012-12-10 → 2012-11-27 (-13d) | 2012-12-14 → 2012-12-05 (-9d) | 5d → 7d | 25d → 0d |  |  |
| 53 | Realizar pruebas unitarias | 2012-12-10 → 2012-11-27 (-13d) | 2012-12-14 → 2012-12-05 (-9d) | 5d → 7d | 30d → 0d |  |  |
| 54 | **Funcionalidad de cambio de producto** | 2012-12-17 → 2012-12-06 (-11d) | 2012-12-21 → 2012-12-14 (-7d) | 5d → 7d | 30d → 0d |  |  |
| 55 | Implementar modulo | 2012-12-17 → 2012-12-06 (-11d) | 2012-12-21 → 2012-12-14 (-7d) | 5d → 7d | 25d → 0d |  |  |
| 56 | Realizar pruebas unitarias | 2012-12-17 → 2012-12-06 (-11d) | 2012-12-21 → 2012-12-14 (-7d) | 5d → 7d | 30d → 0d |  |  |
| 57 | **Modulo Reportes** | 2012-11-23 → 2012-12-17 (+24d) | 2012-12-19 → 2013-01-10 (+22d) |  | 32d → 0d | 48 → 48, 54 | resources AP1 → AP1; AP2 |
| 58 | Implementar modulo | 2012-11-23 → 2012-12-17 (+24d) | 2012-12-13 → 2013-01-04 (+22d) |  | 27d → 0d |  |  |
| 59 | Realizar pruebas unitarias | 2012-12-14 → 2013-01-07 (+24d) | 2012-12-19 → 2013-01-10 (+22d) |  | 27d → 0d |  |  |
| 60 | **Modulo Alertas - Aplicación movil nativa** | 2012-12-10 → 2012-12-04 (-6d) | 2012-12-20 → 2012-12-14 (-6d) |  | 31d → 19d |  |  |
| 61 | Desarrollar Servicio en Background escuchando las alertas del usuario | 2012-12-10 → 2012-12-04 (-6d) | 2012-12-13 → 2012-12-07 (-6d) |  | 31d → 19d |  |  |
| 62 | Mostrar Alertas en el área de notificación de Android y enviar respuesta al server al interactuar el usuario | 2012-12-14 → 2012-12-10 (-4d) | 2012-12-18 → 2012-12-12 (-6d) |  | 31d → 19d |  |  |
| 63 | Realizar documentación | 2012-12-19 → 2012-12-13 (-6d) | 2012-12-20 → 2012-12-14 (-6d) |  | 31d → 19d |  |  |
| 64 | **Integración** | 2012-12-24 → 2013-01-11 (+18d) | 2012-12-28 → 2013-01-17 (+20d) |  | 30d → 0d |  |  |
| 65 | Integrar modulos | 2012-12-24 → 2013-01-11 (+18d) | 2012-12-28 → 2013-01-17 (+20d) |  | 30d → 0d |  |  |
| 66 | **Documentación** | 2012-11-15 → 2012-11-09 (-6d) | 2012-12-12 → 2012-12-13 (+1d) | 20d → 25d | 0d → 25d |  |  |
| 67 | Realizar plan de pruebas | 2012-11-15 → 2012-11-09 (-6d) | 2012-11-15 → 2012-11-09 (-6d) |  | 0d → 25d |  |  |
| 68 | Realizar casos de prueba | 2012-11-16 → 2012-11-12 (-4d) | 2012-11-27 → 2012-11-21 (-6d) |  | 0d → 25d |  |  |
| 69 | Realizar manual de usuario | 2012-11-28 → 2012-11-22 (-6d) | 2012-12-07 → 2012-12-03 (-4d) |  | 0d → 25d |  |  |
| 70 | Realizar diccionario de datos | 2012-12-10 → 2012-12-04 (-6d) | 2012-12-12 → 2012-12-06 (-6d) |  | 0d → 25d |  |  |
| 72 | **Pruebas** | 2012-12-13 → 2013-01-18 (+36d) | 2013-01-21 → 2013-02-15 (+25d) | 28d → 21d |  | 70 → 32 |  |
| 73 | Pruebas Unitarias | 2012-12-13 → 2013-01-18 (+36d) | 2012-12-27 → 2013-01-24 (+28d) | 11d → 5d | 0d → 1d |  |  |
| 74 | Proveer servidor de pruebas para aplicación web | 2012-12-13 → 2013-01-18 (+36d) | 2012-12-21 → 2013-01-22 (+32d) | 7d → 3d | 4d → 0d |  |  |
| 75 | Probar flujo de webservice | 2012-12-13 → 2013-01-23 (+41d) | 2012-12-21 → 2013-01-25 (+35d) | 7d → 3d | 4d → 0d | none → 74 | was named Proveer servidor de pruebas con webservice rest para aplicación movil |
| 76 | Pruebas Integrales | 2012-12-28 → 2013-01-28 (+31d) | 2013-01-21 → 2013-02-15 (+25d) | 17d → 15d |  |  |  |
| 77 | **Pase a producción** | 2013-01-22 → 2013-02-18 (+27d) | 2013-01-22 → 2013-02-18 (+27d) |  |  |  |  |
| 78 | Realizar pase a producción | 2013-01-22 → 2013-02-18 (+27d) | 2013-01-22 → 2013-02-18 (+27d) |  |  |  |  |
| 79 | **Post-Producción** | 2013-01-23 → 2013-02-19 (+27d) | 2013-02-01 → 2013-02-28 (+27d) |  |  |  | resources AP2; AP1 → AP1 |
| 80 | Realizar actividades de soporte | 2013-01-23 → 2013-02-19 (+27d) | 2013-02-01 → 2013-02-28 (+27d) |  |  |  |  |
| 81 | **Capacitación** | 2013-01-23 → 2013-02-19 (+27d) | 2013-02-01 → 2013-02-26 (+25d) | 8d → 6d | 5d → 2d |  |  |
| 82 | Realizar capacitación a usuarios | 2013-01-23 → 2013-02-19 (+27d) | 2013-02-01 → 2013-02-26 (+25d) | 8d → 6d | 5d → 2d |  |  |

## Version 5 (saved 2012-09-18)

Last finish 2013-02-28 → 2013-02-22 (-6d).

Added:

| ID | Task | Duration | Start | Finish | Predecessors | Constraint | Resources |
| --- | --- | --- | --- | --- | --- | --- | --- |
| 81 | **Manual Técnico** | 5d | 2013-02-18 | 2013-02-22 | 77 |  | AP1; AP2 |
| 82 | Realizar documento | 5d | 2013-02-18 | 2013-02-22 |  | start no earlier than 2012-10-12 |  |

Removed: 27 Realizar actualización del BBP; 71 Realizar manual técnico

Changed:

| ID | Task | Start | Finish | Duration | Total float | Predecessors | Other |
| --- | --- | --- | --- | --- | --- | --- | --- |
| 1 | **Bitacora de Operaciones** | 2012-09-24 → 2012-10-08 (+14d) | 2013-02-28 → 2013-02-22 (-6d) | 114d → 100d |  |  |  |
| 2 | **Levantamiento de información** | 2012-09-24 → 2012-10-08 (+14d) | 2012-10-24 → 2012-11-14 (+21d) | 23d → 28d |  |  |  |
| 3 | **Reunirse con usuarios para levantamiento de información** | 2012-09-24 → 2012-10-08 (+14d) | 2012-10-05 → 2012-10-19 (+14d) |  | 24d → 28d |  | was named Definición de requerimientos |
| 4 | 1 | 2012-09-24 → 2012-10-08 (+14d) | 2012-09-24 → 2012-10-08 (+14d) |  | 34d → 37d |  | constraint start no earlier than 2012-09-24 → start no earlier than 2012-10-08 |
| 5 | 2 | 2012-09-25 → 2012-10-09 (+14d) | 2012-09-25 → 2012-10-09 (+14d) |  | 33d → 36d |  | constraint start no earlier than 2012-09-25 → start no earlier than 2012-10-09 |
| 6 | 3 | 2012-09-26 → 2012-10-10 (+14d) | 2012-09-26 → 2012-10-10 (+14d) |  | 32d → 35d |  | constraint start no earlier than 2012-09-26 → start no earlier than 2012-10-10 |
| 7 | 4 | 2012-09-27 → 2012-10-11 (+14d) | 2012-09-27 → 2012-10-11 (+14d) |  | 31d → 34d |  | constraint start no earlier than 2012-09-27 → start no earlier than 2012-10-11 |
| 8 | 5 | 2012-09-28 → 2012-10-12 (+14d) | 2012-09-28 → 2012-10-12 (+14d) |  | 30d → 33d |  | constraint start no earlier than 2012-09-28 → start no earlier than 2012-10-12 |
| 9 | 6 | 2012-10-01 → 2012-10-15 (+14d) | 2012-10-01 → 2012-10-15 (+14d) |  | 29d → 32d |  | constraint start no earlier than 2012-09-29 → start no earlier than 2012-10-13 |
| 10 | 7 | 2012-10-04 → 2012-10-16 (+12d) | 2012-10-04 → 2012-10-16 (+12d) |  | 26d → 31d |  | was named 11; constraint start no earlier than 2012-10-04 → start no earlier than 2012-10-16 |
| 11 | 8 | 2012-10-05 → 2012-10-17 (+12d) | 2012-10-05 → 2012-10-17 (+12d) |  | 25d → 30d |  | was named 12; constraint start no earlier than 2012-10-05 → start no earlier than 2012-10-17 |
| 12 | 9 | 2012-10-02 → 2012-10-18 (+16d) | 2012-10-02 → 2012-10-18 (+16d) |  | 28d → 29d |  | constraint start no earlier than 2012-10-02 → start no earlier than 2012-10-18 |
| 13 | 10 | 2012-10-03 → 2012-10-19 (+16d) | 2012-10-03 → 2012-10-19 (+16d) |  | 27d → 28d |  | constraint start no earlier than 2012-10-03 → start no earlier than 2012-10-19 |
| 14 | Realizar formularios de aplicación | 2012-09-24 → 2012-10-08 (+14d) | 2012-10-05 → 2012-10-19 (+14d) |  | 24d → 28d |  | constraint start no earlier than 2012-09-24 → start no earlier than 2012-10-08 |
| 15 | Elaborar BBP | 2012-09-24 → 2012-10-08 (+14d) | 2012-10-09 → 2012-10-25 (+16d) | 12d → 14d |  |  | constraint start no earlier than 2012-09-24 → start no earlier than 2012-10-08 |
| 16 | **Definición de arquitectura de aplicación** | 2012-10-10 → 2012-10-26 (+16d) | 2012-10-24 → 2012-11-14 (+21d) | 11d → 14d |  |  |  |
| 17 | Coordinar definición de arquitectura de aplicación | 2012-10-10 → 2012-10-26 (+16d) | 2012-10-10 → 2012-10-26 (+16d) |  |  |  |  |
| 18 | Definir modelo lógico | 2012-10-11 → 2012-10-29 (+18d) | 2012-10-16 → 2012-10-31 (+15d) | 4d → 3d |  |  |  |
| 19 | Definir RFCs | 2012-10-17 → 2012-11-01 (+15d) | 2012-10-19 → 2012-11-07 (+19d) | 3d → 5d |  |  |  |
| 20 | Definir integración con SGCP | 2012-10-22 → 2012-11-08 (+17d) | 2012-10-24 → 2012-11-14 (+21d) | 3d → 5d |  |  |  |
| 21 | **Aprobación de BBP, formularios de aplicación y modelo lógico** | 2012-10-25 → 2012-11-15 (+21d) | 2012-11-08 → 2012-11-28 (+20d) | 11d → 10d |  | 16, 27 → 16 |  |
| 22 | Revisar BBP con formularios de aplicación | 2012-10-29 → 2012-11-15 (+17d) | 2012-10-30 → 2012-11-16 (+17d) |  |  | Realizar actualización del BBP → none |  |
| 23 | Revisar modelo lógico | 2012-10-31 → 2012-11-19 (+19d) | 2012-11-01 → 2012-11-20 (+19d) |  |  |  |  |
| 24 | Realizar ajustes al BBP | 2012-11-02 → 2012-11-21 (+19d) | 2012-11-07 → 2012-11-27 (+20d) | 4d → 5d |  |  |  |
| 25 | Aprobación final | 2012-11-08 → 2012-11-28 (+20d) | 2012-11-08 → 2012-11-28 (+20d) |  |  |  |  |
| 26 | **Desarrollo** | 2012-11-09 → 2012-11-29 (+20d) | 2013-01-17 → 2013-01-21 (+4d) | 50d → 38d |  |  |  |
| 27 | **Diseño de aplicación Web** | 2012-10-10 → 2012-11-29 (+50d) | 2012-10-23 → 2012-12-18 (+56d) | 10d → 14d | 1d → 43d | 15 → none |  |
| 28 | Proponer línea gráfica de la aplicación | 2012-10-10 → 2012-11-29 (+50d) | 2012-10-12 → 2012-12-03 (+52d) |  | 2d → 43d |  |  |
| 29 | Aprobar Línea Gráfica | 2012-10-15 → 2012-12-04 (+50d) | 2012-10-16 → 2012-12-05 (+50d) |  | 2d → 43d |  |  |
| 30 | Realizar prototipos con diseño gráfico | 2012-10-17 → 2012-12-06 (+50d) | 2012-10-19 → 2012-12-13 (+55d) | 3d → 6d | 2d → 43d |  |  |
| 31 | Aprobar prototipos | 2012-10-22 → 2012-12-14 (+53d) | 2012-10-23 → 2012-12-18 (+56d) | 2d → 3d | 2d → 43d |  |  |
| 32 | **Aplicación Web** | 2012-11-09 → 2012-11-29 (+20d) | 2013-01-10 → 2013-01-14 (+4d) | 45d → 33d | 0d → 24d |  |  |
| 33 | **Implementar arquitectura** | 2012-11-09 → 2012-11-29 (+20d) | 2012-11-20 → 2012-12-05 (+15d) | 8d → 5d | 2d → 24d |  |  |
| 34 | Implementar arquitectura | 2012-11-09 → 2012-11-29 (+20d) | 2012-11-12 → 2012-11-30 (+18d) |  | 2d → 24d |  | resources AP1 → AP2 |
| 35 | Implementar modelo lógico | 2012-11-09 → 2012-11-29 (+20d) | 2012-11-15 → 2012-12-04 (+19d) | 5d → 4d | 0d → 25d |  | resources AP2 → AP1 |
| 36 | Implementar ambiente para pruebas unitarias | 2012-11-19 → 2012-12-03 (+14d) | 2012-11-20 → 2012-12-05 (+15d) | 2d → 3d | 2d → 24d | 37 → 34 | resources AP1 → AP2 |
| 37 | Implementar modulo de seguridad | 2012-11-13 → 2012-12-06 (+23d) | 2012-11-16 → 2012-12-12 (+26d) | 4d → 5d | 2d → 24d | 34 → 33 | resources AP1 → AP2 |
| 38 | **Implementar RFCs** | 2012-11-09 → 2012-11-29 (+20d) | 2012-11-15 → 2012-12-05 (+20d) |  | 40d → 52d |  |  |
| 39 | Implementar RFC para creación de avisos | 2012-11-09 → 2012-11-29 (+20d) | 2012-11-15 → 2012-12-05 (+20d) |  | 40d → 52d |  |  |
| 40 | **Modulo ocurrencias** | 2012-11-16 → 2012-12-06 (+20d) | 2012-11-26 → 2012-12-14 (+18d) |  | 0d → 45d | 35 → 33 | resources AP2 → AP1 |
| 41 | Implementar modulo | 2012-11-16 → 2012-12-06 (+20d) | 2012-11-26 → 2012-12-14 (+18d) |  | 0d → 45d |  |  |
| 42 | Realizar pruebas unitarias | 2012-11-16 → 2012-12-06 (+20d) | 2012-11-26 → 2012-12-14 (+18d) |  | 0d → 45d |  |  |
| 43 | **Modulo Alertas** | 2012-11-21 → 2012-12-13 (+22d) | 2012-12-03 → 2012-12-25 (+22d) |  | 2d → 24d | 33 → 37 | resources AP1 → AP2 |
| 44 | Implementar modulo | 2012-11-21 → 2012-12-13 (+22d) | 2012-11-28 → 2012-12-20 (+22d) |  | 2d → 24d |  |  |
| 45 | Realizar pruebas unitarias | 2012-11-21 → 2012-12-13 (+22d) | 2012-11-28 → 2012-12-20 (+22d) |  | 2d → 24d |  |  |
| 46 | Implementar webservice | 2012-11-29 → 2012-12-21 (+22d) | 2012-12-03 → 2012-12-25 (+22d) |  | 2d → 24d |  |  |
| 47 | **Funcionalidad de paradas** | 2012-12-04 → 2012-11-29 (-5d) | 2012-12-12 → 2012-12-07 (-5d) |  | 2d → 31d | 43 → none |  |
| 48 | Implementar funcionalidad | 2012-12-04 → 2012-11-29 (-5d) | 2012-12-12 → 2012-12-07 (-5d) |  | 2d → 31d |  |  |
| 49 | Realizar pruebas unitarias | 2012-12-04 → 2012-11-29 (-5d) | 2012-12-12 → 2012-12-07 (-5d) |  | 2d → 31d |  |  |
| 50 | **Funcionalidad de cambio de equipo** | 2012-11-27 → 2012-12-26 (+29d) | 2012-12-05 → 2013-01-03 (+29d) |  | 0d → 24d | 40 → 43 |  |
| 51 | Implementar modulo | 2012-11-27 → 2012-12-26 (+29d) | 2012-12-05 → 2013-01-03 (+29d) |  | 0d → 24d |  |  |
| 52 | Realizar pruebas unitarias | 2012-11-27 → 2012-12-26 (+29d) | 2012-12-05 → 2013-01-03 (+29d) |  | 0d → 24d |  |  |
| 53 | **Funcionalidad de cambio de producto** | 2012-12-06 → 2013-01-04 (+29d) | 2012-12-14 → 2013-01-14 (+31d) |  | 0d → 24d |  |  |
| 54 | Implementar modulo | 2012-12-06 → 2013-01-04 (+29d) | 2012-12-14 → 2013-01-14 (+31d) |  | 0d → 24d |  |  |
| 55 | Realizar pruebas unitarias | 2012-12-06 → 2013-01-04 (+29d) | 2012-12-14 → 2013-01-14 (+31d) |  | 0d → 24d |  |  |
| 56 | **Modulo Reportes** | 2012-12-17 → 2012-12-10 (-7d) | 2013-01-10 → 2013-01-03 (-7d) |  | 0d → 31d | 47, 53 → 47 | resources AP1; AP2 → AP1 |
| 57 | Implementar modulo | 2012-12-17 → 2012-12-10 (-7d) | 2013-01-04 → 2012-12-28 (-7d) |  | 0d → 31d |  |  |
| 58 | Realizar pruebas unitarias | 2013-01-07 → 2012-12-31 (-7d) | 2013-01-10 → 2013-01-03 (-7d) |  | 0d → 31d |  |  |
| 59 | **Modulo Alertas - Aplicación movil nativa** | 2012-12-04 → 2012-12-26 (+22d) | 2012-12-14 → 2013-01-07 (+24d) |  | 19d → 29d |  |  |
| 60 | Desarrollar Servicio en Background escuchando las alertas del usuario | 2012-12-04 → 2012-12-26 (+22d) | 2012-12-07 → 2012-12-31 (+24d) |  | 19d → 29d |  |  |
| 61 | Mostrar Alertas en el área de notificación de Android y enviar respuesta al server al interactuar el usuario | 2012-12-10 → 2013-01-01 (+22d) | 2012-12-12 → 2013-01-03 (+22d) |  | 19d → 29d |  |  |
| 62 | Realizar documentación | 2012-12-13 → 2013-01-04 (+22d) | 2012-12-14 → 2013-01-07 (+24d) |  | 19d → 29d |  |  |
| 63 | **Integración** | 2013-01-11 → 2013-01-15 (+4d) | 2013-01-17 → 2013-01-21 (+4d) |  | 0d → 24d |  |  |
| 64 | Integrar modulos | 2013-01-11 → 2013-01-15 (+4d) | 2013-01-17 → 2013-01-21 (+4d) |  | 0d → 24d |  |  |
| 65 | **Documentación** | 2012-11-09 → 2012-11-29 (+20d) | 2012-12-13 → 2012-12-26 (+13d) | 25d → 20d | 25d → 0d |  |  |
| 66 | Realizar plan de pruebas | 2012-11-09 → 2012-11-29 (+20d) | 2012-11-09 → 2012-11-29 (+20d) |  | 25d → 0d |  |  |
| 67 | Realizar casos de prueba | 2012-11-12 → 2012-11-30 (+18d) | 2012-11-21 → 2012-12-11 (+20d) |  | 25d → 0d |  |  |
| 68 | Realizar manual de usuario | 2012-11-22 → 2012-12-12 (+20d) | 2012-12-03 → 2012-12-21 (+18d) |  | 25d → 0d |  |  |
| 69 | Realizar diccionario de datos | 2012-12-04 → 2012-12-24 (+20d) | 2012-12-06 → 2012-12-26 (+20d) |  | 25d → 0d |  |  |
| 70 | **Pruebas** | 2013-01-18 → 2012-12-27 (-22d) | 2013-02-15 → 2013-02-04 (-11d) | 21d → 28d |  | 26 → 69 |  |

| ID | Task | Start | Finish | Duration | Total float | Predecessors | Other |
| --- | --- | --- | --- | --- | --- | --- | --- |
| 71 | Pruebas Unitarias | 2013-01-18 → 2012-12-27 (-22d) | 2013-01-24 → 2013-01-10 (-14d) | 5d → 11d | 1d → 0d |  |  |
| 72 | Proveer servidor de pruebas con webservice rest para aplicación movil | 2013-01-23 → 2012-12-27 (-27d) | 2013-01-25 → 2013-01-04 (-21d) | 3d → 7d | 0d → 4d | 73 → none | was named Probar flujo de webservice |
| 73 | Proveer servidor de pruebas para aplicación web | 2013-01-18 → 2012-12-27 (-22d) | 2013-01-22 → 2013-01-04 (-18d) | 3d → 7d | 0d → 4d |  |  |
| 74 | Pruebas Integrales | 2013-01-28 → 2013-01-11 (-17d) | 2013-02-15 → 2013-02-04 (-11d) | 15d → 17d |  |  |  |
| 75 | **Pase a producción** | 2013-02-18 → 2013-02-05 (-13d) | 2013-02-18 → 2013-02-05 (-13d) |  |  |  |  |
| 76 | Realizar pase a producción | 2013-02-18 → 2013-02-05 (-13d) | 2013-02-18 → 2013-02-05 (-13d) |  |  |  |  |
| 77 | **Post-Producción** | 2013-02-19 → 2013-02-06 (-13d) | 2013-02-28 → 2013-02-15 (-13d) |  |  |  | resources AP1 → AP2; AP1 |
| 78 | Realizar actividades de soporte | 2013-02-19 → 2013-02-06 (-13d) | 2013-02-28 → 2013-02-15 (-13d) |  |  |  |  |
| 79 | **Capacitación** | 2013-02-19 → 2013-02-06 (-13d) | 2013-02-26 → 2013-02-15 (-11d) | 6d → 8d | 2d → 5d |  |  |
| 80 | Realizar capacitación a usuarios | 2013-02-19 → 2013-02-06 (-13d) | 2013-02-26 → 2013-02-15 (-11d) | 6d → 8d | 2d → 5d |  |  |

## Version 6 (saved 2012-09-18)

Last finish 2013-02-22 → 2013-03-01 (+7d).

Changed:

| ID | Task | Start | Finish | Other |
| --- | --- | --- | --- | --- |
| 1 | **Bitacora de Operaciones** | 2012-10-08 → 2012-10-10 (+2d) | 2013-02-22 → 2013-03-01 (+7d) |  |
| 2 | **Levantamiento de información** | 2012-10-08 → 2012-10-10 (+2d) | 2012-11-14 → 2012-11-19 (+5d) |  |
| 3 | **Reunirse con usuarios para levantamiento de información** | 2012-10-08 → 2012-10-10 (+2d) | 2012-10-19 → 2012-10-23 (+4d) |  |
| 4 | 1 | 2012-10-08 → 2012-10-10 (+2d) | 2012-10-08 → 2012-10-10 (+2d) | constraint start no earlier than 2012-10-08 → start no earlier than 2012-10-10 |
| 5 | 2 | 2012-10-09 → 2012-10-11 (+2d) | 2012-10-09 → 2012-10-11 (+2d) | constraint start no earlier than 2012-10-09 → start no earlier than 2012-10-11 |
| 6 | 3 | 2012-10-10 → 2012-10-12 (+2d) | 2012-10-10 → 2012-10-12 (+2d) | constraint start no earlier than 2012-10-10 → start no earlier than 2012-10-12 |
| 7 | 4 | 2012-10-11 → 2012-10-15 (+4d) | 2012-10-11 → 2012-10-15 (+4d) | constraint start no earlier than 2012-10-11 → start no earlier than 2012-10-13 |
| 8 | 5 | 2012-10-12 → 2012-10-16 (+4d) | 2012-10-12 → 2012-10-16 (+4d) | constraint start no earlier than 2012-10-12 → start no earlier than 2012-10-16 |
| 9 | 6 | 2012-10-15 → 2012-10-17 (+2d) | 2012-10-15 → 2012-10-17 (+2d) | constraint start no earlier than 2012-10-13 → start no earlier than 2012-10-17 |
| 10 | 7 | 2012-10-16 → 2012-10-18 (+2d) | 2012-10-16 → 2012-10-18 (+2d) | constraint start no earlier than 2012-10-16 → start no earlier than 2012-10-18 |
| 11 | 8 | 2012-10-17 → 2012-10-19 (+2d) | 2012-10-17 → 2012-10-19 (+2d) | constraint start no earlier than 2012-10-17 → start no earlier than 2012-10-19 |
| 12 | 9 | 2012-10-18 → 2012-10-22 (+4d) | 2012-10-18 → 2012-10-22 (+4d) | constraint start no earlier than 2012-10-18 → start no earlier than 2012-10-20 |
| 13 | 10 | 2012-10-19 → 2012-10-23 (+4d) | 2012-10-19 → 2012-10-23 (+4d) | constraint start no earlier than 2012-10-19 → start no earlier than 2012-10-23 |
| 14 | Realizar formularios de aplicación | 2012-10-08 → 2012-10-10 (+2d) | 2012-10-19 → 2012-10-23 (+4d) | constraint start no earlier than 2012-10-08 → start no earlier than 2012-10-10 |
| 15 | Elaborar BBP | 2012-10-08 → 2012-10-10 (+2d) | 2012-10-25 → 2012-10-29 (+4d) | constraint start no earlier than 2012-10-08 → start no earlier than 2012-10-10 |
| 16 | **Definición de arquitectura de aplicación** | 2012-10-26 → 2012-10-30 (+4d) | 2012-11-14 → 2012-11-19 (+5d) |  |
| 17 | Coordinar definición de arquitectura de aplicación | 2012-10-26 → 2012-10-30 (+4d) | 2012-10-26 → 2012-10-30 (+4d) |  |
| 18 | Definir modelo lógico | 2012-10-29 → 2012-10-31 (+2d) | 2012-10-31 → 2012-11-05 (+5d) |  |
| 19 | Definir RFCs | 2012-11-01 → 2012-11-06 (+5d) | 2012-11-07 → 2012-11-12 (+5d) |  |
| 20 | Definir integración con SGCP | 2012-11-08 → 2012-11-13 (+5d) | 2012-11-14 → 2012-11-19 (+5d) |  |
| 21 | **Aprobación de BBP, formularios de aplicación y modelo lógico** | 2012-11-15 → 2012-11-20 (+5d) | 2012-11-28 → 2012-12-03 (+5d) |  |
| 22 | Revisar BBP con formularios de aplicación | 2012-11-15 → 2012-11-20 (+5d) | 2012-11-16 → 2012-11-21 (+5d) |  |
| 23 | Revisar modelo lógico | 2012-11-19 → 2012-11-22 (+3d) | 2012-11-20 → 2012-11-23 (+3d) |  |
| 24 | Realizar ajustes al BBP | 2012-11-21 → 2012-11-26 (+5d) | 2012-11-27 → 2012-11-30 (+3d) |  |
| 25 | Aprobación final | 2012-11-28 → 2012-12-03 (+5d) | 2012-11-28 → 2012-12-03 (+5d) |  |
| 26 | **Desarrollo** | 2012-11-29 → 2012-12-04 (+5d) | 2013-01-21 → 2013-01-28 (+7d) |  |
| 27 | **Diseño de aplicación Web** | 2012-11-29 → 2012-12-04 (+5d) | 2012-12-18 → 2012-12-21 (+3d) |  |
| 28 | Proponer línea gráfica de la aplicación | 2012-11-29 → 2012-12-04 (+5d) | 2012-12-03 → 2012-12-06 (+3d) |  |
| 29 | Aprobar Línea Gráfica | 2012-12-04 → 2012-12-07 (+3d) | 2012-12-05 → 2012-12-10 (+5d) |  |
| 30 | Realizar prototipos con diseño gráfico | 2012-12-06 → 2012-12-11 (+5d) | 2012-12-13 → 2012-12-18 (+5d) |  |
| 31 | Aprobar prototipos | 2012-12-14 → 2012-12-19 (+5d) | 2012-12-18 → 2012-12-21 (+3d) |  |
| 32 | **Aplicación Web** | 2012-11-29 → 2012-12-04 (+5d) | 2013-01-14 → 2013-01-21 (+7d) |  |
| 33 | **Implementar arquitectura** | 2012-11-29 → 2012-12-04 (+5d) | 2012-12-05 → 2012-12-10 (+5d) |  |
| 34 | Implementar arquitectura | 2012-11-29 → 2012-12-04 (+5d) | 2012-11-30 → 2012-12-05 (+5d) |  |
| 35 | Implementar modelo lógico | 2012-11-29 → 2012-12-04 (+5d) | 2012-12-04 → 2012-12-07 (+3d) |  |
| 36 | Implementar ambiente para pruebas unitarias | 2012-12-03 → 2012-12-06 (+3d) | 2012-12-05 → 2012-12-10 (+5d) |  |
| 37 | Implementar modulo de seguridad | 2012-12-06 → 2012-12-11 (+5d) | 2012-12-12 → 2012-12-17 (+5d) |  |
| 38 | **Implementar RFCs** | 2012-11-29 → 2012-12-04 (+5d) | 2012-12-05 → 2012-12-10 (+5d) |  |
| 39 | Implementar RFC para creación de avisos | 2012-11-29 → 2012-12-04 (+5d) | 2012-12-05 → 2012-12-10 (+5d) |  |
| 40 | **Modulo ocurrencias** | 2012-12-06 → 2012-12-11 (+5d) | 2012-12-14 → 2012-12-19 (+5d) |  |
| 41 | Implementar modulo | 2012-12-06 → 2012-12-11 (+5d) | 2012-12-14 → 2012-12-19 (+5d) |  |
| 42 | Realizar pruebas unitarias | 2012-12-06 → 2012-12-11 (+5d) | 2012-12-14 → 2012-12-19 (+5d) |  |
| 43 | **Modulo Alertas** | 2012-12-13 → 2012-12-18 (+5d) | 2012-12-25 → 2012-12-31 (+6d) |  |
| 44 | Implementar modulo | 2012-12-13 → 2012-12-18 (+5d) | 2012-12-20 → 2012-12-26 (+6d) |  |
| 45 | Realizar pruebas unitarias | 2012-12-13 → 2012-12-18 (+5d) | 2012-12-20 → 2012-12-26 (+6d) |  |
| 46 | Implementar webservice | 2012-12-21 → 2012-12-27 (+6d) | 2012-12-25 → 2012-12-31 (+6d) |  |
| 47 | **Funcionalidad de paradas** | 2012-11-29 → 2012-12-04 (+5d) | 2012-12-07 → 2012-12-12 (+5d) |  |
| 48 | Implementar funcionalidad | 2012-11-29 → 2012-12-04 (+5d) | 2012-12-07 → 2012-12-12 (+5d) |  |
| 49 | Realizar pruebas unitarias | 2012-11-29 → 2012-12-04 (+5d) | 2012-12-07 → 2012-12-12 (+5d) |  |
| 50 | **Funcionalidad de cambio de equipo** | 2012-12-26 → 2013-01-02 (+7d) | 2013-01-03 → 2013-01-10 (+7d) |  |
| 51 | Implementar modulo | 2012-12-26 → 2013-01-02 (+7d) | 2013-01-03 → 2013-01-10 (+7d) |  |
| 52 | Realizar pruebas unitarias | 2012-12-26 → 2013-01-02 (+7d) | 2013-01-03 → 2013-01-10 (+7d) |  |
| 53 | **Funcionalidad de cambio de producto** | 2013-01-04 → 2013-01-11 (+7d) | 2013-01-14 → 2013-01-21 (+7d) |  |
| 54 | Implementar modulo | 2013-01-04 → 2013-01-11 (+7d) | 2013-01-14 → 2013-01-21 (+7d) |  |
| 55 | Realizar pruebas unitarias | 2013-01-04 → 2013-01-11 (+7d) | 2013-01-14 → 2013-01-21 (+7d) |  |
| 56 | **Modulo Reportes** | 2012-12-10 → 2012-12-13 (+3d) | 2013-01-03 → 2013-01-10 (+7d) |  |
| 57 | Implementar modulo | 2012-12-10 → 2012-12-13 (+3d) | 2012-12-28 → 2013-01-04 (+7d) |  |
| 58 | Realizar pruebas unitarias | 2012-12-31 → 2013-01-07 (+7d) | 2013-01-03 → 2013-01-10 (+7d) |  |
| 59 | **Modulo Alertas - Aplicación movil nativa** | 2012-12-26 → 2013-01-02 (+7d) | 2013-01-07 → 2013-01-14 (+7d) |  |
| 60 | Desarrollar Servicio en Background escuchando las alertas del usuario | 2012-12-26 → 2013-01-02 (+7d) | 2012-12-31 → 2013-01-07 (+7d) |  |
| 61 | Mostrar Alertas en el área de notificación de Android y enviar respuesta al server al interactuar el usuario | 2013-01-01 → 2013-01-08 (+7d) | 2013-01-03 → 2013-01-10 (+7d) |  |
| 62 | Realizar documentación | 2013-01-04 → 2013-01-11 (+7d) | 2013-01-07 → 2013-01-14 (+7d) |  |
| 63 | **Integración** | 2013-01-15 → 2013-01-22 (+7d) | 2013-01-21 → 2013-01-28 (+7d) |  |
| 64 | Integrar modulos | 2013-01-15 → 2013-01-22 (+7d) | 2013-01-21 → 2013-01-28 (+7d) |  |
| 65 | **Documentación** | 2012-11-29 → 2012-12-04 (+5d) | 2012-12-26 → 2013-01-02 (+7d) |  |
| 66 | Realizar plan de pruebas | 2012-11-29 → 2012-12-04 (+5d) | 2012-11-29 → 2012-12-04 (+5d) |  |
| 67 | Realizar casos de prueba | 2012-11-30 → 2012-12-05 (+5d) | 2012-12-11 → 2012-12-14 (+3d) |  |
| 68 | Realizar manual de usuario | 2012-12-12 → 2012-12-17 (+5d) | 2012-12-21 → 2012-12-27 (+6d) |  |
| 69 | Realizar diccionario de datos | 2012-12-24 → 2012-12-28 (+4d) | 2012-12-26 → 2013-01-02 (+7d) |  |
| 70 | **Pruebas** | 2012-12-27 → 2013-01-03 (+7d) | 2013-02-04 → 2013-02-11 (+7d) |  |

| ID | Task | Start | Finish |
| --- | --- | --- | --- |
| 71 | Pruebas Unitarias | 2012-12-27 → 2013-01-03 (+7d) | 2013-01-10 → 2013-01-17 (+7d) |
| 72 | Proveer servidor de pruebas con webservice rest para aplicación movil | 2012-12-27 → 2013-01-03 (+7d) | 2013-01-04 → 2013-01-11 (+7d) |
| 73 | Proveer servidor de pruebas para aplicación web | 2012-12-27 → 2013-01-03 (+7d) | 2013-01-04 → 2013-01-11 (+7d) |
| 74 | Pruebas Integrales | 2013-01-11 → 2013-01-18 (+7d) | 2013-02-04 → 2013-02-11 (+7d) |
| 75 | **Pase a producción** | 2013-02-05 → 2013-02-12 (+7d) | 2013-02-05 → 2013-02-12 (+7d) |
| 76 | Realizar pase a producción | 2013-02-05 → 2013-02-12 (+7d) | 2013-02-05 → 2013-02-12 (+7d) |
| 77 | **Post-Producción** | 2013-02-06 → 2013-02-13 (+7d) | 2013-02-15 → 2013-02-22 (+7d) |
| 78 | Realizar actividades de soporte | 2013-02-06 → 2013-02-13 (+7d) | 2013-02-15 → 2013-02-22 (+7d) |
| 79 | **Capacitación** | 2013-02-06 → 2013-02-13 (+7d) | 2013-02-15 → 2013-02-22 (+7d) |
| 80 | Realizar capacitación a usuarios | 2013-02-06 → 2013-02-13 (+7d) | 2013-02-15 → 2013-02-22 (+7d) |
| 81 | **Manual Técnico** | 2013-02-18 → 2013-02-25 (+7d) | 2013-02-22 → 2013-03-01 (+7d) |
| 82 | Realizar documento | 2013-02-18 → 2013-02-25 (+7d) | 2013-02-22 → 2013-03-01 (+7d) |

## Version 7 (saved 2012-09-19)

Last finish stays 2013-03-01.

Changed:

| ID | Task | Other |
| --- | --- | --- |
| 14 | Realizar formularios de aplicación | resources AF → AP1 |
| 17 | Coordinar definición de arquitectura de aplicación | resources CPSAA; AF; AP1 → CPSAA; AF; AP1; JP |
| 19 | Definir RFCs | resources CPSAA; AF; AP1 → CPSAA; AF; ABAP |
| 24 | Realizar ajustes al BBP | resources AF; AP1 → AF; JP |
| 25 | Aprobación final | resources CPSAA → CPSAA; JP |
| 29 | Aprobar Línea Gráfica | resources CPSAA → CPSAA; JP |
| 31 | Aprobar prototipos | resources CPSAA → CPSAA; JP |
| 39 | Implementar RFC para creación de avisos | resources none → ABAPER |
| 41 | Implementar modulo | resources none → AP1 |
| 42 | Realizar pruebas unitarias | resources none → AP1 |
| 44 | Implementar modulo | resources none → AP2 |
| 45 | Realizar pruebas unitarias | resources none → AP2 |
| 46 | Implementar webservice | resources none → AP2 |
| 48 | Implementar funcionalidad | resources none → AP1 |
| 49 | Realizar pruebas unitarias | resources none → AP1 |
| 51 | Implementar modulo | resources none → AP2 |
| 52 | Realizar pruebas unitarias | resources none → AP2 |
| 54 | Implementar modulo | resources none → AP2 |
| 55 | Realizar pruebas unitarias | resources none → AP2 |
| 57 | Implementar modulo | resources none → AP1 |
| 58 | Realizar pruebas unitarias | resources none → AP1 |
| 59 | **Modulo Alertas - Aplicación movil nativa** | resources none → APMOVIL |
| 63 | **Integración** | resources none → AP1; AP2 |
| 64 | Integrar modulos | resources none → AP1; AP2 |
| 66 | Realizar plan de pruebas | resources none → AF |
| 67 | Realizar casos de prueba | resources none → AF |
| 68 | Realizar manual de usuario | resources none → AF |
| 69 | Realizar diccionario de datos | resources none → AF |
| 71 | Pruebas Unitarias | resources AF; AP1; AP2 → AF; AP1; AP2; JP [50%]; APMOVIL |
| 72 | Proveer servidor de pruebas con webservice rest para aplicación movil | resources CPSAA → CPSAA; JP [50%] |
| 73 | Proveer servidor de pruebas para aplicación web | resources CPSAA → CPSAA; JP [50%] |
| 74 | Pruebas Integrales | resources CPSAA; AF; AP1; AP2 → CPSAA; AF; AP1; AP2; JP [70%]; APMOVIL |
| 76 | Realizar pase a producción | resources none → CPSAA; AP1; AP2; AF; JP |
| 77 | **Post-Producción** | resources AP2; AP1 → AP2; AP1; APMOVIL |
| 78 | Realizar actividades de soporte | resources none → AP1; AP2; APMOVIL [12%] |
| 79 | **Capacitación** | resources AF → AF; APMOVIL |
| 80 | Realizar capacitación a usuarios | resources none → AF [88%]; APMOVIL [12%] |
